# 安徽省质检院综合业务系统总体计划9-11

Schedule from MS Project, 2015-09-11 to 2016-03-31, A marks actual dates.
china

## Calendars

- 标准: Mon-Fri 08:00-12:00, 13:00-17:00; Sat-Sun off. Exceptions (off unless hours are given): 2015-09-19 08:00-12:00, 13:00-17:00.

## Resources

| Resource |
| --- |
| 何书查 |
| 蒋永正 |
| 项目组 |
| 刘健森 |
| 张益 |
| 王喆之 |
| 段佩君 |
| 李向林 |
| 鲁光 |
| 偶峰 |
| 潘韦驰 |
| 王勇 |
| 马彪 |
| 梁凯迪 |
| 刘松 |

## Schedule

| ID | WBS | Task | Duration | Start | Finish | Predecessors | Complete | Remaining | Actual start | Total slack | Free slack | Constraint | Resources | Work | Actual work |
| --- | --- | --- | --- | --- | --- | --- | --- | --- | --- | --- | --- | --- | --- | --- | --- |
| 1 | 1 | **安徽省质检院综合业务系统总体计划** | 146d | 2015-09-11 A | 2016-03-31 |  | 37% | 92.22d |  |  |  |  | 蒋永正 | 12473.6h | 4127.35h |
| 2 | 1.1 | **需求调研** | 14d | 2015-09-14 A | 2015-09-30 |  | 81% | 2.71d |  |  |  |  | 蒋永正 | 472h | 225.29h |
| 3 | 1.1.1 | 流程调研 | 3d | 2015-09-14 A | 2015-09-16 |  | 90% | 0.3d |  | 11d |  |  | 蒋永正 | 24h | 21.6h |
| 4 | 1.1.2 | 功能细节调研 | 3d | 2015-09-14 A | 2015-09-16 |  | 30% | 2.1d |  | 11d |  |  | 蒋永正 | 24h | 7.2h |
| 5 | 1.1.3 | **基础信息资料准备** | 14d | 2015-09-14 | 2015-09-30 |  | 86% | 2.02d | 2015-09-16 |  |  |  | 蒋永正 | 312h | 171.2h |
| 6 | 1.1.3.1 | 角色设置信息 | 2d | 2015-09-29 A | 2015-09-30 |  | 90% | 0.2d |  | 131d |  | finish no earlier than 2015-09-30 | 蒋永正 | 16h | 14.4h |
| 7 | 1.1.3.2 | 权限设置信息 | 2d | 2015-09-29 A | 2015-09-30 |  | 90% | 0.2d |  | 131d |  | finish no earlier than 2015-09-30 | 蒋永正 | 16h | 14.4h |
| 8 | 1.1.3.3 | 字典设置信息 | 3d | 2015-09-28 A | 2015-09-30 |  | 90% | 0.3d |  | 131d |  | finish no earlier than 2015-09-30 | 蒋永正 | 24h | 21.6h |
| 9 | 1.1.3.4 | 人员基本信息 | 1d | 2015-09-29 A | 2015-09-29 A |  | 100% |  |  |  |  | start no earlier than 2015-09-29 | 蒋永正 | 8h | 8h |
| 10 | 1.1.3.5 | 组织架构信息 | 1d | 2015-09-28 A | 2015-09-28 A |  | 100% |  |  |  |  | start no earlier than 2015-09-28 | 蒋永正 | 8h | 8h |
| 11 | 1.1.3.6 | 检验标准信息 | 9d | 2015-09-16 A | 2015-09-25 |  | 70% | 2.7d |  | 134d |  | finish no earlier than 2015-09-25 | 蒋永正 | 72h | 50.4h |
| 12 | 1.1.3.7 | 检验收费标准信息 | 3d | 2015-09-22 A | 2015-09-24 A |  | 100% |  |  |  |  | finish no earlier than 2015-09-24 | 蒋永正 | 24h | 24h |
| 13 | 1.1.3.8 | 设备信息 | 2d | 2015-09-25 A | 2015-09-28 A |  | 100% |  |  |  |  | finish no earlier than 2015-09-28 | 蒋永正 | 16h | 16h |
| 14 | 1.1.3.9 | 客户信息 | 1d | 2015-09-29 A | 2015-09-29 |  | 90% | 0.1d |  | 132d |  | start no earlier than 2015-09-29 | 蒋永正 | 8h | 7.2h |
| 15 | 1.1.3.10 | 认证产品信息 | 1d | 2015-09-30 A | 2015-09-30 |  | 90% | 0.1d |  | 131d |  | start no earlier than 2015-09-30 | 蒋永正 | 8h | 7.2h |
| 16 | 1.2 | **硬件采购** | 25d | 2015-09-21 A | 2015-10-23 |  | 45% | 13.75d |  |  |  |  |  | 216h | 75.6h |
| 17 | 1.2.1 | 硬件采购 | 15d | 2015-09-21 A | 2015-10-09 |  | 63% | 5.55d |  | 10d |  |  |  | 120h | 75.6h |
| 18 | 1.2.2 | **硬件上架** | 10d | 2015-10-12 | 2015-10-23 |  |  |  |  |  |  |  |  | 24h |  |
| 19 | 1.2.2.1 | 系统安装 | 3d | 2015-10-19 | 2015-10-21 |  |  |  |  | 116d |  | finish no earlier than 2015-10-21 |  | 24h |  |
| 20 | 1.2.3 | **测试环境搭建** | 3d | 2015-10-21 | 2015-10-23 |  |  |  |  |  |  |  |  | 72h |  |
| 21 | 1.2.3.1 | 虚拟服务器安装 | 2d | 2015-10-21 | 2015-10-22 |  |  |  |  | 91d | 0d | finish no earlier than 2015-10-22 | 蒋永正; 李向林; 鲁光 | 48h |  |
| 22 | 1.2.3.2 | Oracle数据库安装（安装/备份设置） | 1d | 2015-10-23 | 2015-10-23 | 21 |  |  |  | 114d |  | finish no earlier than 2015-10-23 | 蒋永正; 李向林; 鲁光 | 24h |  |
| 23 | 1.3 | **系统开发** | 122d | 2015-09-14 | 2016-02-29 |  | 37% | 76.38d | 2015-09-11 |  |  |  |  | 10617.6h | 3463.39h |
| 24 | 1.3.1 | **功能实现阶段** | 122d | 2015-09-14 | 2016-02-29 |  | 38% | 75.41d | 2015-09-11 |  |  |  |  | 10617.6h | 3463.39h |
| 25 | 1.3.1.1 | **功能实现/编码第一阶段** | 14d | 2015-09-14 A | 2015-09-30 |  | 53% | 6.52d |  |  |  |  |  | 416h | 124h |
| 26 | 1.3.1.1.1 | **框架搭建,设计** | 14d | 2015-09-14 A | 2015-09-30 |  | 53% | 6.52d |  |  |  |  | 刘健森 | 416h | 124h |
| 27 | 1.3.1.1.1.1 | 数据库设计 | 5d | 2015-09-14 A | 2015-09-18 A |  | 100% |  |  |  |  | finish no earlier than 2015-09-18 | 蒋永正 | 40h | 40h |
| 28 | 1.3.1.1.1.2 | 框架搭建 | 9d | 2015-09-14 A | 2015-09-23 A |  | 100% |  |  |  |  | finish no earlier than 2015-09-23 | 刘健森 | 72h | 72h |

| ID | WBS | Task | Duration | Start | Finish | Complete | Remaining | Total slack | Constraint | Resources | Work | Actual work |
| --- | --- | --- | --- | --- | --- | --- | --- | --- | --- | --- | --- | --- |
| 29 | 1.3.1.1.1.3 | **系统设计** | 9d | 2015-09-14 A | 2015-09-23 | 10% | 8.1d |  |  | 刘健森 | 192h | 12h |
| 30 | 1.3.1.1.1.3.1 | 综合业务管理系统设计 | 5d | 2015-09-14 A | 2015-09-18 | 30% | 3.5d | 140d | finish no earlier than 2015-09-18 | 刘健森 | 40h | 12h |
| 31 | 1.3.1.1.1.3.2 | 微信平台设计 | 5d | 2015-09-16 | 2015-09-21 |  |  | 138d | finish no earlier than 2015-09-21 | 刘健森 | 40h |  |
| 32 | 1.3.1.1.1.3.3 | 质检门户设计 | 5d | 2015-09-18 | 2015-09-23 |  |  | 136d | finish no earlier than 2015-09-23 | 刘健森 | 40h |  |
| 33 | 1.3.1.2 | **项目界面设计** | 52d | 2015-09-14 A | 2015-11-23 | 2% | 51.13d |  |  | 段佩君; 刘松; 王喆之; 刘健森 | 4280h | 48h |
| 34 | 1.3.1.2.1 | **综合业务管理系统界面设计** | 14d | 2015-09-14 A | 2015-09-30 | 5% | 13.3d |  |  | 段佩君; 刘松; 王喆之; 刘健森 | 1416h | 48h |
| 35 | 1.3.1.2.1.1 | **系统主页界面设计** | 2d | 2015-09-14 A | 2015-09-15 A | 100% |  |  |  | 刘健森; 王喆之 | 48h | 48h |
| 36 | 1.3.1.2.1.1.1 | 系统主页设置界面设计 | 1d | 2015-09-15 A | 2015-09-15 A | 100% |  |  | start no earlier than 2015-09-15 | 刘健森; 王喆之 | 16h | 16h |
| 37 | 1.3.1.2.1.2 | **系统八大功能界面设计** | 11d | 2015-09-14 | 2015-09-25 |  |  |  |  | 段佩君; 刘松; 王喆之; 梁凯迪; 马彪; 王勇 | 920h |  |
| 38 | 1.3.1.2.1.2.1 | 任务管理界面 | 2d | 2015-09-14 | 2015-09-15 |  |  | 143d | start no earlier than 2015-09-14 | 段佩君; 梁凯迪 | 32h |  |
| 39 | 1.3.1.2.1.2.2 | 业务中心界面 | 2d | 2015-09-16 | 2015-09-17 |  |  | 141d | finish no earlier than 2015-09-17 | 段佩君; 马彪 | 32h |  |
| 40 | 1.3.1.2.1.2.3 | 辅助业务界面 | 2d | 2015-09-17 | 2015-09-18 |  |  | 140d | finish no earlier than 2015-09-18 | 段佩君; 刘松 | 32h |  |
| 41 | 1.3.1.2.1.2.4 | 客户管理界面 | 2d | 2015-09-21 | 2015-09-22 |  |  | 137d | finish no earlier than 2015-09-22 | 段佩君; 王勇 | 32h |  |
| 42 | 1.3.1.2.1.2.5 | 科研管理界面 | 2d | 2015-09-22 | 2015-09-23 |  |  | 136d | finish no earlier than 2015-09-23 | 段佩君; 王勇 | 32h |  |
| 43 | 1.3.1.2.1.2.6 | 费用管理界面 | 2d | 2015-09-23 | 2015-09-24 |  |  | 135d | finish no earlier than 2015-09-24 | 段佩君; 刘松 | 32h |  |
| 44 | 1.3.1.2.1.2.7 | 数据统计界面 | 3d | 2015-09-23 | 2015-09-25 |  |  | 134d | finish no earlier than 2015-09-25 | 段佩君; 梁凯迪; 刘松; 马彪; 王勇 | 120h |  |
| 45 | 1.3.1.2.1.2.8 | 系统管理界面 | 2d | 2015-09-24 | 2015-09-25 |  |  | 134d | finish no earlier than 2015-09-25 | 段佩君; 梁凯迪; 刘松; 马彪; 王勇 | 80h |  |
| 46 | 1.3.1.2.1.3 | 评审代码 | 1d | 2015-09-14 | 2015-09-14 |  |  | 13d |  |  |  |  |
| 47 | 1.3.1.2.1.4 | 单元测试 | 1d | 2015-09-14 | 2015-09-14 |  |  | 13d |  |  |  |  |
| 48 | 1.3.1.2.2 | **微信平台界面设计** | 15d | 2015-10-12 | 2015-10-30 |  |  |  |  | 段佩君; 刘松; 王喆之 | 720h |  |
| 49 | 1.3.1.2.2.1 | 欢迎页面界面设计 | 1d | 2015-10-12 | 2015-10-12 |  |  | 14d |  | 段佩君; 刘松; 王喆之 | 24h |  |
| 50 | 1.3.1.2.2.2 | **微主页界面设计** | 4d | 2015-10-13 | 2015-10-16 |  |  |  |  | 段佩君; 刘松; 王喆之 | 96h |  |
| 51 | 1.3.1.2.2.2.1 | 简介 | 1d | 2015-10-13 | 2015-10-13 |  |  | 3d |  |  |  |  |
| 52 | 1.3.1.2.2.2.2 | 组织架构 | 1d | 2015-10-13 | 2015-10-13 |  |  | 3d |  |  |  |  |
| 53 | 1.3.1.2.2.2.3 | 发展历程 | 1d | 2015-10-13 | 2015-10-13 |  |  | 3d |  |  |  |  |
| 54 | 1.3.1.2.2.2.4 | 质检新闻 | 2d | 2015-10-13 | 2015-10-14 |  |  | 2d |  |  |  |  |
| 55 | 1.3.1.2.2.2.5 | 办事流程 | 1d | 2015-10-13 | 2015-10-13 |  |  | 3d |  |  |  |  |
| 56 | 1.3.1.2.2.2.6 | 检验标准 | 1d | 2015-10-13 | 2015-10-13 |  |  | 3d |  |  |  |  |
| 57 | 1.3.1.2.2.2.7 | 质量馆 | 1d | 2015-10-13 | 2015-10-13 |  |  | 3d |  |  |  |  |
| 58 | 1.3.1.2.2.2.8 | 品牌馆 | 1d | 2015-10-13 | 2015-10-13 |  |  | 3d |  |  |  |  |
| 59 | 1.3.1.2.2.2.9 | 联系我们 | 1d | 2015-10-16 | 2015-10-16 |  |  | 119d | start no earlier than 2015-10-16 |  |  |  |

| ID | WBS | Task | Duration | Start | Finish | Total slack | Constraint | Resources | Work |
| --- | --- | --- | --- | --- | --- | --- | --- | --- | --- |
| 60 | 1.3.1.2.2.3 | **微服务界面设计** | 5d | 2015-10-19 | 2015-10-23 |  |  | 段佩君; 刘松; 王喆之 | 120h |
| 61 | 1.3.1.2.2.3.1 | 扫一扫界面设计 | 1d | 2015-10-19 | 2015-10-19 | 4d |  |  |  |
| 62 | 1.3.1.2.2.3.2 | 样品信息 | 1d | 2015-10-19 | 2015-10-19 | 4d |  |  |  |
| 63 | 1.3.1.2.2.3.3 | 设备信息 | 1d | 2015-10-19 | 2015-10-19 | 4d |  |  |  |
| 64 | 1.3.1.2.2.3.4 | 报告信息 | 1d | 2015-10-19 | 2015-10-19 | 4d |  |  |  |
| 65 | 1.3.1.2.2.3.5 | 数据统计 | 3d | 2015-10-21 | 2015-10-23 | 114d | finish no earlier than 2015-10-23 |  |  |
| 66 | 1.3.1.2.2.4 | **微管理界面设计** | 5d | 2015-10-26 | 2015-10-30 |  |  | 段佩君; 刘松; 王喆之 | 120h |
| 67 | 1.3.1.2.2.4.1 | **我的任务** | 2d | 2015-10-26 | 2015-10-27 |  |  |  |  |
| 68 | 1.3.1.2.2.4.1.1 | 任务详情 | 1d | 2015-10-26 | 2015-10-26 | 1d |  |  |  |
| 69 | 1.3.1.2.2.4.2 | **我的申请** | 1d | 2015-10-26 | 2015-10-26 | 4d |  |  |  |
| 70 | 1.3.1.2.2.4.2.1 | 申请页面 | 1d | 2015-10-26 | 2015-10-26 | 4d |  |  |  |
| 71 | 1.3.1.2.2.4.2.2 | 审核页面 | 1d | 2015-10-26 | 2015-10-26 | 4d |  |  |  |
| 72 | 1.3.1.2.2.4.3 | **工作汇报** | 5d | 2015-10-26 | 2015-10-30 | 0d |  |  |  |
| 73 | 1.3.1.2.2.4.3.1 | 汇报页面 | 1d | 2015-10-26 | 2015-10-26 | 4d |  |  |  |
| 74 | 1.3.1.2.2.4.3.2 | 汇报查看页面 | 1d | 2015-10-30 | 2015-10-30 | 0d | start no earlier than 2015-10-30 |  |  |
| 75 | 1.3.1.2.2.5 | 微信后台界面设计 | 1d | 2015-10-12 | 2015-10-12 | 14d |  |  |  |
| 76 | 1.3.1.2.3 | **质检门户界面设计** | 10d | 2015-11-02 | 2015-11-13 |  |  | 段佩君; 刘松; 王喆之 | 480h |
| 77 | 1.3.1.2.3.1 | 欢迎页面界面设计 | 1d | 2015-11-02 | 2015-11-02 | 9d |  | 段佩君; 刘松; 王喆之 | 24h |
| 78 | 1.3.1.2.3.2 | **质检门户各功能子界面设计** | 9d | 2015-11-03 | 2015-11-13 |  |  | 段佩君; 刘松; 王喆之 | 216h |
| 79 | 1.3.1.2.3.2.1 | 机构概况 | 1d | 2015-11-03 | 2015-11-03 | 8d |  |  |  |
| 80 | 1.3.1.2.3.2.2 | 通知公告 | 1d | 2015-11-03 | 2015-11-03 | 8d |  |  |  |
| 81 | 1.3.1.2.3.2.3 | 政策法规 | 1d | 2015-11-04 | 2015-11-04 | 106d | start no earlier than 2015-11-04 |  |  |
| 82 | 1.3.1.2.3.2.4 | 网上服务 | 1d | 2015-11-04 | 2015-11-04 | 106d | start no earlier than 2015-11-04 |  |  |
| 83 | 1.3.1.2.3.2.5 | 检验服务 | 1d | 2015-11-05 | 2015-11-05 | 105d | start no earlier than 2015-11-05 |  |  |
| 84 | 1.3.1.2.3.2.6 | 客户专区 | 1d | 2015-11-05 | 2015-11-05 | 105d | start no earlier than 2015-11-05 |  |  |
| 85 | 1.3.1.2.3.2.7 | 投诉与建议 | 1d | 2015-11-06 | 2015-11-06 | 104d | start no earlier than 2015-11-06 |  |  |
| 86 | 1.3.1.2.3.2.8 | 友情链接 | 1d | 2015-11-06 | 2015-11-06 | 104d | start no earlier than 2015-11-06 |  |  |

| ID | WBS | Task | Type | Duration | Start | Finish | Predecessors | Complete | Remaining | Total slack | Constraint | Resources | Work | Actual work |
| --- | --- | --- | --- | --- | --- | --- | --- | --- | --- | --- | --- | --- | --- | --- |
| 87 | 1.3.1.2.3.2.9 | **网上检验大厅界面设计** |  | 5d | 2015-11-09 | 2015-11-13 |  |  |  |  |  |  |  |  |
| 88 | 1.3.1.2.3.2.9.1 | 网上检验大厅在线申请界面设计 |  | 2d | 2015-11-09 | 2015-11-10 |  |  |  | 102d | finish no earlier than 2015-11-10 |  |  |  |
| 89 | 1.3.1.2.3.2.9.2 | 网上检验查询界面 | manual | 1d | 2015-11-11 | 2015-11-11 |  |  |  |  |  |  |  |  |
| 90 | 1.3.1.2.3.2.9.3 | 报告(查询、预览、下载)界面 |  | 2d | 2015-11-12 | 2015-11-13 |  |  |  | 99d | start no earlier than 2015-11-12 |  |  |  |
| 91 | 1.3.1.2.3.2.10 | 检验结果公示页面界面设计 |  | 2d | 2015-11-12 | 2015-11-13 |  |  |  | 99d | finish no earlier than 2015-11-13 |  |  |  |
| 92 | 1.3.1.3 | **业务系统功能开发** |  | 52d | 2015-09-11 A | 2015-11-20 |  | 59% | 21.09d |  |  | 段佩君; 梁凯迪; 刘健森; 刘松; 潘韦驰; 王勇 | 4761.6h | 3009.79h |
| 93 | 1.3.1.3.1 | 系统首页开发 |  | 1d | 2015-09-11 | 2015-09-11 |  |  |  | 51d |  | 刘健森 | 8h |  |
| 94 | 1.3.1.3.2 | **样品管理开发** |  | 4d | 2015-09-14 A | 2015-09-17 |  | 80% | 0.79d |  |  | 段佩君 | 160h | 116.17h |
| 95 | 1.3.1.3.2.1 | 样品信息（增删改查） |  | 1d | 2015-09-14 A | 2015-09-14 A |  | 100% |  |  | finish no earlier than 2015-09-14 | 段佩君 | 8h | 8h |
| 96 | 1.3.1.3.2.2 | 样品二维码生成 | manual | 1d | 2015-09-14 | 2015-09-14 |  |  |  |  |  | 段佩君 | 8h |  |
| 97 | 1.3.1.3.2.3 | 样品信息（导入导出） |  | 1d | 2015-09-15 A | 2015-09-15 A | 95 | 100% |  |  |  | 段佩君 | 8h | 8h |
| 98 | 1.3.1.3.2.4 | 样品登记复核 |  | 1d | 2015-09-15 A | 2015-09-15 |  | 50% | 0.5d | 143d | start no earlier than 2015-09-15 | 段佩君 | 8h | 4h |
| 99 | 1.3.1.3.2.5 | 样品登记审核 |  | 1d | 2015-09-16 A | 2015-09-16 |  | 50% | 0.5d | 142d | start no earlier than 2015-09-16 | 段佩君 | 8h | 4h |
| 100 | 1.3.1.3.2.6 | **样品领用** |  | 1d | 2015-09-14 A | 2015-09-14 A |  | 100% |  |  |  | 段佩君 | 16h | 16h |
| 101 | 1.3.1.3.2.6.1 | 领用审核 |  | 1d | 2015-09-14 A | 2015-09-14 A |  | 100% |  |  |  | 段佩君 | 8h | 8h |
| 102 | 1.3.1.3.2.7 | **样品归还** |  | 1d | 2015-09-14 A | 2015-09-14 A |  | 100% |  |  |  | 段佩君 | 16h | 16h |
| 103 | 1.3.1.3.2.7.1 | 归还审核 |  | 1d | 2015-09-14 A | 2015-09-14 A |  | 100% |  |  |  | 段佩君 | 8h | 8h |
| 104 | 1.3.1.3.2.8 | **样品退样** |  | 1d | 2015-09-14 A | 2015-09-14 A |  | 100% |  |  |  | 段佩君 | 16h | 16h |
| 105 | 1.3.1.3.2.8.1 | 退样审核 |  | 1d | 2015-09-14 A | 2015-09-14 A |  | 100% |  |  |  | 段佩君 | 8h | 8h |
| 106 | 1.3.1.3.2.9 | **预检方案** |  | 2d | 2015-09-14 A | 2015-09-15 |  | 94% | 0.11d | 2d |  | 王勇 | 40h | 37.33h |
| 107 | 1.3.1.3.2.9.1 | 预检方案（增删改查） |  | 2d | 2015-09-14 A | 2015-09-15 |  | 92% | 0.17d | 2d |  | 王勇 | 16h | 14.67h |
| 108 | 1.3.1.3.2.9.2 | 预检方案(导入导出) |  | 1d | 2015-09-15 A | 2015-09-15 A |  | 100% |  |  | start no earlier than 2015-09-15 | 王勇 | 8h | 8h |
| 109 | 1.3.1.3.3 | **检验管理开发** |  | 6d | 2015-09-18 A | 2015-09-24 |  | 72% | 1.69d |  |  | 段佩君; 刘健森; 张益 | 264h | 58h |
| 110 | 1.3.1.3.3.1 | **样品检验** |  | 4d | 2015-09-18 A | 2015-09-22 |  | 85% | 0.6d |  |  | 段佩君 | 72h | 34h |
| 111 | 1.3.1.3.3.1.1 | 样品详情 |  | 1d | 2015-09-18 A | 2015-09-18 |  | 85% | 0.15d | 3d |  | 段佩君 | 8h | 6.8h |
| 112 | 1.3.1.3.3.1.2 | 检验项目（增删改） |  | 1d | 2015-09-18 A | 2015-09-18 |  | 85% | 0.15d | 3d |  | 段佩君 | 8h | 6.8h |
| 113 | 1.3.1.3.3.1.3 | 设备信息（增删改） |  | 1d | 2015-09-18 A | 2015-09-18 |  | 85% | 0.15d | 140d | start no earlier than 2015-09-18 | 段佩君 | 8h | 6.8h |
| 114 | 1.3.1.3.3.1.4 | 检验判定增加 |  | 1d | 2015-09-18 A | 2015-09-18 |  | 85% | 0.15d | 3d |  | 段佩君 | 8h | 6.8h |
| 115 | 1.3.1.3.3.1.5 | 检验原始记录上传 |  | 1d | 2015-09-18 A | 2015-09-18 |  | 85% | 0.15d | 3d |  | 段佩君 | 8h | 6.8h |

| ID | WBS | Task | Type | Duration | Start | Finish | Predecessors | Complete | Remaining | Total slack | Constraint | Resources | Work | Actual work |
| --- | --- | --- | --- | --- | --- | --- | --- | --- | --- | --- | --- | --- | --- | --- |
| 116 | 1.3.1.3.3.2 | **检验复核** |  | 1d | 2015-09-18 A | 2015-09-18 |  | 50% | 0.5d | 0d |  | 段佩君 | 16h | 8h |
| 117 | 1.3.1.3.3.2.1 | 退回 | manual | 1d | 2015-09-18 A | 2015-09-18 |  | 50% | 0.5d |  |  | 段佩君 | 8h | 4h |
| 118 | 1.3.1.3.3.3 | **检验审核** |  | 1d | 2015-09-18 A | 2015-09-18 |  | 50% | 0.5d | 0d |  | 段佩君 | 16h | 8h |
| 119 | 1.3.1.3.3.3.1 | 退回 | manual | 1d | 2015-09-18 A | 2015-09-18 |  | 50% | 0.5d |  |  | 段佩君 | 8h | 4h |
| 120 | 1.3.1.3.3.4 | **检验退检** |  | 1d | 2015-09-18 A | 2015-09-18 |  | 50% | 0.5d | 5d |  | 段佩君 | 16h | 8h |
| 121 | 1.3.1.3.3.4.1 | 退检审核 |  | 1d | 2015-09-18 A | 2015-09-18 |  | 50% | 0.5d | 5d |  | 段佩君 | 8h | 4h |
| 122 | 1.3.1.3.4 | 评审代码 | manual | 1d | 2015-09-22 | 2015-09-22 |  |  |  |  |  | 何书查 | 8h |  |
| 123 | 1.3.1.3.5 | 单元测试 | manual | 2d | 2015-09-23 A | 2015-09-24 A |  | 100% |  |  |  | 蒋永正; 何书查 | 32h | 32h |
| 124 | 1.3.1.3.6 | **检验报告编制** |  | 6d | 2015-09-25 A | 2015-10-02 | 109 | 19% | 4.87d |  |  | 段佩君 | 232h | 33.6h |
| 125 | 1.3.1.3.6.1 | **报告编制** |  | 2d | 2015-09-25 A | 2015-09-28 |  | 35% | 1.3d |  |  | 段佩君 | 48h | 11.2h |
| 126 | 1.3.1.3.6.1.1 | 编制报告 |  | 2d | 2015-09-25 A | 2015-09-28 |  | 70% | 0.6d | 0d |  | 段佩君 | 16h | 11.2h |
| 127 | 1.3.1.3.6.1.2 | 报告二维码生成 | manual | 1d | 2015-09-25 | 2015-09-25 |  |  |  |  |  | 段佩君 | 8h |  |
| 128 | 1.3.1.3.6.1.3 | 报告预览 |  | 1d | 2015-09-28 | 2015-09-28 |  |  |  | 133d | start no earlier than 2015-09-28 | 段佩君 | 8h |  |
| 129 | 1.3.1.3.6.2 | **报告复核** |  | 1d | 2015-09-29 A | 2015-09-29 | 125 | 30% | 0.7d |  |  | 段佩君 | 24h | 7.2h |
| 130 | 1.3.1.3.6.2.1 | 退回 |  | 1d | 2015-09-29 A | 2015-09-29 |  | 30% | 0.7d | 0d |  | 段佩君 | 8h | 2.4h |
| 131 | 1.3.1.3.6.2.2 | 报告预览 |  | 1d | 2015-09-29 A | 2015-09-29 |  | 30% | 0.7d | 132d | start no earlier than 2015-09-29 | 段佩君 | 8h | 2.4h |
| 132 | 1.3.1.3.6.3 | **报告审核** |  | 1d | 2015-09-29 A | 2015-09-29 | 129 | 30% | 0.7d |  |  | 段佩君 | 24h | 7.2h |
| 133 | 1.3.1.3.6.3.1 | 退回 |  | 1d | 2015-09-29 A | 2015-09-29 |  | 30% | 0.7d | 0d |  | 段佩君 | 8h | 2.4h |
| 134 | 1.3.1.3.6.3.2 | 报告预览 |  | 1d | 2015-09-29 A | 2015-09-29 |  | 30% | 0.7d | 132d | start no earlier than 2015-09-29 | 段佩君 | 8h | 2.4h |
| 135 | 1.3.1.3.6.4 | **报告批准** |  | 1d | 2015-09-30 A | 2015-09-30 | 132 | 20% | 0.8d |  |  | 段佩君 | 24h | 4.8h |
| 136 | 1.3.1.3.6.4.1 | 退回 |  | 1d | 2015-09-30 A | 2015-09-30 |  | 20% | 0.8d | 0d |  | 段佩君 | 8h | 1.6h |
| 137 | 1.3.1.3.6.4.2 | 报告预览 |  | 1d | 2015-09-30 A | 2015-09-30 |  | 20% | 0.8d | 131d | start no earlier than 2015-09-30 | 段佩君 | 8h | 1.6h |
| 138 | 1.3.1.3.6.5 | **报告发放** |  | 1d | 2015-09-30 A | 2015-09-30 | 135 | 20% | 0.8d |  |  | 段佩君 | 16h | 3.2h |
| 139 | 1.3.1.3.6.5.1 | 报告预览 |  | 1d | 2015-09-30 A | 2015-09-30 |  | 20% | 0.8d | 131d | start no earlier than 2015-09-30 | 段佩君 | 8h | 1.6h |
| 140 | 1.3.1.3.6.6 | 报告打印 |  | 1d | 2015-10-01 | 2015-10-01 | 138 |  |  | 0d | start no earlier than 2015-10-01 | 段佩君 | 8h |  |
| 141 | 1.3.1.3.6.7 | 报告归档 |  | 1d | 2015-10-01 | 2015-10-01 |  |  |  | 0d | start no earlier than 2015-10-01 | 段佩君 | 8h |  |
| 142 | 1.3.1.3.6.8 | 报告解锁 |  | 2d | 2015-10-01 | 2015-10-02 |  |  |  | 129d | finish no earlier than 2015-10-02 | 段佩君 | 16h |  |
| 143 | 1.3.1.3.6.9 | 退检报告（改、删、查） |  | 1d | 2015-10-02 | 2015-10-02 | 141 |  |  | 0d |  | 段佩君 | 8h |  |
| 144 | 1.3.1.3.6.10 | 超期报告（改、删、查） |  | 1d | 2015-10-02 | 2015-10-02 | 140 |  |  | 0d |  | 段佩君 | 8h |  |
| 145 | 1.3.1.3.7 | 评审代码 | manual | 1d | 2015-10-05 | 2015-10-05 |  |  |  |  |  | 何书查 | 8h |  |
| 146 | 1.3.1.3.8 | 单元测试 | manual | 2d | 2015-10-06 A | 2015-10-07 A |  | 100% |  |  |  | 何书查; 蒋永正 | 32h | 32h |

| ID | WBS | Task | Duration | Start | Finish | Complete | Remaining | Total slack | Constraint | Resources | Work | Actual work |
| --- | --- | --- | --- | --- | --- | --- | --- | --- | --- | --- | --- | --- |
| 147 | 1.3.1.3.9 | **任务管理开发** | 2d | 2015-09-16 A | 2015-09-17 | 50% | 1d |  |  | 段佩君 | 80h | 64h |
| 148 | 1.3.1.3.9.1 | **我的任务** | 1d | 2015-09-16 A | 2015-09-16 A | 100% |  |  |  | 段佩君 | 32h | 32h |
| 149 | 1.3.1.3.9.1.1 | 任务处理(查、改) | 1d | 2015-09-16 A | 2015-09-16 A | 100% |  |  |  | 段佩君 | 8h | 8h |
| 150 | 1.3.1.3.9.1.2 | 任务详情 | 1d | 2015-09-16 A | 2015-09-16 A | 100% |  |  |  | 段佩君 | 8h | 8h |
| 151 | 1.3.1.3.9.1.3 | 任务延期（查、改） | 1d | 2015-09-16 A | 2015-09-16 A | 100% |  |  | start no earlier than 2015-09-16 | 段佩君 | 8h | 8h |
| 152 | 1.3.1.3.9.2 | **任务下达（分配—指派）** | 1d | 2015-09-17 A | 2015-09-17 A | 100% |  |  |  | 段佩君 | 32h | 32h |
| 153 | 1.3.1.3.9.2.1 | 任务分配（改、删、查） | 1d | 2015-09-17 A | 2015-09-17 A | 100% |  |  |  | 段佩君 | 8h | 8h |
| 154 | 1.3.1.3.9.2.2 | 任务指派（改、删、查） | 1d | 2015-09-17 A | 2015-09-17 A | 100% |  |  | start no earlier than 2015-09-17 | 段佩君 | 8h | 8h |
| 155 | 1.3.1.3.9.2.3 | 任务延期（改、删、查） | 1d | 2015-09-17 A | 2015-09-17 A | 100% |  |  | start no earlier than 2015-09-17 | 段佩君 | 8h | 8h |
| 156 | 1.3.1.3.9.3 | **系统预警** | 2d | 2015-09-16 | 2015-09-17 |  |  |  |  |  |  |  |
| 157 | 1.3.1.3.9.3.1 | 任务预警提醒 | 1d | 2015-09-16 | 2015-09-16 |  |  | 1d |  |  |  |  |
| 158 | 1.3.1.3.9.3.2 | 任务详情 | 1d | 2015-09-16 | 2015-09-16 |  |  | 1d |  |  |  |  |
| 159 | 1.3.1.3.9.4 | **任务台** | 2d | 2015-09-16 | 2015-09-17 |  |  |  |  |  |  |  |
| 160 | 1.3.1.3.9.4.1 | 待办 | 1d | 2015-09-16 | 2015-09-16 |  |  | 1d |  |  |  |  |
| 161 | 1.3.1.3.9.4.2 | 已办 | 1d | 2015-09-16 | 2015-09-16 |  |  | 1d |  |  |  |  |
| 162 | 1.3.1.3.9.4.3 | 督办 | 1d | 2015-09-17 | 2015-09-17 |  |  | 141d | start no earlier than 2015-09-17 |  |  |  |
| 163 | 1.3.1.3.9.4.4 | 超期 | 1d | 2015-09-17 | 2015-09-17 |  |  | 141d | start no earlier than 2015-09-17 |  |  |  |
| 164 | 1.3.1.3.10 | **查询与统计开发** | 10d | 2015-11-09 | 2015-11-20 |  |  |  |  |  |  |  |
| 165 | 1.3.1.3.10.1 | **业务统计（查询、查看）** | 2d | 2015-11-09 | 2015-11-10 |  |  |  |  |  |  |  |
| 166 | 1.3.1.3.10.1.1 | 年检验量统计（打印） | 1d | 2015-11-09 | 2015-11-09 |  |  | 1d |  |  |  |  |
| 167 | 1.3.1.3.10.1.2 | 年检验量统计（导出） | 1d | 2015-11-09 | 2015-11-09 |  |  | 1d |  |  |  |  |
| 168 | 1.3.1.3.10.1.3 | 月检验量统计（打印） | 1d | 2015-11-09 | 2015-11-09 |  |  | 1d |  |  |  |  |
| 169 | 1.3.1.3.10.1.4 | 月检验量统计（导出） | 1d | 2015-11-09 | 2015-11-09 |  |  | 1d |  |  |  |  |
| 170 | 1.3.1.3.10.1.5 | 个人检验量统计（打印） | 1d | 2015-11-09 | 2015-11-09 |  |  | 1d |  |  |  |  |
| 171 | 1.3.1.3.10.1.6 | 个人检验量统计（导出） | 1d | 2015-11-09 | 2015-11-09 |  |  | 1d |  |  |  |  |
| 172 | 1.3.1.3.10.1.7 | 检验客户统计（打印） | 1d | 2015-11-09 | 2015-11-09 |  |  | 1d |  |  |  |  |
| 173 | 1.3.1.3.10.1.8 | 检验客户统计（导出） | 1d | 2015-11-09 | 2015-11-09 |  |  | 1d |  |  |  |  |
| 174 | 1.3.1.3.10.1.9 | 合格样品统计（打印） | 1d | 2015-11-09 | 2015-11-09 |  |  | 1d |  |  |  |  |
| 175 | 1.3.1.3.10.1.10 | 合格样品统计（导出） | 1d | 2015-11-09 | 2015-11-09 |  |  | 1d |  |  |  |  |
| 176 | 1.3.1.3.10.1.11 | 不合格样品统计（打印） | 1d | 2015-11-09 | 2015-11-09 |  |  | 1d |  |  |  |  |
| 177 | 1.3.1.3.10.1.12 | 不合格样品统计（导出） | 1d | 2015-11-09 | 2015-11-09 |  |  | 1d |  |  |  |  |
| 178 | 1.3.1.3.10.1.13 | 设备使用统计（打印） | 1d | 2015-11-09 | 2015-11-09 |  |  | 1d |  |  |  |  |
| 179 | 1.3.1.3.10.1.14 | 设备使用统计（导出） | 1d | 2015-11-09 | 2015-11-09 |  |  | 1d |  |  |  |  |
| 180 | 1.3.1.3.10.1.15 | 样品分类统计（打印） | 1d | 2015-11-09 | 2015-11-09 |  |  | 1d |  |  |  |  |
| 181 | 1.3.1.3.10.1.16 | 样品分类统计（导出） | 1d | 2015-11-09 | 2015-11-09 |  |  | 1d |  |  |  |  |

| ID | WBS | Task | Duration | Start | Finish | Total slack | Constraint |
| --- | --- | --- | --- | --- | --- | --- | --- |
| 182 | 1.3.1.3.10.2 | **报告统计（查询、查看）** | 2d | 2015-11-11 | 2015-11-12 |  |  |
| 183 | 1.3.1.3.10.2.1 | 所有报告统计（打印） | 1d | 2015-11-11 | 2015-11-11 | 1d |  |
| 184 | 1.3.1.3.10.2.2 | 所有报告统计（导出） | 1d | 2015-11-11 | 2015-11-11 | 1d |  |
| 185 | 1.3.1.3.10.2.3 | 合格报告统计（打印） | 1d | 2015-11-11 | 2015-11-11 | 1d |  |
| 186 | 1.3.1.3.10.2.4 | 合格报告统计（导出） | 1d | 2015-11-11 | 2015-11-11 | 1d |  |
| 187 | 1.3.1.3.10.2.5 | 不合格报告统计（打印） | 1d | 2015-11-11 | 2015-11-11 | 1d |  |
| 188 | 1.3.1.3.10.2.6 | 不合格报告统计（导出） | 1d | 2015-11-11 | 2015-11-11 | 1d |  |
| 189 | 1.3.1.3.10.3 | **财务统计（查询、查看）** | 2d | 2015-11-13 | 2015-11-16 |  |  |
| 190 | 1.3.1.3.10.3.1 | 总体费用统计（打印） | 1d | 2015-11-13 | 2015-11-13 | 1d |  |
| 191 | 1.3.1.3.10.3.2 | 总体费用统计（导出） | 1d | 2015-11-13 | 2015-11-13 | 1d |  |
| 192 | 1.3.1.3.10.3.3 | 报告收费统计（打印） | 1d | 2015-11-13 | 2015-11-13 | 1d |  |
| 193 | 1.3.1.3.10.3.4 | 报告收费统计（导出） | 1d | 2015-11-13 | 2015-11-13 | 1d |  |
| 194 | 1.3.1.3.10.3.5 | 收入统计（打印） | 1d | 2015-11-13 | 2015-11-13 | 1d |  |
| 195 | 1.3.1.3.10.3.6 | 收入统计（导出） | 1d | 2015-11-13 | 2015-11-13 | 1d |  |
| 196 | 1.3.1.3.10.3.7 | 成本统计（打印） | 1d | 2015-11-13 | 2015-11-13 | 1d |  |
| 197 | 1.3.1.3.10.3.8 | 成本统计（导出） | 1d | 2015-11-13 | 2015-11-13 | 1d |  |
| 198 | 1.3.1.3.10.3.9 | 员工福利统计（打印） | 1d | 2015-11-13 | 2015-11-13 | 1d |  |
| 199 | 1.3.1.3.10.3.10 | 员工福利统计（导出） | 1d | 2015-11-13 | 2015-11-13 | 1d |  |
| 200 | 1.3.1.3.10.4 | **任务统计（查询、查看）** | 2d | 2015-11-17 | 2015-11-18 |  |  |
| 201 | 1.3.1.3.10.4.1 | 所有任务统计（打印） | 1d | 2015-11-17 | 2015-11-17 | 1d |  |
| 202 | 1.3.1.3.10.4.2 | 所有任务统计（导出） | 1d | 2015-11-17 | 2015-11-17 | 1d |  |
| 203 | 1.3.1.3.10.4.3 | 按时完成量统计（打印） | 1d | 2015-11-17 | 2015-11-17 | 1d |  |
| 204 | 1.3.1.3.10.4.4 | 按时完成量统计（导出） | 1d | 2015-11-17 | 2015-11-17 | 1d |  |
| 205 | 1.3.1.3.10.4.5 | 超期完成量统计（打印） | 1d | 2015-11-17 | 2015-11-17 | 1d |  |
| 206 | 1.3.1.3.10.4.6 | 超期完成量统计（导出） | 1d | 2015-11-17 | 2015-11-17 | 1d |  |
| 207 | 1.3.1.3.10.4.7 | 任务来源统计（打印） | 1d | 2015-11-17 | 2015-11-17 | 1d |  |
| 208 | 1.3.1.3.10.4.8 | 任务来源统计（导出） | 1d | 2015-11-17 | 2015-11-17 | 1d |  |
| 209 | 1.3.1.3.10.4.9 | 时效考核统计（打印） | 1d | 2015-11-17 | 2015-11-17 | 1d |  |
| 210 | 1.3.1.3.10.4.10 | 时效考核统计（导出） | 1d | 2015-11-17 | 2015-11-17 | 1d |  |
| 211 | 1.3.1.3.10.5 | 各类数据报表导出 | 2d | 2015-11-19 | 2015-11-20 | 94d | finish no earlier than 2015-11-20 |

| ID | WBS | Task | Type | Duration | Start | Finish | Predecessors | Complete | Remaining | Total slack | Constraint | Resources | Work | Actual work |
| --- | --- | --- | --- | --- | --- | --- | --- | --- | --- | --- | --- | --- | --- | --- |
| 212 | 1.3.1.3.11 | **客户管理开发** |  | 1d | 2015-10-16 A | 2015-10-16 A |  | 100% |  |  |  | 梁凯迪 | 40h | 40h |
| 213 | 1.3.1.3.11.1 | 客户信息（增删改查） |  | 1d | 2015-10-16 A | 2015-10-16 A |  | 100% |  |  |  | 梁凯迪 | 8h | 8h |
| 214 | 1.3.1.3.11.2 | 客户信息（导入导出） |  | 1d | 2015-10-16 A | 2015-10-16 A |  | 100% |  |  |  | 梁凯迪 | 8h | 8h |
| 215 | 1.3.1.3.11.3 | 客户行业管理（增删改查） |  | 1d | 2015-10-16 A | 2015-10-16 A |  | 100% |  |  |  | 梁凯迪 | 8h | 8h |
| 216 | 1.3.1.3.11.4 | 客户行业管理（导入导出） |  | 1d | 2015-10-16 A | 2015-10-16 A |  | 100% |  |  |  | 梁凯迪 | 8h | 8h |
| 217 | 1.3.1.3.12 | **检验标准管理开发** |  | 2d | 2015-10-08 A | 2015-10-09 |  | 88% | 0.23d |  |  | 段佩君 | 57.6h | 36.8h |
| 218 | 1.3.1.3.12.1 | 检验标准（增删改查） |  | 0.2d | 2015-10-08 A | 2015-10-08 A |  | 100% |  |  |  | 段佩君 | 1.6h | 1.6h |
| 219 | 1.3.1.3.12.2 | 检验标准废止 |  | 1d | 2015-10-08 A | 2015-10-08 A |  | 100% |  |  |  | 段佩君 | 8h | 8h |
| 220 | 1.3.1.3.12.3 | 检验标准（导入导出） |  | 1d | 2015-10-08 A | 2015-10-08 A |  | 100% |  |  | start no earlier than 2015-10-08 | 段佩君 | 8h | 8h |
| 221 | 1.3.1.3.12.4 | 检验标准（审核） |  | 1d | 2015-10-08 A | 2015-10-08 |  | 40% | 0.6d | 125d | start no earlier than 2015-10-08 | 段佩君 | 8h | 3.2h |
| 222 | 1.3.1.3.12.5 | 检验项目（增删改查） |  | 1d | 2015-10-09 A | 2015-10-09 A | 221 | 100% |  |  |  | 段佩君 | 8h | 8h |
| 223 | 1.3.1.3.12.6 | 检验项目（导入导出） |  | 1d | 2015-10-09 A | 2015-10-09 A |  | 100% |  |  | finish no earlier than 2015-10-09 | 段佩君 | 8h | 8h |
| 224 | 1.3.1.3.13 | **设备管理开发** |  | 3d | 2015-10-12 A | 2015-10-14 |  | 87% | 0.39d |  |  | 刘松 | 104h | 69.6h |
| 225 | 1.3.1.3.13.1 | 设备信息（增删改查） |  | 1d | 2015-10-12 A | 2015-10-12 A |  | 100% |  |  |  | 刘松 | 8h | 8h |
| 226 | 1.3.1.3.13.2 | 设备二维码生产 |  | 1d | 2015-10-12 | 2015-10-12 |  |  |  | 2d |  | 段佩君 | 8h |  |
| 227 | 1.3.1.3.13.3 | 设备信息（导入导出） |  | 1d | 2015-10-12 A | 2015-10-12 A |  | 100% |  |  |  | 刘松 | 8h | 8h |
| 228 | 1.3.1.3.13.4 | 设备使用记录（增删改查） |  | 1d | 2015-10-13 A | 2015-10-13 A | 227 | 100% |  |  |  | 刘松 | 8h | 8h |
| 229 | 1.3.1.3.13.5 | 设备使用记录（导入导出） |  | 1d | 2015-10-13 A | 2015-10-13 A | 225 | 100% |  |  |  | 刘松 | 8h | 8h |
| 230 | 1.3.1.3.13.6 | 设备报修记录（增删改查） |  | 1d | 2015-10-12 A | 2015-10-12 A |  | 100% |  |  |  | 刘松 | 8h | 8h |
| 231 | 1.3.1.3.13.7 | 设备报修记录（导入导出） |  | 1d | 2015-10-12 A | 2015-10-12 A |  | 100% |  |  |  | 刘松 | 8h | 8h |
| 232 | 1.3.1.3.13.8 | 设备申购（增删改查） |  | 1d | 2015-10-14 A | 2015-10-14 A | 229 | 100% |  |  |  | 刘松 | 8h | 8h |
| 233 | 1.3.1.3.13.9 | 设备申购（导入导出） |  | 1d | 2015-10-14 A | 2015-10-14 A | 228 | 100% |  |  |  | 刘松 | 8h | 8h |
| 234 | 1.3.1.3.13.10 | 设备申购（审核） |  | 1d | 2015-10-14 A | 2015-10-14 |  | 70% | 0.3d | 121d | start no earlier than 2015-10-14 | 刘松 | 8h | 5.6h |
| 235 | 1.3.1.3.14 | 评审代码 | manual | 1d | 2015-10-19 | 2015-10-19 |  |  |  |  |  | 何书查 | 8h |  |
| 236 | 1.3.1.3.15 | 单元测试 | milestone, manual | 0d | 2015-10-20 A | 2015-10-20 A |  | 100% |  |  |  | 蒋永正; 何书查 |  |  |

| ID | WBS | Task | Duration | Start | Finish | Complete | Remaining | Actual start | Total slack | Resources | Work | Actual work |
| --- | --- | --- | --- | --- | --- | --- | --- | --- | --- | --- | --- | --- |
| 237 | 1.3.1.3.16 | **技术服务管理开发** | 1d | 2015-10-21 A | 2015-10-21 A | 100% |  |  |  | 刘松 | 24h | 24h |
| 238 | 1.3.1.3.16.1 | 技术服务（增删改查） | 1d | 2015-10-21 A | 2015-10-21 A | 100% |  |  |  | 刘松 | 8h | 8h |
| 239 | 1.3.1.3.16.2 | 技术服务（导入导出） | 1d | 2015-10-21 A | 2015-10-21 A | 100% |  |  |  | 刘松 | 8h | 8h |
| 240 | 1.3.1.3.17 | **消息管理开发** | 1d | 2015-10-22 A | 2015-10-22 A | 100% |  |  |  | 段佩君 | 24h | 24h |
| 241 | 1.3.1.3.17.1 | 消息（增删改查） | 1d | 2015-10-22 A | 2015-10-22 A | 100% |  |  |  | 段佩君 | 8h | 8h |
| 242 | 1.3.1.3.17.2 | 消息（导入导出） | 1d | 2015-10-22 A | 2015-10-22 A | 100% |  |  |  | 段佩君 | 8h | 8h |
| 243 | 1.3.1.3.18 | **上岗证管理开发** | 1d | 2015-10-22 A | 2015-10-22 A | 100% |  |  |  | 梁凯迪 | 24h | 24h |
| 244 | 1.3.1.3.18.1 | 上岗证（增删改查） | 1d | 2015-10-22 A | 2015-10-22 A | 100% |  |  |  | 梁凯迪 | 8h | 8h |
| 245 | 1.3.1.3.18.2 | 上岗证（导入导出） | 1d | 2015-10-22 A | 2015-10-22 A | 100% |  |  |  | 梁凯迪 | 8h | 8h |
| 246 | 1.3.1.3.19 | **认证产品管理研发** | 1d | 2015-10-21 A | 2015-10-21 A | 100% |  |  |  | 王勇 | 24h | 24h |
| 247 | 1.3.1.3.19.1 | 认证产品（增删改查） | 1d | 2015-10-21 A | 2015-10-21 A | 100% |  |  |  | 王勇 | 8h | 8h |
| 248 | 1.3.1.3.19.2 | 认证产品（导入导出） | 1d | 2015-10-21 A | 2015-10-21 A | 100% |  |  |  | 王勇 | 8h | 8h |
| 249 | 1.3.1.3.20 | **检验收费标准管理** | 1d | 2015-10-15 A | 2015-10-15 A | 100% |  |  |  | 梁凯迪 | 32h | 32h |
| 250 | 1.3.1.3.20.1 | 检验收费标准（增删改查） | 1d | 2015-10-15 A | 2015-10-15 A | 100% |  |  |  | 梁凯迪 | 8h | 8h |
| 251 | 1.3.1.3.20.2 | 检验收费标准（导入导出） | 1d | 2015-10-15 A | 2015-10-15 A | 100% |  |  |  | 梁凯迪 | 8h | 8h |
| 252 | 1.3.1.3.20.3 | 检验收费标准（审核） | 1d | 2015-10-15 A | 2015-10-15 A | 100% |  |  |  | 梁凯迪 | 8h | 8h |
| 253 | 1.3.1.3.21 | **投诉管理开发** | 1d | 2015-10-23 A | 2015-10-23 A | 100% |  |  |  | 梁凯迪 | 32h | 32h |
| 254 | 1.3.1.3.21.1 | 投诉（增删改查） | 1d | 2015-10-23 A | 2015-10-23 A | 100% |  |  |  | 梁凯迪 | 8h | 8h |
| 255 | 1.3.1.3.21.2 | 投诉（导入导出） | 1d | 2015-10-23 A | 2015-10-23 A | 100% |  |  |  | 梁凯迪 | 8h | 8h |
| 256 | 1.3.1.3.21.3 | 投诉（处理） | 1d | 2015-10-23 A | 2015-10-23 A | 100% |  |  |  | 梁凯迪 | 8h | 8h |
| 257 | 1.3.1.3.22 | **财务管理开发** | 3d | 2015-10-26 | 2015-10-28 | 75% | 0.75d | 2015-09-11 |  | 刘健森; 王勇 | 176h | 123.52h |
| 258 | 1.3.1.3.22.1 | **报告收费** | 1d | 2015-10-26 | 2015-10-26 |  |  |  |  | 刘健森 | 32h |  |
| 259 | 1.3.1.3.22.1.1 | 报告收费（处理） | 1d | 2015-10-26 | 2015-10-26 |  |  |  | 0d | 刘健森 | 8h |  |
| 260 | 1.3.1.3.22.1.2 | 报告收费（修删查） | 1d | 2015-10-26 | 2015-10-26 |  |  |  | 0d | 刘健森 | 8h |  |
| 261 | 1.3.1.3.22.1.3 | 报告收费（延期） | 1d | 2015-10-26 | 2015-10-26 |  |  |  | 0d | 刘健森 | 8h |  |

| ID | WBS | Task | Type | Duration | Start | Finish | Complete | Actual start | Resources | Work | Actual work |
| --- | --- | --- | --- | --- | --- | --- | --- | --- | --- | --- | --- |
| 262 | 1.3.1.3.22.2 | **成本管理** |  | 1d | 2015-10-27 A | 2015-10-27 A | 100% |  | 王勇 | 32h | 32h |
| 263 | 1.3.1.3.22.2.1 | 成本管理（增删改查） |  | 1d | 2015-10-27 A | 2015-10-27 A | 100% |  | 王勇 | 8h | 8h |
| 264 | 1.3.1.3.22.2.2 | 成本明细管理（增删改查） |  | 1d | 2015-10-27 A | 2015-10-27 A | 100% |  | 王勇 | 8h | 8h |
| 265 | 1.3.1.3.22.2.3 | 成本管理（导入导出） |  | 1d | 2015-10-27 A | 2015-10-27 A | 100% |  | 王勇 | 8h | 8h |
| 266 | 1.3.1.3.22.3 | **员工福利管理** |  | 1d | 2015-10-27 A | 2015-10-27 A | 100% |  | 王勇 | 32h | 32h |
| 267 | 1.3.1.3.22.3.1 | 员工福利管理（增删改查） |  | 1d | 2015-10-27 A | 2015-10-27 A | 100% |  | 王勇 | 8h | 8h |
| 268 | 1.3.1.3.22.3.2 | 员工福利明细管理（增删改查） |  | 1d | 2015-10-27 A | 2015-10-27 A | 100% |  | 王勇 | 8h | 8h |
| 269 | 1.3.1.3.22.3.3 | 员工福利管理（导入导出） |  | 1d | 2015-10-27 A | 2015-10-27 A | 100% |  | 王勇 | 8h | 8h |
| 270 | 1.3.1.3.22.4 | **科室收入管理** |  | 1d | 2015-10-28 | 2015-10-28 A | 100% | 2015-09-11 | 王勇 | 32h | 32h |
| 271 | 1.3.1.3.22.4.1 | 科室收入管理（增删改查） |  | 1d | 2015-09-11 A | 2015-09-11 A | 100% |  | 王勇 | 8h | 8h |
| 272 | 1.3.1.3.22.4.2 | 科室收入明细管理（增删改查） |  | 1d | 2015-09-11 A | 2015-09-11 A | 100% |  | 王勇 | 8h | 8h |
| 273 | 1.3.1.3.22.4.3 | 科室收入管理（导入导出） |  | 1d | 2015-09-11 A | 2015-09-11 A | 100% |  | 王勇 | 8h | 8h |
| 274 | 1.3.1.3.23 | 评审代码 | manual | 1d | 2015-10-29 | 2015-10-29 |  |  | 何书查 | 8h |  |
| 275 | 1.3.1.3.24 | 单元测试 | manual | 2d | 2015-10-30 A | 2015-11-02 A | 100% |  | 何书查; 蒋永正 | 32h | 32h |
| 276 | 1.3.1.3.25 | **收发文管理开发** |  | 1d | 2015-11-03 A | 2015-11-03 A | 100% |  | 梁凯迪 | 24h | 24h |
| 277 | 1.3.1.3.25.1 | 发文（增删改查） |  | 1d | 2015-11-03 A | 2015-11-03 A | 100% |  | 梁凯迪 | 8h | 8h |
| 278 | 1.3.1.3.25.2 | 收文（删改查） |  | 1d | 2015-11-03 A | 2015-11-03 A | 100% |  | 梁凯迪 | 8h | 8h |
| 279 | 1.3.1.3.26 | **人事管理开发** |  | 3d | 2015-11-04 A | 2015-11-06 A | 100% |  | 王勇; 刘松 | 168h | 168h |
| 280 | 1.3.1.3.26.1 | **人员档案管理** |  | 1d | 2015-11-05 A | 2015-11-05 A | 100% |  | 王勇 | 24h | 24h |
| 281 | 1.3.1.3.26.1.1 | 人员档案管理（增删改查） |  | 1d | 2015-11-05 A | 2015-11-05 A | 100% |  | 王勇 | 8h | 8h |
| 282 | 1.3.1.3.26.1.2 | 人员档案管理（导入导出） |  | 1d | 2015-11-05 A | 2015-11-05 A | 100% |  | 王勇 | 8h | 8h |
| 283 | 1.3.1.3.26.2 | **奖惩管理** |  | 1d | 2015-11-05 A | 2015-11-05 A | 100% |  | 王勇 | 24h | 24h |
| 284 | 1.3.1.3.26.2.1 | 奖惩管理（增删改查） |  | 1d | 2015-11-05 A | 2015-11-05 A | 100% |  | 王勇 | 8h | 8h |
| 285 | 1.3.1.3.26.2.2 | 奖惩管理（导入导出） |  | 1d | 2015-11-05 A | 2015-11-05 A | 100% |  | 王勇 | 8h | 8h |

| ID | WBS | Task | Duration | Start | Finish | Complete | Constraint | Resources | Work | Actual work |
| --- | --- | --- | --- | --- | --- | --- | --- | --- | --- | --- |
| 286 | 1.3.1.3.26.3 | **薪资管理** | 1d | 2015-11-06 A | 2015-11-06 A | 100% |  | 王勇 | 24h | 24h |
| 287 | 1.3.1.3.26.3.1 | 薪资管理（增删改查） | 1d | 2015-11-06 A | 2015-11-06 A | 100% |  | 王勇 | 8h | 8h |
| 288 | 1.3.1.3.26.3.2 | 薪资管理（导入导出） | 1d | 2015-11-06 A | 2015-11-06 A | 100% |  | 王勇 | 8h | 8h |
| 289 | 1.3.1.3.26.4 | **人员管理** | 1d | 2015-11-04 A | 2015-11-04 A | 100% |  | 刘松 | 32h | 32h |
| 290 | 1.3.1.3.26.4.1 | 人员管理（增删改查） | 1d | 2015-11-04 A | 2015-11-04 A | 100% |  | 刘松 | 8h | 8h |
| 291 | 1.3.1.3.26.4.2 | 人员角色分配 | 1d | 2015-11-04 A | 2015-11-04 A | 100% |  | 刘松 | 8h | 8h |
| 292 | 1.3.1.3.26.4.3 | 人员管理（导入导出） | 1d | 2015-11-04 A | 2015-11-04 A | 100% | start no earlier than 2015-11-04 | 刘松 | 8h | 8h |
| 293 | 1.3.1.3.26.5 | **培训考核记录** | 1d | 2015-11-06 A | 2015-11-06 A | 100% |  | 王勇 | 24h | 24h |
| 294 | 1.3.1.3.26.5.1 | 培训考核记录（增删改查） | 1d | 2015-11-06 A | 2015-11-06 A | 100% |  | 王勇 | 8h | 8h |
| 295 | 1.3.1.3.26.5.2 | 培训考核记录（导入导出） | 1d | 2015-11-06 A | 2015-11-06 A | 100% |  | 王勇 | 8h | 8h |
| 296 | 1.3.1.3.27 | **科研管理开发** | 1d | 2015-11-09 A | 2015-11-09 A | 100% |  | 刘松 | 80h | 80h |
| 297 | 1.3.1.3.27.1 | **信息管理** | 1d | 2015-11-09 A | 2015-11-09 A | 100% |  | 刘松 | 24h | 24h |
| 298 | 1.3.1.3.27.1.1 | 信息管理（增删改查） | 1d | 2015-11-09 A | 2015-11-09 A | 100% |  | 刘松 | 8h | 8h |
| 299 | 1.3.1.3.27.1.2 | 信息管理（导入导出） | 1d | 2015-11-09 A | 2015-11-09 A | 100% |  | 刘松 | 8h | 8h |
| 300 | 1.3.1.3.27.2 | **经费管理** | 1d | 2015-11-09 A | 2015-11-09 A | 100% |  | 刘松 | 24h | 24h |
| 301 | 1.3.1.3.27.2.1 | 经费管理（增删改查） | 1d | 2015-11-09 A | 2015-11-09 A | 100% |  | 刘松 | 8h | 8h |
| 302 | 1.3.1.3.27.2.2 | 经费管理（导入导出） | 1d | 2015-11-09 A | 2015-11-09 A | 100% |  | 刘松 | 8h | 8h |
| 303 | 1.3.1.3.27.3 | **成果管理** | 1d | 2015-11-09 A | 2015-11-09 A | 100% |  | 刘松 | 24h | 24h |
| 304 | 1.3.1.3.27.3.1 | 成果管理（增删改查） | 1d | 2015-11-09 A | 2015-11-09 A | 100% |  | 刘松 | 8h | 8h |
| 305 | 1.3.1.3.27.3.2 | 成果管理（导入导出） | 1d | 2015-11-09 A | 2015-11-09 A | 100% |  | 刘松 | 8h | 8h |
| 306 | 1.3.1.3.28 | **督办管理** | 1d | 2015-11-10 A | 2015-11-10 A | 100% |  | 刘松 | 32h | 32h |
| 307 | 1.3.1.3.28.1 | 业务督办发送 | 1d | 2015-11-10 A | 2015-11-10 A | 100% |  | 刘松 | 8h | 8h |
| 308 | 1.3.1.3.28.2 | 业务督办回复 | 1d | 2015-11-10 A | 2015-11-10 A | 100% |  | 刘松 | 8h | 8h |
| 309 | 1.3.1.3.28.3 | 业务督办（查询、删除、查看） | 1d | 2015-11-10 A | 2015-11-10 A | 100% |  | 刘松 | 8h | 8h |

| ID | WBS | Task | Type | Duration | Start | Finish | Complete | Remaining | Total slack | Constraint | Resources | Work | Actual work |
| --- | --- | --- | --- | --- | --- | --- | --- | --- | --- | --- | --- | --- | --- |
| 310 | 1.3.1.3.29 | **归档管理** |  | 1d | 2015-11-11 A | 2015-11-11 A | 100% |  |  |  | 刘松 | 48h | 48h |
| 311 | 1.3.1.3.29.1 | 分类管理（增删改查） |  | 1d | 2015-11-11 A | 2015-11-11 A | 100% |  |  |  | 刘松 | 8h | 8h |
| 312 | 1.3.1.3.29.2 | 保管期限（增删改查） |  | 1d | 2015-11-11 A | 2015-11-11 A | 100% |  |  |  | 刘松 | 8h | 8h |
| 313 | 1.3.1.3.29.3 | 报告归档（增删改查） |  | 1d | 2015-11-11 A | 2015-11-11 A | 100% |  |  |  | 刘松 | 8h | 8h |
| 314 | 1.3.1.3.29.4 | 报告档案延期 | manual | 1d | 2015-11-11 A | 2015-11-11 A | 100% |  |  |  | 刘松 | 8h | 8h |
| 315 | 1.3.1.3.29.5 | 报告清档 |  | 1d | 2015-11-11 A | 2015-11-11 A | 100% |  |  |  | 刘松 | 8h | 8h |
| 316 | 1.3.1.3.30 | **系统管理开发** |  | 3d | 2015-11-11 A | 2015-11-13 | 91% | 0.27d |  |  | 刘健森 | 256h | 227.2h |
| 317 | 1.3.1.3.30.1 | **组织机构管理** |  | 1d | 2015-11-12 A | 2015-11-12 A | 100% |  |  |  | 刘健森 | 24h | 24h |
| 318 | 1.3.1.3.30.1.1 | 组织机构管理（增删改查） |  | 1d | 2015-11-12 A | 2015-11-12 A | 100% |  |  |  | 刘健森 | 8h | 8h |
| 319 | 1.3.1.3.30.1.2 | 组织机构管理（导入导出） |  | 1d | 2015-11-12 A | 2015-11-12 A | 100% |  |  | start no earlier than 2015-11-12 | 刘健森 | 8h | 8h |
| 320 | 1.3.1.3.30.2 | **角色管理** |  | 1d | 2015-11-12 A | 2015-11-12 A | 100% |  |  |  | 刘健森 | 24h | 24h |
| 321 | 1.3.1.3.30.2.1 | 角色管理（增删改查） |  | 1d | 2015-11-12 A | 2015-11-12 A | 100% |  |  |  | 刘健森 | 8h | 8h |
| 322 | 1.3.1.3.30.2.2 | 角色管理（导入导出） |  | 1d | 2015-11-12 A | 2015-11-12 A | 100% |  |  | start no earlier than 2015-11-12 | 刘健森 | 8h | 8h |
| 323 | 1.3.1.3.30.3 | **权限管理** |  | 1d | 2015-11-13 A | 2015-11-13 A | 100% |  |  |  | 刘健森 | 24h | 24h |
| 324 | 1.3.1.3.30.3.1 | 权限管理（增删改查） |  | 1d | 2015-11-13 A | 2015-11-13 A | 100% |  |  |  | 刘健森 | 8h | 8h |
| 325 | 1.3.1.3.30.3.2 | 权限管理（导入导出） |  | 1d | 2015-11-13 A | 2015-11-13 A | 100% |  |  |  | 刘健森 | 8h | 8h |
| 326 | 1.3.1.3.30.4 | **数据字典管理** |  | 1d | 2015-11-13 A | 2015-11-13 A | 100% |  |  |  | 刘健森 | 24h | 24h |
| 327 | 1.3.1.3.30.4.1 | 数据字典管理（增删改查） |  | 1d | 2015-11-13 A | 2015-11-13 A | 100% |  |  |  | 刘健森 | 8h | 8h |
| 328 | 1.3.1.3.30.4.2 | 数据字典管理（导入导出） |  | 1d | 2015-11-13 A | 2015-11-13 A | 100% |  |  |  | 刘健森 | 8h | 8h |
| 329 | 1.3.1.3.30.5 | **时效考核管理** |  | 1d | 2015-11-13 A | 2015-11-13 | 60% | 0.4d |  |  | 段佩君 | 24h | 14.4h |
| 330 | 1.3.1.3.30.5.1 | 时效考核管理（增删改查） |  | 1d | 2015-11-13 A | 2015-11-13 | 60% | 0.4d | 0d |  | 段佩君 | 8h | 4.8h |
| 331 | 1.3.1.3.30.5.2 | 时效考核管理（导入导出） |  | 1d | 2015-11-13 A | 2015-11-13 | 60% | 0.4d | 0d |  | 段佩君 | 8h | 4.8h |
| 332 | 1.3.1.3.30.6 | **系统菜单管理** |  | 3d | 2015-11-11 A | 2015-11-13 A | 100% |  |  |  | 张益 | 48h | 48h |
| 333 | 1.3.1.3.30.6.1 | 系统菜单（增删改查） |  | 2d | 2015-11-11 A | 2015-11-12 A | 100% |  |  | finish no earlier than 2015-11-12 | 张益 | 16h | 16h |
| 334 | 1.3.1.3.30.6.2 | 系统菜单（导入导出） |  | 1d | 2015-11-13 A | 2015-11-13 A | 100% |  |  | start no earlier than 2015-11-13 | 张益 | 8h | 8h |

| ID | WBS | Task | Type | Duration | Start | Finish | Predecessors | Complete | Remaining | Total slack | Free slack | Constraint | Resources | Work | Actual work |
| --- | --- | --- | --- | --- | --- | --- | --- | --- | --- | --- | --- | --- | --- | --- | --- |
| 335 | 1.3.1.3.30.7 | **日志管理** |  | 1d | 2015-11-13 A | 2015-11-13 A |  | 100% |  |  |  |  | 刘健森 | 24h | 24h |
| 336 | 1.3.1.3.30.7.1 | 日志管理（删查） |  | 1d | 2015-11-13 A | 2015-11-13 A |  | 100% |  |  |  |  | 刘健森 | 8h | 8h |
| 337 | 1.3.1.3.30.7.2 | 日志管理（导出） |  | 1d | 2015-11-13 A | 2015-11-13 A |  | 100% |  |  |  |  | 刘健森 | 8h | 8h |
| 338 | 1.3.1.3.30.8 | **个人资料** |  | 1d | 2015-11-12 A | 2015-11-12 A |  | 100% |  |  |  |  | 刘健森 | 16h | 16h |
| 339 | 1.3.1.3.30.8.1 | 资料修改 |  | 1d | 2015-11-12 A | 2015-11-12 A |  | 100% |  |  |  |  | 刘健森 | 8h | 8h |
| 340 | 1.3.1.3.30.9 | 天气预报 |  | 1d | 2015-11-11 | 2015-11-11 |  |  |  | 2d |  |  |  |  |  |
| 341 | 1.3.1.3.30.10 | 系统登录 |  | 2d | 2015-11-11 A | 2015-11-12 A |  | 100% |  |  |  |  | 刘健森 | 16h | 16h |
| 342 | 1.3.1.3.30.11 | 修改密码 |  | 1d | 2015-11-13 A | 2015-11-13 A |  | 100% |  |  |  | start no earlier than 2015-11-13 | 刘健森 | 8h | 8h |
| 343 | 1.3.1.3.31 | **流程管理开发** |  | 12d | 2015-10-08 A | 2015-10-23 |  | 70% | 3.63d |  |  |  | 张益 | 248h | 149h |
| 344 | 1.3.1.3.31.1 | 流程设置 |  | 7d | 2015-10-08 A | 2015-10-16 |  | 77% | 1.62d | 119d |  | finish no earlier than 2015-10-16 | 张益 | 56h | 43h |
| 345 | 1.3.1.3.31.2 | 流程信息（增删改查） |  | 5d | 2015-10-09 A | 2015-10-15 |  | 88% | 0.62d | 120d |  | finish no earlier than 2015-10-15 | 张益 | 40h | 35h |
| 346 | 1.3.1.3.31.3 | 流程信息（导入导出） |  | 2d | 2015-10-15 | 2015-10-16 |  |  |  | 119d |  | finish no earlier than 2015-10-16 | 张益 | 16h |  |
| 347 | 1.3.1.3.31.4 | 流程记录 | manual | 5d | 2015-10-19 A | 2015-10-23 |  | 70% | 1.5d |  |  |  | 张益 | 40h | 28h |
| 348 | 1.3.1.3.32 | 评审代码 |  | 1d | 2015-11-18 | 2015-11-18 |  |  |  | 95d | 1d | start no earlier than 2015-11-18 |  |  |  |
| 349 | 1.3.1.3.33 | 系统单元测试 |  | 1d | 2015-11-20 | 2015-11-20 | 348 |  |  | 94d |  | finish no earlier than 2015-11-20 |  |  |  |
| 350 | 1.3.1.4 | 综合业务管理系统培训 | manual | 20d | 2015-12-18 | 2016-01-14 |  |  |  |  |  |  |  |  |  |
| 351 | 1.3.1.5 | **质检门户功能开发** |  | 20d | 2016-01-11 | 2016-02-05 |  |  |  |  |  |  |  |  |  |
| 352 | 1.3.1.5.1 | 系统登录 |  | 1d | 2016-01-11 | 2016-01-11 |  |  |  | 19d |  |  |  |  |  |
| 353 | 1.3.1.5.2 | **机构概况** |  | 3d | 2016-01-12 | 2016-01-14 |  |  |  |  |  |  |  |  |  |
| 354 | 1.3.1.5.2.1 | 单位简介 |  | 1d | 2016-01-12 | 2016-01-12 |  |  |  | 2d |  |  |  |  |  |
| 355 | 1.3.1.5.2.2 | 组织架构 |  | 1d | 2016-01-12 | 2016-01-12 |  |  |  | 2d |  |  |  |  |  |
| 356 | 1.3.1.5.2.3 | 机构领导 |  | 1d | 2016-01-13 | 2016-01-13 |  |  |  | 56d |  | start no earlier than 2016-01-13 |  |  |  |
| 357 | 1.3.1.5.2.4 | 发展历程 |  | 1d | 2016-01-13 | 2016-01-13 |  |  |  | 56d |  | start no earlier than 2016-01-13 |  |  |  |
| 358 | 1.3.1.5.3 | 通知公告 |  | 1d | 2016-01-14 | 2016-01-14 |  |  |  | 55d |  | start no earlier than 2016-01-14 |  |  |  |
| 359 | 1.3.1.5.4 | 政策法规 |  | 1d | 2016-01-14 | 2016-01-14 |  |  |  | 55d |  | start no earlier than 2016-01-14 |  |  |  |

| ID | WBS | Task | Type | Duration | Start | Finish | Predecessors | Complete | Remaining | Total slack | Free slack | Constraint | Resources | Work | Actual work |
| --- | --- | --- | --- | --- | --- | --- | --- | --- | --- | --- | --- | --- | --- | --- | --- |
| 360 | 1.3.1.5.5 | **网上检验服务开发** |  | 7d | 2016-01-15 | 2016-01-25 |  |  |  |  |  |  |  |  |  |
| 361 | 1.3.1.5.5.1 | 样品类别查询 |  | 1d | 2016-01-15 | 2016-01-15 |  |  |  | 6d |  |  |  |  |  |
| 362 | 1.3.1.5.5.2 | 样品登记（增删改） |  | 4d | 2016-01-15 | 2016-01-20 |  |  |  | 2d | 0d | start no earlier than 2016-01-15 |  |  |  |
| 363 | 1.3.1.5.5.3 | 检验进度查询 |  | 1d | 2016-01-21 | 2016-01-21 | 362 |  |  | 2d | 0d |  |  |  |  |
| 364 | 1.3.1.5.5.4 | 报告查询（查询、下载） |  | 2d | 2016-01-22 | 2016-01-25 | 363 |  |  | 48d |  | start no earlier than 2016-01-15 |  |  |  |
| 365 | 1.3.1.5.6 | **检验服务开发** |  | 1d | 2016-01-26 | 2016-01-26 |  |  |  |  |  |  |  |  |  |
| 366 | 1.3.1.5.6.1 | 检验标准（查询、下载） |  | 1d | 2016-01-26 | 2016-01-26 |  |  |  | 0d |  |  |  |  |  |
| 367 | 1.3.1.5.7 | **客户专区** |  | 3d | 2016-01-27 | 2016-01-29 |  |  |  |  |  |  |  |  |  |
| 368 | 1.3.1.5.7.1 | 客户留言（增删改） |  | 1d | 2016-01-27 | 2016-01-27 |  |  |  | 0d |  |  |  |  |  |
| 369 | 1.3.1.5.7.2 | 客户留言（回复） |  | 1d | 2016-01-27 | 2016-01-27 |  |  |  | 1d | 0d |  |  |  |  |
| 370 | 1.3.1.5.7.3 | 进度查询 |  | 1d | 2016-01-28 | 2016-01-28 | 369 |  |  | 1d |  |  |  |  |  |
| 371 | 1.3.1.5.7.4 | 常用下载 |  | 1d | 2016-01-28 | 2016-01-28 | 368 |  |  | 0d |  |  |  |  |  |
| 372 | 1.3.1.5.7.5 | 网上服务（快捷方式） |  | 1d | 2016-01-29 | 2016-01-29 | 371 |  |  | 0d |  |  |  |  |  |
| 373 | 1.3.1.5.8 | **投诉与建议** |  | 2d | 2016-01-29 | 2016-02-01 |  |  |  |  |  |  |  |  |  |
| 374 | 1.3.1.5.8.1 | 投诉与建议（增删改） |  | 2d | 2016-01-29 | 2016-02-01 |  |  |  | 43d |  | start no earlier than 2016-01-29 |  |  |  |
| 375 | 1.3.1.5.9 | **样品检验结果公示** |  | 2d | 2016-02-02 | 2016-02-03 |  |  |  |  |  |  |  |  |  |
| 376 | 1.3.1.5.9.1 | 检验结果（查询、查看详情） |  | 2d | 2016-02-02 | 2016-02-03 |  |  |  | 41d |  | start no earlier than 2016-02-02 |  |  |  |
| 377 | 1.3.1.5.10 | **友情链接** |  | 1d | 2016-02-02 | 2016-02-02 |  |  |  |  |  |  |  |  |  |
| 378 | 1.3.1.5.10.1 | 友情链接（增删改） |  | 1d | 2016-02-02 | 2016-02-02 |  |  |  | 0d |  |  |  |  |  |
| 379 | 1.3.1.5.11 | 评审代码 |  | 1d | 2016-02-03 | 2016-02-03 |  |  |  | 0d |  | start no earlier than 2016-02-03 |  |  |  |
| 380 | 1.3.1.5.12 | 系统单元测试 |  | 2d | 2016-02-04 | 2016-02-05 | 379 |  |  | 0d |  |  |  |  |  |
| 381 | 1.3.1.6 | 质检门户培训 | manual | 4d | 2016-01-11 | 2016-01-14 |  |  |  |  |  |  |  |  |  |
| 382 | 1.3.1.7 | **微信平台开发** |  | 25d | 2015-12-07 A | 2016-01-08 |  | 41% | 14.88d |  |  |  | 刘健森; 刘松; 潘韦驰; 张益 | 1160h | 281.6h |
| 383 | 1.3.1.7.1 | **微信后台管理功能开发** |  | 5d | 2015-12-07 A | 2015-12-11 A |  | 100% |  |  |  |  | 张益; 刘健森 | 224h | 224h |
| 384 | 1.3.1.7.1.1 | 菜单管理 |  | 1d | 2015-12-07 A | 2015-12-07 A |  | 100% |  |  |  |  | 刘健森; 张益 | 16h | 16h |
| 385 | 1.3.1.7.1.2 | 素材管理 |  | 1d | 2015-12-07 A | 2015-12-07 A |  | 100% |  |  |  |  | 刘健森; 张益 | 16h | 16h |
| 386 | 1.3.1.7.1.3 | 群发管理 |  | 1d | 2015-12-08 A | 2015-12-08 A |  | 100% |  |  |  | start no earlier than 2015-12-08 | 刘健森; 张益 | 16h | 16h |
| 387 | 1.3.1.7.1.4 | 用户管理 |  | 1d | 2015-12-08 A | 2015-12-08 A |  | 100% |  |  |  | start no earlier than 2015-12-08 | 刘健森; 张益 | 16h | 16h |
| 388 | 1.3.1.7.1.5 | 用户分组管理 |  | 1d | 2015-12-09 A | 2015-12-09 A |  | 100% |  |  |  | start no earlier than 2015-12-09 | 刘健森; 张益 | 16h | 16h |
| 389 | 1.3.1.7.1.6 | 缓存管理 |  | 1d | 2015-12-09 A | 2015-12-09 A |  | 100% |  |  |  | start no earlier than 2015-12-09 | 刘健森; 张益 | 16h | 16h |
| 390 | 1.3.1.7.1.7 | 帐号绑定 |  | 1d | 2015-12-10 A | 2015-12-10 A |  | 100% |  |  |  | start no earlier than 2015-12-10 | 刘健森; 张益 | 16h | 16h |
| 391 | 1.3.1.7.1.8 | 系统管理 |  | 2d | 2015-12-10 A | 2015-12-11 A |  | 100% |  |  |  | finish no earlier than 2015-12-11 | 刘健森; 张益 | 32h | 32h |

| ID | WBS | Task | Duration | Start | Finish | Complete | Remaining | Total slack | Constraint | Resources | Work | Actual work |
| --- | --- | --- | --- | --- | --- | --- | --- | --- | --- | --- | --- | --- |
| 392 | 1.3.1.7.2 | **微主页开发** | 4d | 2015-12-14 A | 2015-12-17 | 80% | 0.8d |  |  | 刘松; 潘韦驰 | 136h | 57.6h |
| 393 | 1.3.1.7.2.1 | 简介 | 1d | 2015-12-14 A | 2015-12-14 A | 100% |  |  |  | 潘韦驰 | 8h | 8h |
| 394 | 1.3.1.7.2.2 | 组织架构 | 1d | 2015-12-14 A | 2015-12-14 A | 100% |  |  |  | 刘松 | 8h | 8h |
| 395 | 1.3.1.7.2.3 | 发展历程 | 1d | 2015-12-15 A | 2015-12-15 A | 100% |  |  | start no earlier than 2015-12-15 | 潘韦驰 | 8h | 8h |
| 396 | 1.3.1.7.2.4 | 质检新闻 | 1d | 2015-12-15 A | 2015-12-15 A | 100% |  |  | start no earlier than 2015-12-15 | 刘松 | 8h | 8h |
| 397 | 1.3.1.7.2.5 | 办事流程 | 1d | 2015-12-16 A | 2015-12-16 | 90% | 0.1d | 76d | start no earlier than 2015-12-16 | 刘松 | 8h | 7.2h |
| 398 | 1.3.1.7.2.6 | 检验标准 | 1d | 2015-12-16 A | 2015-12-16 | 20% | 0.8d | 76d | start no earlier than 2015-12-16 | 刘松 | 8h | 1.6h |
| 399 | 1.3.1.7.2.7 | 质量馆 | 1d | 2015-12-17 A | 2015-12-17 | 90% | 0.1d | 75d | start no earlier than 2015-12-17 | 潘韦驰 | 8h | 7.2h |
| 400 | 1.3.1.7.2.8 | 品牌馆 | 1d | 2015-12-17 A | 2015-12-17 | 90% | 0.1d | 75d | start no earlier than 2015-12-17 | 潘韦驰 | 8h | 7.2h |
| 401 | 1.3.1.7.2.9 | 联系我们 | 1d | 2015-12-17 A | 2015-12-17 | 30% | 0.7d | 75d | start no earlier than 2015-12-17 | 潘韦驰 | 8h | 2.4h |
| 402 | 1.3.1.7.3 | **微服务开发** | 6d | 2015-12-18 | 2015-12-25 |  |  |  |  |  |  |  |
| 403 | 1.3.1.7.3.1 | 扫一扫 | 2d | 2015-12-18 | 2015-12-21 |  |  | 73d | start no earlier than 2015-12-18 |  |  |  |
| 404 | 1.3.1.7.3.2 | 设备信息（查询） | 1d | 2015-12-21 | 2015-12-21 |  |  | 73d | start no earlier than 2015-12-21 |  |  |  |
| 405 | 1.3.1.7.3.3 | 设备信息（查看详情） | 1d | 2015-12-21 | 2015-12-21 |  |  | 73d | start no earlier than 2015-12-21 |  |  |  |
| 406 | 1.3.1.7.3.4 | 报告信息（查询） | 1d | 2015-12-22 | 2015-12-22 |  |  | 72d | start no earlier than 2015-12-22 |  |  |  |
| 407 | 1.3.1.7.3.5 | 报告信息（查看详情） | 1d | 2015-12-22 | 2015-12-22 |  |  | 72d | start no earlier than 2015-12-22 |  |  |  |
| 408 | 1.3.1.7.3.6 | 样品信息（查询） | 1d | 2015-12-23 | 2015-12-23 |  |  | 71d | start no earlier than 2015-12-23 |  |  |  |
| 409 | 1.3.1.7.3.7 | 样品信息（查看详情） | 1d | 2015-12-23 | 2015-12-23 |  |  | 71d | start no earlier than 2015-12-23 |  |  |  |
| 410 | 1.3.1.7.3.8 | 数据统计（查询） | 2d | 2015-12-24 | 2015-12-25 |  |  | 69d | finish no earlier than 2015-12-25 |  |  |  |
| 411 | 1.3.1.7.3.9 | 数据统计（查看详情） | 1d | 2015-12-25 | 2015-12-25 |  |  | 69d | start no earlier than 2015-12-25 |  |  |  |
| 412 | 1.3.1.7.4 | **微管理开发** | 4d | 2015-12-28 | 2015-12-31 |  |  |  |  |  |  |  |
| 413 | 1.3.1.7.4.1 | 我的任务（查询） | 1d | 2015-12-28 | 2015-12-28 |  |  | 3d |  |  |  |  |
| 414 | 1.3.1.7.4.2 | 我的任务（查看详情） | 1d | 2015-12-28 | 2015-12-28 |  |  | 3d |  |  |  |  |
| 415 | 1.3.1.7.4.3 | **我的申请** | 2d | 2015-12-29 | 2015-12-30 |  |  |  |  |  |  |  |
| 416 | 1.3.1.7.4.3.1 | 我的申请（申请） | 1d | 2015-12-29 | 2015-12-29 |  |  | 1d |  |  |  |  |
| 417 | 1.3.1.7.4.3.2 | 我的申请（查询） | 1d | 2015-12-29 | 2015-12-29 |  |  | 1d |  |  |  |  |
| 418 | 1.3.1.7.4.3.3 | 我的申请（审批） | 1d | 2015-12-30 | 2015-12-30 |  |  | 66d | start no earlier than 2015-12-30 |  |  |  |
| 419 | 1.3.1.7.4.3.4 | 我的申请（查看详情） | 1d | 2015-12-30 | 2015-12-30 |  |  | 66d | start no earlier than 2015-12-30 |  |  |  |

| ID | WBS | Task | Type | Duration | Start | Finish | Predecessors | Total slack | Free slack | Constraint |
| --- | --- | --- | --- | --- | --- | --- | --- | --- | --- | --- |
| 420 | 1.3.1.7.4.4 | **工作汇报** |  | 1d | 2015-12-31 | 2015-12-31 |  |  |  |  |
| 421 | 1.3.1.7.4.4.1 | 工作汇报编制、发送 |  | 1d | 2015-12-31 | 2015-12-31 |  | 0d |  |  |
| 422 | 1.3.1.7.4.4.2 | 收到的汇报查阅 | manual | 1d | 2015-12-31 | 2015-12-31 |  |  |  |  |
| 423 | 1.3.1.7.5 | 评审代码 |  | 1d | 2016-01-01 | 2016-01-01 |  | 64d |  | start no earlier than 2016-01-01 |
| 424 | 1.3.1.7.6 | 系统单元测试 |  | 2d | 2016-01-04 | 2016-01-05 |  | 62d |  | start no earlier than 2016-01-02 |
| 425 | 1.3.1.8 | 微信培训 | manual | 3d | 2016-01-06 | 2016-01-08 |  |  |  |  |
| 426 | 1.3.1.9 | 扫码枪接口 |  | 7d | 2016-02-08 | 2016-02-16 |  | 32d |  | start no earlier than 2016-02-08 |
| 427 | 1.3.1.10 | 二维码打印机接口 |  | 7d | 2016-02-08 | 2016-02-16 |  | 32d |  | start no earlier than 2016-02-08 |
| 428 | 1.3.1.11 | 数据接口对接（新闻等） |  | 7d | 2016-02-08 | 2016-02-16 |  | 32d |  | finish no earlier than 2016-02-16 |
| 429 | 1.3.2 | 评审代码 |  | 1d | 2016-02-17 | 2016-02-17 |  | 31d |  | finish no earlier than 2016-02-17 |
| 430 | 1.3.3 | 系统整体测试 |  | 2d | 2016-02-18 | 2016-02-19 |  | 29d |  | finish no earlier than 2016-02-19 |
| 431 | 1.3.4 | 修改代码 |  | 6d | 2016-02-22 | 2016-02-29 |  | 23d |  | finish no earlier than 2016-02-29 |
| 432 | 1.4 | **测试阶段** |  | 6d | 2016-03-01 | 2016-03-08 |  |  |  |  |
| 433 | 1.4.1 | 执行测试 |  | 3d | 2016-03-01 | 2016-03-03 |  | 20d |  | finish no earlier than 2016-03-03 |
| 434 | 1.4.2 | 修改BUG |  | 3d | 2016-03-04 | 2016-03-08 |  | 17d |  | finish no earlier than 2016-03-08 |
| 435 | 1.5 | **实施阶段** |  | 8d | 2016-02-29 | 2016-03-09 |  |  |  |  |
| 436 | 1.5.1 | 编写安装部署文档 |  | 1d | 2016-02-29 | 2016-02-29 |  | 7d | 0d |  |
| 437 | 1.5.2 | 编写用户手册 |  | 3d | 2016-03-01 | 2016-03-03 | 436 | 16d | 0d | start no earlier than 2015-12-02 |
| 438 | 1.5.3 | 系统培训 |  | 4d | 2016-03-04 | 2016-03-09 | 437 | 16d |  | finish no earlier than 2015-12-10 |
| 439 | 1.6 | 系统试运行 |  | 23d | 2015-12-01 | 2015-12-31 |  | 65d |  | finish no earlier than 2015-12-31 |
| 440 | 1.7 | 系统正式上线 |  | 1d | 2016-03-10 | 2016-03-10 | 439 | 10d | 0d | start no earlier than 2016-03-10 |
| 441 | 1.8 | 项目验收 |  | 5d | 2016-03-11 | 2016-03-17 | 440 | 10d |  |  |
| 442 | 1.9 | **结项活动** |  | 5d | 2016-03-18 | 2016-03-24 |  |  |  |  |
| 443 | 1.9.1 | 项目分析 |  | 2d | 2016-03-18 | 2016-03-21 |  | 2d | 0d | finish no earlier than 2016-03-21 |
| 444 | 1.9.2 | 项目总结会 |  | 1d | 2016-03-22 | 2016-03-22 | 443 | 2d | 0d |  |
| 445 | 1.9.3 | 关闭项目并转为技术支持 |  | 2d | 2016-03-23 | 2016-03-24 | 444 | 5d |  | start no earlier than 2016-01-07 |
