# 安徽省质检院综合业务系统总体计划9-11

Schedule from MS Project, 2015-09-11 to 2016-03-31, A marks actual dates.
china

## Calendars

- 标准: Mon-Fri 08:00-12:00, 13:00-17:00; Sat-Sun off. Exceptions (off unless hours are given): 2015-09-19 08:00-12:00, 13:00-17:00.

## Resources

| Resource |
| --- |
| 何书查 |
| 蒋永正 |
| 项目组 |
| 刘健森 |
| 张益 |
| 王喆之 |
| 段佩君 |
| 李向林 |
| 鲁光 |
| 偶峰 |
| 潘韦驰 |
| 王勇 |
| 马彪 |
| 梁凯迪 |
| 刘松 |

## Schedule

| ID | WBS | Task | Duration | Start | Finish | Predecessors | Complete | Remaining | Actual start | Total slack | Free slack | Constraint | Resources | Work | Actual work |
| --- | --- | --- | --- | --- | --- | --- | --- | --- | --- | --- | --- | --- | --- | --- | --- |
| 1 | 1 | **安徽省质检院综合业务系统总体计划** | 146d | 2015-09-11 A | 2016-03-31 |  | 64% | 52.23d |  |  |  |  | 蒋永正 | 19713.6h | 8679.33h |
| 2 | 1.1 | **需求调研** | 14d | 2015-09-14 A | 2015-09-30 |  | 95% | 0.68d |  |  |  |  | 蒋永正 | 472h | 472h |
| 3 | 1.1.1 | 流程调研 | 3d | 2015-09-14 A | 2015-09-16 |  | 90% | 0.3d |  | 11d |  |  | 蒋永正 | 24h | 24h |
| 4 | 1.1.2 | 功能细节调研 | 3d | 2015-09-14 A | 2015-09-16 |  | 60% | 1.2d |  | 11d |  |  | 蒋永正 | 24h | 24h |
| 5 | 1.1.3 | **基础信息资料准备** | 14d | 2015-09-14 A | 2015-09-30 A |  | 100% |  |  |  |  |  | 蒋永正 | 312h | 312h |
| 6 | 1.1.3.1 | 角色设置信息 | 2d | 2015-09-29 A | 2015-09-30 A |  | 100% |  |  |  |  | finish no earlier than 2015-09-30 | 蒋永正 | 16h | 16h |
| 7 | 1.1.3.2 | 权限设置信息 | 2d | 2015-09-29 A | 2015-09-30 A |  | 100% |  |  |  |  | finish no earlier than 2015-09-30 | 蒋永正 | 16h | 16h |
| 8 | 1.1.3.3 | 字典设置信息 | 3d | 2015-09-28 A | 2015-09-30 A |  | 100% |  |  |  |  | finish no earlier than 2015-09-30 | 蒋永正 | 24h | 24h |
| 9 | 1.1.3.4 | 人员基本信息 | 1d | 2015-09-29 A | 2015-09-29 A |  | 100% |  |  |  |  | start no earlier than 2015-09-29 | 蒋永正 | 8h | 8h |
| 10 | 1.1.3.5 | 组织架构信息 | 1d | 2015-09-28 A | 2015-09-28 A |  | 100% |  |  |  |  | start no earlier than 2015-09-28 | 蒋永正 | 8h | 8h |
| 11 | 1.1.3.6 | 检验标准信息 | 9d | 2015-09-16 A | 2015-09-25 A |  | 100% |  |  |  |  | finish no earlier than 2015-09-25 | 蒋永正 | 72h | 72h |
| 12 | 1.1.3.7 | 检验收费标准信息 | 3d | 2015-09-22 A | 2015-09-24 A |  | 100% |  |  |  |  | finish no earlier than 2015-09-24 | 蒋永正 | 24h | 24h |
| 13 | 1.1.3.8 | 设备信息 | 2d | 2015-09-25 A | 2015-09-28 A |  | 100% |  |  |  |  | finish no earlier than 2015-09-28 | 蒋永正 | 16h | 16h |
| 14 | 1.1.3.9 | 客户信息 | 1d | 2015-09-29 A | 2015-09-29 A |  | 100% |  |  |  |  | start no earlier than 2015-09-29 | 蒋永正 | 8h | 8h |
| 15 | 1.1.3.10 | 认证产品信息 | 1d | 2015-09-30 A | 2015-09-30 A |  | 100% |  |  |  |  | start no earlier than 2015-09-30 | 蒋永正 | 8h | 8h |
| 16 | 1.2 | **硬件采购** | 25d | 2015-09-21 A | 2015-10-23 |  | 91% | 2.32d |  |  |  |  | 项目组 | 520h | 392.06h |
| 17 | 1.2.1 | 硬件采购 | 15d | 2015-09-21 A | 2015-10-09 A |  | 100% |  |  |  |  |  | 项目组 | 120h | 120h |
| 18 | 1.2.2 | **硬件上架** | 10d | 2015-10-12 A | 2015-10-23 A |  | 100% |  |  |  |  |  | 项目组 | 104h | 104h |
| 19 | 1.2.2.1 | 系统安装 | 3d | 2015-10-19 A | 2015-10-21 A |  | 100% |  |  |  |  | finish no earlier than 2015-10-21 | 项目组 | 24h | 24h |
| 20 | 1.2.3 | **测试环境搭建** | 3d | 2015-10-21 A | 2015-10-23 |  | 35% | 1.95d |  |  |  |  | 项目组 | 96h | 25.2h |
| 21 | 1.2.3.1 | 虚拟服务器安装 | 2d | 2015-10-21 A | 2015-10-22 |  | 35% | 1.3d |  | 0.35d | 0d | finish no earlier than 2015-10-22 | 蒋永正; 李向林; 鲁光 | 48h | 16.8h |
| 22 | 1.2.3.2 | Oracle数据库安装（安装/备份设置） | 1d | 2015-10-23 A | 2015-10-23 | 21 | 35% | 0.65d |  | 114d |  | finish no earlier than 2015-10-23 | 蒋永正; 李向林; 鲁光 | 24h | 8.4h |
| 23 | 1.3 | **系统开发** | 122d | 2015-09-14 | 2016-02-29 |  | 68% | 39.21d | 2015-09-11 |  |  |  |  | 17553.6h | 7452.2h |
| 24 | 1.3.1 | **功能实现阶段** | 122d | 2015-09-14 | 2016-02-29 |  | 69% | 37.45d | 2015-09-11 |  |  |  |  | 17553.6h | 7452.2h |
| 25 | 1.3.1.1 | **功能实现/编码第一阶段** | 14d | 2015-09-14 A | 2015-09-30 |  | 53% | 6.52d |  |  |  |  |  | 416h | 124h |
| 26 | 1.3.1.1.1 | **框架搭建,设计** | 14d | 2015-09-14 A | 2015-09-30 |  | 53% | 6.52d |  |  |  |  | 刘健森 | 416h | 124h |
| 27 | 1.3.1.1.1.1 | 数据库设计 | 5d | 2015-09-14 A | 2015-09-18 A |  | 100% |  |  |  |  | finish no earlier than 2015-09-18 | 蒋永正 | 40h | 40h |
| 28 | 1.3.1.1.1.2 | 框架搭建 | 9d | 2015-09-14 A | 2015-09-23 A |  | 100% |  |  |  |  | finish no earlier than 2015-09-23 | 刘健森 | 72h | 72h |

| ID | WBS | Task | Duration | Start | Finish | Complete | Remaining | Total slack | Constraint | Resources | Work | Actual work |
| --- | --- | --- | --- | --- | --- | --- | --- | --- | --- | --- | --- | --- |
| 29 | 1.3.1.1.1.3 | **系统设计** | 9d | 2015-09-14 A | 2015-09-23 | 10% | 8.1d |  |  | 刘健森 | 192h | 12h |
| 30 | 1.3.1.1.1.3.1 | 综合业务管理系统设计 | 5d | 2015-09-14 A | 2015-09-18 | 30% | 3.5d | 140d | finish no earlier than 2015-09-18 | 刘健森 | 40h | 12h |
| 31 | 1.3.1.1.1.3.2 | 微信平台设计 | 5d | 2015-09-16 | 2015-09-21 |  |  | 138d | finish no earlier than 2015-09-21 | 刘健森 | 40h |  |
| 32 | 1.3.1.1.1.3.3 | 质检门户设计 | 5d | 2015-09-18 | 2015-09-23 |  |  | 136d | finish no earlier than 2015-09-23 | 刘健森 | 40h |  |
| 33 | 1.3.1.2 | **项目界面设计** | 52d | 2015-09-14 A | 2015-11-23 | 76% | 12.48d |  |  | 段佩君; 刘松; 王喆之; 刘健森 | 5392h | 2078.95h |
| 34 | 1.3.1.2.1 | **综合业务管理系统界面设计** | 14d | 2015-09-14 A | 2015-09-30 | 76% | 3.36d |  |  | 段佩君; 刘松; 王喆之; 刘健森 | 1248h | 332.8h |
| 35 | 1.3.1.2.1.1 | **系统主页界面设计** | 2d | 2015-09-14 A | 2015-09-15 A | 100% |  |  |  | 刘健森; 王喆之 | 48h | 48h |
| 36 | 1.3.1.2.1.1.1 | 系统主页设置界面设计 | 1d | 2015-09-15 A | 2015-09-15 A | 100% |  |  | start no earlier than 2015-09-15 | 刘健森; 王喆之 | 16h | 16h |
| 37 | 1.3.1.2.1.2 | **系统八大功能界面设计** | 11d | 2015-09-14 A | 2015-09-25 | 72% | 3.11d |  |  | 段佩君; 刘松; 梁凯迪; 王勇 | 704h | 236.8h |
| 38 | 1.3.1.2.1.2.1 | 任务管理界面 | 2d | 2015-09-14 A | 2015-09-15 | 65% | 0.7d | 143d | start no earlier than 2015-09-14 | 段佩君; 梁凯迪 | 32h | 20.8h |
| 39 | 1.3.1.2.1.2.2 | 业务中心界面 | 2d | 2015-09-16 A | 2015-09-17 | 70% | 0.6d | 141d | finish no earlier than 2015-09-17 | 段佩君; 梁凯迪 | 32h | 22.4h |
| 40 | 1.3.1.2.1.2.3 | 辅助业务界面 | 2d | 2015-09-17 A | 2015-09-18 | 65% | 0.7d | 140d | finish no earlier than 2015-09-18 | 段佩君; 刘松 | 32h | 20.8h |
| 41 | 1.3.1.2.1.2.4 | 客户管理界面 | 2d | 2015-09-21 A | 2015-09-22 A | 100% |  |  | finish no earlier than 2015-09-22 | 段佩君; 王勇 | 32h | 32h |
| 42 | 1.3.1.2.1.2.5 | 科研管理界面 | 2d | 2015-09-22 A | 2015-09-23 | 80% | 0.4d | 136d | finish no earlier than 2015-09-23 | 段佩君; 王勇 | 32h | 25.6h |
| 43 | 1.3.1.2.1.2.6 | 费用管理界面 | 2d | 2015-09-23 A | 2015-09-24 A | 100% |  |  | finish no earlier than 2015-09-24 | 段佩君; 刘松 | 32h | 32h |
| 44 | 1.3.1.2.1.2.7 | 数据统计界面 | 3d | 2015-09-23 A | 2015-09-25 | 40% | 1.8d | 134d | finish no earlier than 2015-09-25 | 段佩君; 梁凯迪; 刘松; 王勇 | 96h | 38.4h |
| 45 | 1.3.1.2.1.2.8 | 系统管理界面 | 2d | 2015-09-24 A | 2015-09-25 | 70% | 0.6d | 134d | finish no earlier than 2015-09-25 | 段佩君; 梁凯迪; 刘松; 王勇 | 64h | 44.8h |
| 46 | 1.3.1.2.1.3 | 评审代码 | 1d | 2015-09-14 A | 2015-09-14 A | 100% |  |  |  | 何书查; 蒋永正 | 16h | 16h |
| 47 | 1.3.1.2.1.4 | 单元测试 | 1d | 2015-09-14 A | 2015-09-14 A | 100% |  |  |  | 蒋永正; 梁凯迪; 刘松; 王勇 | 32h | 32h |
| 48 | 1.3.1.2.2 | **微信平台界面设计** | 15d | 2015-10-12 A | 2015-10-30 A | 100% |  |  |  | 段佩君; 刘松; 王喆之; 潘韦驰 | 1392h | 1392h |
| 49 | 1.3.1.2.2.1 | 欢迎页面界面设计 | 1d | 2015-10-12 A | 2015-10-12 A | 100% |  |  |  | 段佩君; 刘松; 王喆之; 潘韦驰 | 32h | 32h |
| 50 | 1.3.1.2.2.2 | **微主页界面设计** | 4d | 2015-10-13 A | 2015-10-16 A | 100% |  |  |  | 段佩君; 刘松; 王喆之; 潘韦驰 | 288h | 288h |
| 51 | 1.3.1.2.2.2.1 | 简介 | 1d | 2015-10-13 A | 2015-10-13 A | 100% |  |  |  | 刘松; 潘韦驰 | 16h | 16h |
| 52 | 1.3.1.2.2.2.2 | 组织架构 | 1d | 2015-10-13 A | 2015-10-13 A | 100% |  |  |  | 刘松; 潘韦驰 | 16h | 16h |
| 53 | 1.3.1.2.2.2.3 | 发展历程 | 1d | 2015-10-13 A | 2015-10-13 A | 100% |  |  |  | 刘松; 潘韦驰 | 16h | 16h |
| 54 | 1.3.1.2.2.2.4 | 质检新闻 | 2d | 2015-10-13 A | 2015-10-14 A | 100% |  |  |  | 潘韦驰; 刘松 | 32h | 32h |
| 55 | 1.3.1.2.2.2.5 | 办事流程 | 1d | 2015-10-13 A | 2015-10-13 A | 100% |  |  |  | 刘松; 潘韦驰 | 16h | 16h |
| 56 | 1.3.1.2.2.2.6 | 检验标准 | 1d | 2015-10-13 A | 2015-10-13 A | 100% |  |  |  | 刘松; 潘韦驰 | 16h | 16h |
| 57 | 1.3.1.2.2.2.7 | 质量馆 | 1d | 2015-10-13 A | 2015-10-13 A | 100% |  |  |  | 刘松; 潘韦驰 | 16h | 16h |
| 58 | 1.3.1.2.2.2.8 | 品牌馆 | 1d | 2015-10-13 A | 2015-10-13 A | 100% |  |  |  | 刘松; 潘韦驰 | 16h | 16h |
| 59 | 1.3.1.2.2.2.9 | 联系我们 | 1d | 2015-10-16 A | 2015-10-16 A | 100% |  |  | start no earlier than 2015-10-16 | 刘松; 潘韦驰 | 16h | 16h |

| ID | WBS | Task | Duration | Start | Finish | Complete | Remaining | Total slack | Constraint | Resources | Work | Actual work |
| --- | --- | --- | --- | --- | --- | --- | --- | --- | --- | --- | --- | --- |
| 60 | 1.3.1.2.2.3 | **微服务界面设计** | 5d | 2015-10-19 A | 2015-10-23 A | 100% |  |  |  | 段佩君; 刘松; 王喆之; 潘韦驰 | 248h | 248h |
| 61 | 1.3.1.2.2.3.1 | 扫一扫界面设计 | 1d | 2015-10-19 A | 2015-10-19 A | 100% |  |  |  | 刘松; 潘韦驰 | 16h | 16h |
| 62 | 1.3.1.2.2.3.2 | 样品信息 | 1d | 2015-10-19 A | 2015-10-19 A | 100% |  |  |  | 刘松; 潘韦驰 | 16h | 16h |
| 63 | 1.3.1.2.2.3.3 | 设备信息 | 1d | 2015-10-19 A | 2015-10-19 A | 100% |  |  |  | 刘松; 潘韦驰 | 16h | 16h |
| 64 | 1.3.1.2.2.3.4 | 报告信息 | 1d | 2015-10-19 A | 2015-10-19 A | 100% |  |  |  | 刘松; 潘韦驰 | 16h | 16h |
| 65 | 1.3.1.2.2.3.5 | 数据统计 | 3d | 2015-10-21 A | 2015-10-23 A | 100% |  |  | finish no earlier than 2015-10-23 | 项目组 | 24h | 24h |
| 66 | 1.3.1.2.2.4 | **微管理界面设计** | 5d | 2015-10-26 A | 2015-10-30 A | 100% |  |  |  | 段佩君; 刘松; 王喆之 | 328h | 328h |
| 67 | 1.3.1.2.2.4.1 | **我的任务** | 2d | 2015-10-26 A | 2015-10-27 A | 100% |  |  |  | 刘松; 潘韦驰 | 48h | 48h |
| 68 | 1.3.1.2.2.4.1.1 | 任务详情 | 1d | 2015-10-26 A | 2015-10-26 A | 100% |  |  |  | 刘松; 潘韦驰 | 16h | 16h |
| 69 | 1.3.1.2.2.4.2 | **我的申请** | 1d | 2015-10-26 A | 2015-10-26 A | 100% |  |  |  | 刘松; 潘韦驰 | 48h | 48h |
| 70 | 1.3.1.2.2.4.2.1 | 申请页面 | 1d | 2015-10-26 A | 2015-10-26 A | 100% |  |  |  | 刘松; 潘韦驰 | 16h | 16h |
| 71 | 1.3.1.2.2.4.2.2 | 审核页面 | 1d | 2015-10-26 A | 2015-10-26 A | 100% |  |  |  | 刘松; 潘韦驰 | 16h | 16h |
| 72 | 1.3.1.2.2.4.3 | **工作汇报** | 5d | 2015-10-26 A | 2015-10-30 A | 100% |  |  |  | 刘松; 潘韦驰 | 112h | 112h |
| 73 | 1.3.1.2.2.4.3.1 | 汇报页面 | 1d | 2015-10-26 A | 2015-10-26 A | 100% |  |  |  | 刘松; 潘韦驰 | 16h | 16h |
| 74 | 1.3.1.2.2.4.3.2 | 汇报查看页面 | 1d | 2015-10-30 A | 2015-10-30 A | 100% |  |  | start no earlier than 2015-10-30 | 刘松; 潘韦驰 | 16h | 16h |
| 75 | 1.3.1.2.2.5 | 微信后台界面设计 | 1d | 2015-10-12 A | 2015-10-12 A | 100% |  |  |  | 刘松; 潘韦驰 | 16h | 16h |
| 76 | 1.3.1.2.3 | **质检门户界面设计** | 10d | 2015-11-02 A | 2015-11-13 | 40% | 6d |  |  | 段佩君; 刘松; 王喆之 | 1088h | 354.15h |
| 77 | 1.3.1.2.3.1 | 欢迎页面界面设计 | 1d | 2015-11-02 A | 2015-11-02 | 40% | 0.6d | 9d |  | 段佩君; 刘松; 王喆之 | 24h | 9.6h |
| 78 | 1.3.1.2.3.2 | **质检门户各功能子界面设计** | 9d | 2015-11-03 A | 2015-11-13 | 40% | 5.4d |  |  | 段佩君; 刘松; 王喆之 | 824h | 344.56h |
| 79 | 1.3.1.2.3.2.1 | 机构概况 | 1d | 2015-11-03 A | 2015-11-03 | 40% | 0.6d | 8d |  | 刘松; 潘韦驰 | 16h | 6.4h |
| 80 | 1.3.1.2.3.2.2 | 通知公告 | 1d | 2015-11-03 A | 2015-11-03 | 40% | 0.6d | 8d |  | 刘松; 潘韦驰 | 16h | 6.4h |
| 81 | 1.3.1.2.3.2.3 | 政策法规 | 1d | 2015-11-04 A | 2015-11-04 | 40% | 0.6d | 106d | start no earlier than 2015-11-04 | 刘松; 潘韦驰 | 16h | 6.4h |
| 82 | 1.3.1.2.3.2.4 | 网上服务 | 1d | 2015-11-04 A | 2015-11-04 | 40% | 0.6d | 106d | start no earlier than 2015-11-04 | 刘松; 潘韦驰 | 16h | 6.4h |
| 83 | 1.3.1.2.3.2.5 | 检验服务 | 1d | 2015-11-05 A | 2015-11-05 | 40% | 0.6d | 105d | start no earlier than 2015-11-05 | 刘松; 潘韦驰 | 16h | 6.4h |
| 84 | 1.3.1.2.3.2.6 | 客户专区 | 1d | 2015-11-05 A | 2015-11-05 | 40% | 0.6d | 105d | start no earlier than 2015-11-05 | 刘松; 潘韦驰 | 16h | 6.4h |
| 85 | 1.3.1.2.3.2.7 | 投诉与建议 | 1d | 2015-11-06 A | 2015-11-06 | 40% | 0.6d | 104d | start no earlier than 2015-11-06 | 刘松; 潘韦驰 | 16h | 6.4h |
| 86 | 1.3.1.2.3.2.8 | 友情链接 | 1d | 2015-11-06 A | 2015-11-06 | 40% | 0.6d | 104d | start no earlier than 2015-11-06 | 刘松; 潘韦驰 | 16h | 6.4h |

| ID | WBS | Task | Type | Duration | Start | Finish | Predecessors | Complete | Remaining | Total slack | Constraint | Resources | Work | Actual work |
| --- | --- | --- | --- | --- | --- | --- | --- | --- | --- | --- | --- | --- | --- | --- |
| 87 | 1.3.1.2.3.2.9 | **网上检验大厅界面设计** |  | 5d | 2015-11-09 A | 2015-11-13 |  | 40% | 3d |  |  | 段佩君; 梁凯迪; 刘松; 潘韦驰; 王勇 | 400h | 160h |
| 88 | 1.3.1.2.3.2.9.1 | 网上检验大厅在线申请界面设计 |  | 2d | 2015-11-09 A | 2015-11-10 |  | 40% | 1.2d | 102d | finish no earlier than 2015-11-10 | 段佩君; 梁凯迪; 刘松; 潘韦驰; 王勇 | 80h | 32h |
| 89 | 1.3.1.2.3.2.9.2 | 网上检验查询界面 | manual | 1d | 2015-11-11 A | 2015-11-11 |  | 40% | 0.6d |  |  | 段佩君; 梁凯迪; 刘松; 潘韦驰; 王勇 | 40h | 16h |
| 90 | 1.3.1.2.3.2.9.3 | 报告(查询、预览、下载)界面 |  | 2d | 2015-11-12 A | 2015-11-13 |  | 40% | 1.2d | 99d | start no earlier than 2015-11-12 | 段佩君; 梁凯迪; 刘松; 潘韦驰; 王勇 | 80h | 32h |
| 91 | 1.3.1.2.3.2.10 | 检验结果公示页面界面设计 |  | 2d | 2015-11-12 A | 2015-11-13 |  | 40% | 1.2d | 99d | finish no earlier than 2015-11-13 | 段佩君; 梁凯迪; 刘松; 潘韦驰; 王勇 | 80h | 32h |
| 92 | 1.3.1.3 | **业务系统功能开发** |  | 52d | 2015-09-11 A | 2015-11-20 |  | 83% | 8.79d |  |  | 段佩君; 梁凯迪; 刘健森; 刘松; 潘韦驰; 王勇 | 7345.6h | 4141.53h |
| 93 | 1.3.1.3.1 | 系统首页开发 |  | 1d | 2015-09-11 A | 2015-09-11 |  | 80% | 0.2d | 51d |  | 刘健森 | 8h | 6.4h |
| 94 | 1.3.1.3.2 | **样品管理开发** |  | 4d | 2015-09-14 A | 2015-09-17 |  | 99% | 0.04d |  |  | 段佩君 | 160h | 134.04h |
| 95 | 1.3.1.3.2.1 | 样品信息（增删改查） |  | 1d | 2015-09-14 A | 2015-09-14 A |  | 100% |  |  | finish no earlier than 2015-09-14 | 段佩君 | 8h | 8h |
| 96 | 1.3.1.3.2.2 | 样品二维码生成 | manual | 1d | 2015-09-14 A | 2015-09-14 |  | 90% | 0.1d |  |  | 段佩君 | 8h | 7.2h |
| 97 | 1.3.1.3.2.3 | 样品信息（导入导出） |  | 1d | 2015-09-15 A | 2015-09-15 A | 95 | 100% |  |  |  | 段佩君 | 8h | 8h |
| 98 | 1.3.1.3.2.4 | 样品登记复核 |  | 1d | 2015-09-15 A | 2015-09-15 A |  | 100% |  |  | start no earlier than 2015-09-15 | 段佩君 | 8h | 8h |
| 99 | 1.3.1.3.2.5 | 样品登记审核 |  | 1d | 2015-09-16 A | 2015-09-16 A |  | 100% |  |  | start no earlier than 2015-09-16 | 段佩君 | 8h | 8h |
| 100 | 1.3.1.3.2.6 | **样品领用** |  | 1d | 2015-09-14 A | 2015-09-14 A |  | 100% |  |  |  | 段佩君 | 16h | 16h |
| 101 | 1.3.1.3.2.6.1 | 领用审核 |  | 1d | 2015-09-14 A | 2015-09-14 A |  | 100% |  |  |  | 段佩君 | 8h | 8h |
| 102 | 1.3.1.3.2.7 | **样品归还** |  | 1d | 2015-09-14 A | 2015-09-14 A |  | 100% |  |  |  | 段佩君 | 16h | 16h |
| 103 | 1.3.1.3.2.7.1 | 归还审核 |  | 1d | 2015-09-14 A | 2015-09-14 A |  | 100% |  |  |  | 段佩君 | 8h | 8h |
| 104 | 1.3.1.3.2.8 | **样品退样** |  | 1d | 2015-09-14 A | 2015-09-14 A |  | 100% |  |  |  | 段佩君 | 16h | 16h |
| 105 | 1.3.1.3.2.8.1 | 退样审核 |  | 1d | 2015-09-14 A | 2015-09-14 A |  | 100% |  |  |  | 段佩君 | 8h | 8h |
| 106 | 1.3.1.3.2.9 | **预检方案** |  | 2d | 2015-09-14 A | 2015-09-15 A |  | 100% |  |  |  | 王勇 | 40h | 40h |
| 107 | 1.3.1.3.2.9.1 | 预检方案（增删改查） |  | 2d | 2015-09-14 A | 2015-09-15 A |  | 100% |  |  |  | 王勇 | 16h | 16h |
| 108 | 1.3.1.3.2.9.2 | 预检方案(导入导出) |  | 1d | 2015-09-15 A | 2015-09-15 A |  | 100% |  |  | start no earlier than 2015-09-15 | 王勇 | 8h | 8h |
| 109 | 1.3.1.3.3 | **检验管理开发** |  | 6d | 2015-09-18 A | 2015-09-24 |  | 99% | 0d |  |  | 段佩君; 刘健森; 张益 | 264h | 120h |
| 110 | 1.3.1.3.3.1 | **样品检验** |  | 4d | 2015-09-18 A | 2015-09-22 A |  | 100% |  |  |  | 段佩君 | 72h | 72h |
| 111 | 1.3.1.3.3.1.1 | 样品详情 |  | 1d | 2015-09-18 A | 2015-09-18 A |  | 100% |  |  |  | 段佩君 | 8h | 8h |
| 112 | 1.3.1.3.3.1.2 | 检验项目（增删改） |  | 1d | 2015-09-18 A | 2015-09-18 A |  | 100% |  |  |  | 段佩君 | 8h | 8h |
| 113 | 1.3.1.3.3.1.3 | 设备信息（增删改） |  | 1d | 2015-09-18 A | 2015-09-18 A |  | 100% |  |  | start no earlier than 2015-09-18 | 段佩君 | 8h | 8h |
| 114 | 1.3.1.3.3.1.4 | 检验判定增加 |  | 1d | 2015-09-18 A | 2015-09-18 A |  | 100% |  |  |  | 段佩君 | 8h | 8h |
| 115 | 1.3.1.3.3.1.5 | 检验原始记录上传 |  | 1d | 2015-09-18 A | 2015-09-18 A |  | 100% |  |  |  | 段佩君 | 8h | 8h |

| ID | WBS | Task | Type | Duration | Start | Finish | Predecessors | Complete | Remaining | Total slack | Constraint | Resources | Work | Actual work |
| --- | --- | --- | --- | --- | --- | --- | --- | --- | --- | --- | --- | --- | --- | --- |
| 116 | 1.3.1.3.3.2 | **检验复核** |  | 1d | 2015-09-18 A | 2015-09-18 A |  | 100% |  |  |  | 段佩君 | 16h | 16h |
| 117 | 1.3.1.3.3.2.1 | 退回 | manual | 1d | 2015-09-18 A | 2015-09-18 A |  | 100% |  |  |  | 段佩君 | 8h | 8h |
| 118 | 1.3.1.3.3.3 | **检验审核** |  | 1d | 2015-09-18 A | 2015-09-18 A |  | 100% |  |  |  | 段佩君 | 16h | 16h |
| 119 | 1.3.1.3.3.3.1 | 退回 | manual | 1d | 2015-09-18 A | 2015-09-18 A |  | 100% |  |  |  | 段佩君 | 8h | 8h |
| 120 | 1.3.1.3.3.4 | **检验退检** |  | 1d | 2015-09-18 A | 2015-09-18 A |  | 100% |  |  |  | 段佩君 | 16h | 16h |
| 121 | 1.3.1.3.3.4.1 | 退检审核 |  | 1d | 2015-09-18 A | 2015-09-18 A |  | 100% |  |  |  | 段佩君 | 8h | 8h |
| 122 | 1.3.1.3.4 | 评审代码 | manual | 1d | 2015-09-22 A | 2015-09-22 A |  | 100% |  |  |  | 何书查 | 8h | 8h |
| 123 | 1.3.1.3.5 | 单元测试 | manual | 2d | 2015-09-23 A | 2015-09-24 A |  | 100% |  |  |  | 蒋永正; 何书查 | 32h | 32h |
| 124 | 1.3.1.3.6 | **检验报告编制** |  | 6d | 2015-09-25 A | 2015-10-02 | 109 | 95% | 0.28d |  |  | 段佩君 | 232h | 161.6h |
| 125 | 1.3.1.3.6.1 | **报告编制** |  | 2d | 2015-09-25 A | 2015-09-28 |  | 95% | 0.1d |  |  | 段佩君 | 48h | 30.4h |
| 126 | 1.3.1.3.6.1.1 | 编制报告 |  | 2d | 2015-09-25 A | 2015-09-28 A |  | 100% |  |  |  | 段佩君 | 16h | 16h |
| 127 | 1.3.1.3.6.1.2 | 报告二维码生成 | manual | 1d | 2015-09-25 A | 2015-09-25 |  | 80% | 0.2d |  |  | 段佩君 | 8h | 6.4h |
| 128 | 1.3.1.3.6.1.3 | 报告预览 |  | 1d | 2015-09-28 A | 2015-09-28 A |  | 100% |  |  | start no earlier than 2015-09-28 | 段佩君 | 8h | 8h |
| 129 | 1.3.1.3.6.2 | **报告复核** |  | 1d | 2015-09-29 A | 2015-09-29 A | 125 | 100% |  |  |  | 段佩君 | 24h | 24h |
| 130 | 1.3.1.3.6.2.1 | 退回 |  | 1d | 2015-09-29 A | 2015-09-29 A |  | 100% |  |  |  | 段佩君 | 8h | 8h |
| 131 | 1.3.1.3.6.2.2 | 报告预览 |  | 1d | 2015-09-29 A | 2015-09-29 A |  | 100% |  |  | start no earlier than 2015-09-29 | 段佩君 | 8h | 8h |
| 132 | 1.3.1.3.6.3 | **报告审核** |  | 1d | 2015-09-29 A | 2015-09-29 A | 129 | 100% |  |  |  | 段佩君 | 24h | 24h |
| 133 | 1.3.1.3.6.3.1 | 退回 |  | 1d | 2015-09-29 A | 2015-09-29 A |  | 100% |  |  |  | 段佩君 | 8h | 8h |
| 134 | 1.3.1.3.6.3.2 | 报告预览 |  | 1d | 2015-09-29 A | 2015-09-29 A |  | 100% |  |  | start no earlier than 2015-09-29 | 段佩君 | 8h | 8h |
| 135 | 1.3.1.3.6.4 | **报告批准** |  | 1d | 2015-09-30 A | 2015-09-30 A | 132 | 100% |  |  |  | 段佩君 | 24h | 24h |
| 136 | 1.3.1.3.6.4.1 | 退回 |  | 1d | 2015-09-30 A | 2015-09-30 A |  | 100% |  |  |  | 段佩君 | 8h | 8h |
| 137 | 1.3.1.3.6.4.2 | 报告预览 |  | 1d | 2015-09-30 A | 2015-09-30 A |  | 100% |  |  | start no earlier than 2015-09-30 | 段佩君 | 8h | 8h |
| 138 | 1.3.1.3.6.5 | **报告发放** |  | 1d | 2015-09-30 A | 2015-09-30 A | 135 | 100% |  |  |  | 段佩君 | 16h | 16h |
| 139 | 1.3.1.3.6.5.1 | 报告预览 |  | 1d | 2015-09-30 A | 2015-09-30 A |  | 100% |  |  | start no earlier than 2015-09-30 | 段佩君 | 8h | 8h |
| 140 | 1.3.1.3.6.6 | 报告打印 |  | 1d | 2015-10-01 A | 2015-10-01 A | 138 | 100% |  |  | start no earlier than 2015-10-01 | 段佩君 | 8h | 8h |
| 141 | 1.3.1.3.6.7 | 报告归档 |  | 1d | 2015-10-01 A | 2015-10-01 A |  | 100% |  |  | start no earlier than 2015-10-01 | 段佩君 | 8h | 8h |
| 142 | 1.3.1.3.6.8 | 报告解锁 |  | 2d | 2015-10-01 A | 2015-10-02 A |  | 100% |  |  | finish no earlier than 2015-10-02 | 段佩君 | 16h | 16h |
| 143 | 1.3.1.3.6.9 | 退检报告（改、删、查） |  | 1d | 2015-10-02 A | 2015-10-02 A | 141 | 100% |  |  |  | 段佩君 | 8h | 8h |
| 144 | 1.3.1.3.6.10 | 超期报告（改、删、查） |  | 1d | 2015-10-02 A | 2015-10-02 | 140 | 40% | 0.6d | 0d |  | 段佩君 | 8h | 3.2h |
| 145 | 1.3.1.3.7 | 评审代码 | manual | 1d | 2015-10-05 A | 2015-10-05 A |  | 100% |  |  |  | 何书查 | 8h | 8h |
| 146 | 1.3.1.3.8 | 单元测试 | manual | 2d | 2015-10-06 A | 2015-10-07 A |  | 100% |  |  |  | 何书查; 蒋永正 | 32h | 32h |

| ID | WBS | Task | Duration | Start | Finish | Complete | Remaining | Total slack | Constraint | Resources | Work | Actual work |
| --- | --- | --- | --- | --- | --- | --- | --- | --- | --- | --- | --- | --- |
| 147 | 1.3.1.3.9 | **任务管理开发** | 2d | 2015-09-16 A | 2015-09-17 | 72% | 0.56d |  |  | 段佩君 | 160h | 96h |
| 148 | 1.3.1.3.9.1 | **我的任务** | 1d | 2015-09-16 A | 2015-09-16 A | 100% |  |  |  | 段佩君 | 32h | 32h |
| 149 | 1.3.1.3.9.1.1 | 任务处理(查、改) | 1d | 2015-09-16 A | 2015-09-16 A | 100% |  |  |  | 段佩君 | 8h | 8h |
| 150 | 1.3.1.3.9.1.2 | 任务详情 | 1d | 2015-09-16 A | 2015-09-16 A | 100% |  |  |  | 段佩君 | 8h | 8h |
| 151 | 1.3.1.3.9.1.3 | 任务延期（查、改） | 1d | 2015-09-16 A | 2015-09-16 A | 100% |  |  | start no earlier than 2015-09-16 | 段佩君 | 8h | 8h |
| 152 | 1.3.1.3.9.2 | **任务下达（分配—指派）** | 1d | 2015-09-17 A | 2015-09-17 A | 100% |  |  |  | 段佩君 | 32h | 32h |
| 153 | 1.3.1.3.9.2.1 | 任务分配（改、删、查） | 1d | 2015-09-17 A | 2015-09-17 A | 100% |  |  |  | 段佩君 | 8h | 8h |
| 154 | 1.3.1.3.9.2.2 | 任务指派（改、删、查） | 1d | 2015-09-17 A | 2015-09-17 A | 100% |  |  | start no earlier than 2015-09-17 | 段佩君 | 8h | 8h |
| 155 | 1.3.1.3.9.2.3 | 任务延期（改、删、查） | 1d | 2015-09-17 A | 2015-09-17 A | 100% |  |  | start no earlier than 2015-09-17 | 段佩君 | 8h | 8h |
| 156 | 1.3.1.3.9.3 | **系统预警** | 2d | 2015-09-16 A | 2015-09-17 | 53% | 0.93d |  |  | 段佩君 | 32h | 12.8h |
| 157 | 1.3.1.3.9.3.1 | 任务预警提醒 | 1d | 2015-09-16 A | 2015-09-16 | 53% | 0.47d | 1d |  | 段佩君 | 8h | 4.27h |
| 158 | 1.3.1.3.9.3.2 | 任务详情 | 1d | 2015-09-16 A | 2015-09-16 | 53% | 0.47d | 1d |  | 段佩君 | 8h | 4.27h |
| 159 | 1.3.1.3.9.4 | **任务台** | 2d | 2015-09-16 A | 2015-09-17 | 40% | 1.2d |  |  | 段佩君 | 48h | 19.2h |
| 160 | 1.3.1.3.9.4.1 | 待办 | 1d | 2015-09-16 A | 2015-09-16 | 40% | 0.6d | 1d |  | 段佩君 | 8h | 3.2h |
| 161 | 1.3.1.3.9.4.2 | 已办 | 1d | 2015-09-16 A | 2015-09-16 | 40% | 0.6d | 1d |  | 段佩君 | 8h | 3.2h |
| 162 | 1.3.1.3.9.4.3 | 督办 | 1d | 2015-09-17 A | 2015-09-17 | 40% | 0.6d | 141d | start no earlier than 2015-09-17 | 段佩君 | 8h | 3.2h |
| 163 | 1.3.1.3.9.4.4 | 超期 | 1d | 2015-09-17 A | 2015-09-17 | 40% | 0.6d | 141d | start no earlier than 2015-09-17 | 段佩君 | 8h | 3.2h |
| 164 | 1.3.1.3.10 | **查询与统计开发** | 10d | 2015-11-09 A | 2015-11-20 | 33% | 6.71d |  |  | 段佩君; 梁凯迪; 刘松; 潘韦驰; 王勇 | 2480h | 684.08h |
| 165 | 1.3.1.3.10.1 | **业务统计（查询、查看）** | 2d | 2015-11-09 A | 2015-11-10 | 32% | 1.36d |  |  | 段佩君; 梁凯迪; 刘松; 潘韦驰; 王勇 | 720h | 216.04h |
| 166 | 1.3.1.3.10.1.1 | 年检验量统计（打印） | 1d | 2015-11-09 A | 2015-11-09 | 32% | 0.68d | 1d |  | 段佩君; 梁凯迪; 刘松; 潘韦驰; 王勇 | 40h | 12.71h |
| 167 | 1.3.1.3.10.1.2 | 年检验量统计（导出） | 1d | 2015-11-09 A | 2015-11-09 | 32% | 0.68d | 1d |  | 段佩君; 梁凯迪; 刘松; 潘韦驰; 王勇 | 40h | 12.71h |
| 168 | 1.3.1.3.10.1.3 | 月检验量统计（打印） | 1d | 2015-11-09 A | 2015-11-09 | 32% | 0.68d | 1d |  | 段佩君; 梁凯迪; 刘松; 潘韦驰; 王勇 | 40h | 12.71h |
| 169 | 1.3.1.3.10.1.4 | 月检验量统计（导出） | 1d | 2015-11-09 A | 2015-11-09 | 32% | 0.68d | 1d |  | 段佩君; 梁凯迪; 刘松; 潘韦驰; 王勇 | 40h | 12.71h |
| 170 | 1.3.1.3.10.1.5 | 个人检验量统计（打印） | 1d | 2015-11-09 A | 2015-11-09 | 32% | 0.68d | 1d |  | 段佩君; 梁凯迪; 刘松; 潘韦驰; 王勇 | 40h | 12.71h |
| 171 | 1.3.1.3.10.1.6 | 个人检验量统计（导出） | 1d | 2015-11-09 A | 2015-11-09 | 32% | 0.68d | 1d |  | 段佩君; 梁凯迪; 刘松; 潘韦驰; 王勇 | 40h | 12.71h |
| 172 | 1.3.1.3.10.1.7 | 检验客户统计（打印） | 1d | 2015-11-09 A | 2015-11-09 | 32% | 0.68d | 1d |  | 段佩君; 梁凯迪; 刘松; 潘韦驰; 王勇 | 40h | 12.71h |
| 173 | 1.3.1.3.10.1.8 | 检验客户统计（导出） | 1d | 2015-11-09 A | 2015-11-09 | 32% | 0.68d | 1d |  | 段佩君; 梁凯迪; 刘松; 潘韦驰; 王勇 | 40h | 12.71h |
| 174 | 1.3.1.3.10.1.9 | 合格样品统计（打印） | 1d | 2015-11-09 A | 2015-11-09 | 32% | 0.68d | 1d |  | 段佩君; 梁凯迪; 刘松; 潘韦驰; 王勇 | 40h | 12.71h |
| 175 | 1.3.1.3.10.1.10 | 合格样品统计（导出） | 1d | 2015-11-09 A | 2015-11-09 | 32% | 0.68d | 1d |  | 段佩君; 梁凯迪; 刘松; 潘韦驰; 王勇 | 40h | 12.71h |
| 176 | 1.3.1.3.10.1.11 | 不合格样品统计（打印） | 1d | 2015-11-09 A | 2015-11-09 | 32% | 0.68d | 1d |  | 段佩君; 梁凯迪; 刘松; 潘韦驰; 王勇 | 40h | 12.71h |
| 177 | 1.3.1.3.10.1.12 | 不合格样品统计（导出） | 1d | 2015-11-09 A | 2015-11-09 | 32% | 0.68d | 1d |  | 段佩君; 梁凯迪; 刘松; 潘韦驰; 王勇 | 40h | 12.71h |
| 178 | 1.3.1.3.10.1.13 | 设备使用统计（打印） | 1d | 2015-11-09 A | 2015-11-09 | 32% | 0.68d | 1d |  | 段佩君; 梁凯迪; 刘松; 潘韦驰; 王勇 | 40h | 12.71h |
| 179 | 1.3.1.3.10.1.14 | 设备使用统计（导出） | 1d | 2015-11-09 A | 2015-11-09 | 32% | 0.68d | 1d |  | 段佩君; 梁凯迪; 刘松; 潘韦驰; 王勇 | 40h | 12.71h |
| 180 | 1.3.1.3.10.1.15 | 样品分类统计（打印） | 1d | 2015-11-09 A | 2015-11-09 | 32% | 0.68d | 1d |  | 段佩君; 梁凯迪; 刘松; 潘韦驰; 王勇 | 40h | 12.71h |
| 181 | 1.3.1.3.10.1.16 | 样品分类统计（导出） | 1d | 2015-11-09 A | 2015-11-09 | 32% | 0.68d | 1d |  | 段佩君; 梁凯迪; 刘松; 潘韦驰; 王勇 | 40h | 12.71h |

| ID | WBS | Task | Duration | Start | Finish | Complete | Remaining | Total slack | Constraint | Resources | Work | Actual work |
| --- | --- | --- | --- | --- | --- | --- | --- | --- | --- | --- | --- | --- |
| 182 | 1.3.1.3.10.2 | **报告统计（查询、查看）** | 2d | 2015-11-11 A | 2015-11-12 | 34% | 1.31d |  |  | 段佩君; 梁凯迪; 刘松; 潘韦驰; 王勇 | 320h | 96.02h |
| 183 | 1.3.1.3.10.2.1 | 所有报告统计（打印） | 1d | 2015-11-11 A | 2015-11-11 | 34% | 0.66d | 1d |  | 段佩君; 梁凯迪; 刘松; 潘韦驰; 王勇 | 40h | 13.72h |
| 184 | 1.3.1.3.10.2.2 | 所有报告统计（导出） | 1d | 2015-11-11 A | 2015-11-11 | 34% | 0.66d | 1d |  | 段佩君; 梁凯迪; 刘松; 潘韦驰; 王勇 | 40h | 13.72h |
| 185 | 1.3.1.3.10.2.3 | 合格报告统计（打印） | 1d | 2015-11-11 A | 2015-11-11 | 34% | 0.66d | 1d |  | 段佩君; 梁凯迪; 刘松; 潘韦驰; 王勇 | 40h | 13.72h |
| 186 | 1.3.1.3.10.2.4 | 合格报告统计（导出） | 1d | 2015-11-11 A | 2015-11-11 | 34% | 0.66d | 1d |  | 段佩君; 梁凯迪; 刘松; 潘韦驰; 王勇 | 40h | 13.72h |
| 187 | 1.3.1.3.10.2.5 | 不合格报告统计（打印） | 1d | 2015-11-11 A | 2015-11-11 | 34% | 0.66d | 1d |  | 段佩君; 梁凯迪; 刘松; 潘韦驰; 王勇 | 40h | 13.72h |
| 188 | 1.3.1.3.10.2.6 | 不合格报告统计（导出） | 1d | 2015-11-11 A | 2015-11-11 | 34% | 0.66d | 1d |  | 段佩君; 梁凯迪; 刘松; 潘韦驰; 王勇 | 40h | 13.72h |
| 189 | 1.3.1.3.10.3 | **财务统计（查询、查看）** | 2d | 2015-11-13 A | 2015-11-16 | 33% | 1.35d |  |  | 段佩君; 梁凯迪; 刘松; 潘韦驰; 王勇 | 480h | 144.01h |
| 190 | 1.3.1.3.10.3.1 | 总体费用统计（打印） | 1d | 2015-11-13 A | 2015-11-13 | 33% | 0.67d | 1d |  | 段佩君; 梁凯迪; 刘松; 潘韦驰; 王勇 | 40h | 13.09h |
| 191 | 1.3.1.3.10.3.2 | 总体费用统计（导出） | 1d | 2015-11-13 A | 2015-11-13 | 33% | 0.67d | 1d |  | 段佩君; 梁凯迪; 刘松; 潘韦驰; 王勇 | 40h | 13.09h |
| 192 | 1.3.1.3.10.3.3 | 报告收费统计（打印） | 1d | 2015-11-13 A | 2015-11-13 | 33% | 0.67d | 1d |  | 段佩君; 梁凯迪; 刘松; 潘韦驰; 王勇 | 40h | 13.09h |
| 193 | 1.3.1.3.10.3.4 | 报告收费统计（导出） | 1d | 2015-11-13 A | 2015-11-13 | 33% | 0.67d | 1d |  | 段佩君; 梁凯迪; 刘松; 潘韦驰; 王勇 | 40h | 13.09h |
| 194 | 1.3.1.3.10.3.5 | 收入统计（打印） | 1d | 2015-11-13 A | 2015-11-13 | 33% | 0.67d | 1d |  | 段佩君; 梁凯迪; 刘松; 潘韦驰; 王勇 | 40h | 13.09h |
| 195 | 1.3.1.3.10.3.6 | 收入统计（导出） | 1d | 2015-11-13 A | 2015-11-13 | 33% | 0.67d | 1d |  | 段佩君; 梁凯迪; 刘松; 潘韦驰; 王勇 | 40h | 13.09h |
| 196 | 1.3.1.3.10.3.7 | 成本统计（打印） | 1d | 2015-11-13 A | 2015-11-13 | 33% | 0.67d | 1d |  | 段佩君; 梁凯迪; 刘松; 潘韦驰; 王勇 | 40h | 13.09h |
| 197 | 1.3.1.3.10.3.8 | 成本统计（导出） | 1d | 2015-11-13 A | 2015-11-13 | 33% | 0.67d | 1d |  | 段佩君; 梁凯迪; 刘松; 潘韦驰; 王勇 | 40h | 13.09h |
| 198 | 1.3.1.3.10.3.9 | 员工福利统计（打印） | 1d | 2015-11-13 A | 2015-11-13 | 33% | 0.67d | 1d |  | 段佩君; 梁凯迪; 刘松; 潘韦驰; 王勇 | 40h | 13.09h |
| 199 | 1.3.1.3.10.3.10 | 员工福利统计（导出） | 1d | 2015-11-13 A | 2015-11-13 | 33% | 0.67d | 1d |  | 段佩君; 梁凯迪; 刘松; 潘韦驰; 王勇 | 40h | 13.09h |
| 200 | 1.3.1.3.10.4 | **任务统计（查询、查看）** | 2d | 2015-11-17 A | 2015-11-18 | 33% | 1.35d |  |  | 段佩君; 梁凯迪; 刘松; 潘韦驰; 王勇 | 480h | 144.01h |
| 201 | 1.3.1.3.10.4.1 | 所有任务统计（打印） | 1d | 2015-11-17 A | 2015-11-17 | 33% | 0.67d | 1d |  | 段佩君; 梁凯迪; 刘松; 潘韦驰; 王勇 | 40h | 13.09h |
| 202 | 1.3.1.3.10.4.2 | 所有任务统计（导出） | 1d | 2015-11-17 A | 2015-11-17 | 33% | 0.67d | 1d |  | 段佩君; 梁凯迪; 刘松; 潘韦驰; 王勇 | 40h | 13.09h |
| 203 | 1.3.1.3.10.4.3 | 按时完成量统计（打印） | 1d | 2015-11-17 A | 2015-11-17 | 33% | 0.67d | 1d |  | 段佩君; 梁凯迪; 刘松; 潘韦驰; 王勇 | 40h | 13.09h |
| 204 | 1.3.1.3.10.4.4 | 按时完成量统计（导出） | 1d | 2015-11-17 A | 2015-11-17 | 33% | 0.67d | 1d |  | 段佩君; 梁凯迪; 刘松; 潘韦驰; 王勇 | 40h | 13.09h |
| 205 | 1.3.1.3.10.4.5 | 超期完成量统计（打印） | 1d | 2015-11-17 A | 2015-11-17 | 33% | 0.67d | 1d |  | 段佩君; 梁凯迪; 刘松; 潘韦驰; 王勇 | 40h | 13.09h |
| 206 | 1.3.1.3.10.4.6 | 超期完成量统计（导出） | 1d | 2015-11-17 A | 2015-11-17 | 33% | 0.67d | 1d |  | 段佩君; 梁凯迪; 刘松; 潘韦驰; 王勇 | 40h | 13.09h |
| 207 | 1.3.1.3.10.4.7 | 任务来源统计（打印） | 1d | 2015-11-17 A | 2015-11-17 | 33% | 0.67d | 1d |  | 段佩君; 梁凯迪; 刘松; 潘韦驰; 王勇 | 40h | 13.09h |
| 208 | 1.3.1.3.10.4.8 | 任务来源统计（导出） | 1d | 2015-11-17 A | 2015-11-17 | 33% | 0.67d | 1d |  | 段佩君; 梁凯迪; 刘松; 潘韦驰; 王勇 | 40h | 13.09h |
| 209 | 1.3.1.3.10.4.9 | 时效考核统计（打印） | 1d | 2015-11-17 A | 2015-11-17 | 33% | 0.67d | 1d |  | 段佩君; 梁凯迪; 刘松; 潘韦驰; 王勇 | 40h | 13.09h |
| 210 | 1.3.1.3.10.4.10 | 时效考核统计（导出） | 1d | 2015-11-17 A | 2015-11-17 | 33% | 0.67d | 1d |  | 段佩君; 梁凯迪; 刘松; 潘韦驰; 王勇 | 40h | 13.09h |
| 211 | 1.3.1.3.10.5 | 各类数据报表导出 | 2d | 2015-11-19 A | 2015-11-20 | 40% | 1.2d | 94d | finish no earlier than 2015-11-20 | 段佩君; 梁凯迪; 刘松; 潘韦驰; 王勇 | 80h | 32h |

| ID | WBS | Task | Type | Duration | Start | Finish | Predecessors | Complete | Remaining | Total slack | Constraint | Resources | Work | Actual work |
| --- | --- | --- | --- | --- | --- | --- | --- | --- | --- | --- | --- | --- | --- | --- |
| 212 | 1.3.1.3.11 | **客户管理开发** |  | 1d | 2015-10-16 A | 2015-10-16 A |  | 100% |  |  |  | 梁凯迪 | 40h | 40h |
| 213 | 1.3.1.3.11.1 | 客户信息（增删改查） |  | 1d | 2015-10-16 A | 2015-10-16 A |  | 100% |  |  |  | 梁凯迪 | 8h | 8h |
| 214 | 1.3.1.3.11.2 | 客户信息（导入导出） |  | 1d | 2015-10-16 A | 2015-10-16 A |  | 100% |  |  |  | 梁凯迪 | 8h | 8h |
| 215 | 1.3.1.3.11.3 | 客户行业管理（增删改查） |  | 1d | 2015-10-16 A | 2015-10-16 A |  | 100% |  |  |  | 梁凯迪 | 8h | 8h |
| 216 | 1.3.1.3.11.4 | 客户行业管理（导入导出） |  | 1d | 2015-10-16 A | 2015-10-16 A |  | 100% |  |  |  | 梁凯迪 | 8h | 8h |
| 217 | 1.3.1.3.12 | **检验标准管理开发** |  | 2d | 2015-10-08 A | 2015-10-09 A |  | 100% |  |  |  | 段佩君 | 57.6h | 57.6h |
| 218 | 1.3.1.3.12.1 | 检验标准（增删改查） |  | 0.2d | 2015-10-08 A | 2015-10-08 A |  | 100% |  |  |  | 段佩君 | 1.6h | 1.6h |
| 219 | 1.3.1.3.12.2 | 检验标准废止 |  | 1d | 2015-10-08 A | 2015-10-08 A |  | 100% |  |  |  | 段佩君 | 8h | 8h |
| 220 | 1.3.1.3.12.3 | 检验标准（导入导出） |  | 1d | 2015-10-08 A | 2015-10-08 A |  | 100% |  |  | start no earlier than 2015-10-08 | 段佩君 | 8h | 8h |
| 221 | 1.3.1.3.12.4 | 检验标准（审核） |  | 1d | 2015-10-08 A | 2015-10-08 A |  | 100% |  |  | start no earlier than 2015-10-08 | 段佩君 | 8h | 8h |
| 222 | 1.3.1.3.12.5 | 检验项目（增删改查） |  | 1d | 2015-10-09 A | 2015-10-09 A | 221 | 100% |  |  |  | 段佩君 | 8h | 8h |
| 223 | 1.3.1.3.12.6 | 检验项目（导入导出） |  | 1d | 2015-10-09 A | 2015-10-09 A |  | 100% |  |  | finish no earlier than 2015-10-09 | 段佩君 | 8h | 8h |
| 224 | 1.3.1.3.13 | **设备管理开发** |  | 3d | 2015-10-12 A | 2015-10-14 |  | 98% | 0.06d |  |  | 刘松 | 104h | 78.4h |
| 225 | 1.3.1.3.13.1 | 设备信息（增删改查） |  | 1d | 2015-10-12 A | 2015-10-12 A |  | 100% |  |  |  | 刘松 | 8h | 8h |
| 226 | 1.3.1.3.13.2 | 设备二维码生成 |  | 1d | 2015-10-12 A | 2015-10-12 |  | 80% | 0.2d | 2d |  | 段佩君 | 8h | 6.4h |
| 227 | 1.3.1.3.13.3 | 设备信息（导入导出） |  | 1d | 2015-10-12 A | 2015-10-12 A |  | 100% |  |  |  | 刘松 | 8h | 8h |
| 228 | 1.3.1.3.13.4 | 设备使用记录（增删改查） |  | 1d | 2015-10-13 A | 2015-10-13 A | 227 | 100% |  |  |  | 刘松 | 8h | 8h |
| 229 | 1.3.1.3.13.5 | 设备使用记录（导入导出） |  | 1d | 2015-10-13 A | 2015-10-13 A | 225 | 100% |  |  |  | 刘松 | 8h | 8h |
| 230 | 1.3.1.3.13.6 | 设备报修记录（增删改查） |  | 1d | 2015-10-12 A | 2015-10-12 A |  | 100% |  |  |  | 刘松 | 8h | 8h |
| 231 | 1.3.1.3.13.7 | 设备报修记录（导入导出） |  | 1d | 2015-10-12 A | 2015-10-12 A |  | 100% |  |  |  | 刘松 | 8h | 8h |
| 232 | 1.3.1.3.13.8 | 设备申购（增删改查） |  | 1d | 2015-10-14 A | 2015-10-14 A | 229 | 100% |  |  |  | 刘松 | 8h | 8h |
| 233 | 1.3.1.3.13.9 | 设备申购（导入导出） |  | 1d | 2015-10-14 A | 2015-10-14 A | 228 | 100% |  |  |  | 刘松 | 8h | 8h |
| 234 | 1.3.1.3.13.10 | 设备申购（审核） |  | 1d | 2015-10-14 A | 2015-10-14 A |  | 100% |  |  | start no earlier than 2015-10-14 | 刘松 | 8h | 8h |
| 235 | 1.3.1.3.14 | 评审代码 | manual | 1d | 2015-10-19 A | 2015-10-19 A |  | 100% |  |  |  | 何书查; 蒋永正 | 8h | 8h |
| 236 | 1.3.1.3.15 | 单元测试 | milestone, manual | 0d | 2015-10-20 A | 2015-10-20 A |  | 100% |  |  |  | 蒋永正 |  |  |

| ID | WBS | Task | Duration | Start | Finish | Complete | Remaining | Actual start | Total slack | Resources | Work | Actual work |
| --- | --- | --- | --- | --- | --- | --- | --- | --- | --- | --- | --- | --- |
| 237 | 1.3.1.3.16 | **技术服务管理开发** | 1d | 2015-10-21 A | 2015-10-21 A | 100% |  |  |  | 刘松 | 24h | 24h |
| 238 | 1.3.1.3.16.1 | 技术服务（增删改查） | 1d | 2015-10-21 A | 2015-10-21 A | 100% |  |  |  | 刘松 | 8h | 8h |
| 239 | 1.3.1.3.16.2 | 技术服务（导入导出） | 1d | 2015-10-21 A | 2015-10-21 A | 100% |  |  |  | 刘松 | 8h | 8h |
| 240 | 1.3.1.3.17 | **消息管理开发** | 1d | 2015-10-22 A | 2015-10-22 A | 100% |  |  |  | 段佩君 | 24h | 24h |
| 241 | 1.3.1.3.17.1 | 消息（增删改查） | 1d | 2015-10-22 A | 2015-10-22 A | 100% |  |  |  | 段佩君 | 8h | 8h |
| 242 | 1.3.1.3.17.2 | 消息（导入导出） | 1d | 2015-10-22 A | 2015-10-22 A | 100% |  |  |  | 段佩君 | 8h | 8h |
| 243 | 1.3.1.3.18 | **上岗证管理开发** | 1d | 2015-10-22 A | 2015-10-22 A | 100% |  |  |  | 梁凯迪 | 24h | 24h |
| 244 | 1.3.1.3.18.1 | 上岗证（增删改查） | 1d | 2015-10-22 A | 2015-10-22 A | 100% |  |  |  | 梁凯迪 | 8h | 8h |
| 245 | 1.3.1.3.18.2 | 上岗证（导入导出） | 1d | 2015-10-22 A | 2015-10-22 A | 100% |  |  |  | 梁凯迪 | 8h | 8h |
| 246 | 1.3.1.3.19 | **认证产品管理研发** | 1d | 2015-10-21 A | 2015-10-21 A | 100% |  |  |  | 王勇 | 24h | 24h |
| 247 | 1.3.1.3.19.1 | 认证产品（增删改查） | 1d | 2015-10-21 A | 2015-10-21 A | 100% |  |  |  | 王勇 | 8h | 8h |
| 248 | 1.3.1.3.19.2 | 认证产品（导入导出） | 1d | 2015-10-21 A | 2015-10-21 A | 100% |  |  |  | 王勇 | 8h | 8h |
| 249 | 1.3.1.3.20 | **检验收费标准管理** | 1d | 2015-10-15 A | 2015-10-15 A | 100% |  |  |  | 梁凯迪 | 32h | 32h |
| 250 | 1.3.1.3.20.1 | 检验收费标准（增删改查） | 1d | 2015-10-15 A | 2015-10-15 A | 100% |  |  |  | 梁凯迪 | 8h | 8h |
| 251 | 1.3.1.3.20.2 | 检验收费标准（导入导出） | 1d | 2015-10-15 A | 2015-10-15 A | 100% |  |  |  | 梁凯迪 | 8h | 8h |
| 252 | 1.3.1.3.20.3 | 检验收费标准（审核） | 1d | 2015-10-15 A | 2015-10-15 A | 100% |  |  |  | 梁凯迪 | 8h | 8h |
| 253 | 1.3.1.3.21 | **投诉管理开发** | 1d | 2015-10-23 A | 2015-10-23 A | 100% |  |  |  | 梁凯迪 | 32h | 32h |
| 254 | 1.3.1.3.21.1 | 投诉（增删改查） | 1d | 2015-10-23 A | 2015-10-23 A | 100% |  |  |  | 梁凯迪 | 8h | 8h |
| 255 | 1.3.1.3.21.2 | 投诉（导入导出） | 1d | 2015-10-23 A | 2015-10-23 A | 100% |  |  |  | 梁凯迪 | 8h | 8h |
| 256 | 1.3.1.3.21.3 | 投诉（处理） | 1d | 2015-10-23 A | 2015-10-23 A | 100% |  |  |  | 梁凯迪 | 8h | 8h |
| 257 | 1.3.1.3.22 | **财务管理开发** | 3d | 2015-10-26 | 2015-10-28 | 83% | 0.53d | 2015-09-11 |  | 刘健森; 王勇 | 176h | 133.12h |
| 258 | 1.3.1.3.22.1 | **报告收费** | 1d | 2015-10-26 A | 2015-10-26 | 30% | 0.7d |  |  | 刘健森 | 32h | 9.6h |
| 259 | 1.3.1.3.22.1.1 | 报告收费（处理） | 1d | 2015-10-26 A | 2015-10-26 | 30% | 0.7d |  | 0d | 刘健森 | 8h | 2.4h |
| 260 | 1.3.1.3.22.1.2 | 报告收费（修删查） | 1d | 2015-10-26 A | 2015-10-26 | 30% | 0.7d |  | 0d | 刘健森 | 8h | 2.4h |
| 261 | 1.3.1.3.22.1.3 | 报告收费（延期） | 1d | 2015-10-26 A | 2015-10-26 | 30% | 0.7d |  | 0d | 刘健森 | 8h | 2.4h |

| ID | WBS | Task | Type | Duration | Start | Finish | Complete | Actual start | Resources | Work | Actual work |
| --- | --- | --- | --- | --- | --- | --- | --- | --- | --- | --- | --- |
| 262 | 1.3.1.3.22.2 | **成本管理** |  | 1d | 2015-10-27 A | 2015-10-27 A | 100% |  | 王勇 | 32h | 32h |
| 263 | 1.3.1.3.22.2.1 | 成本管理（增删改查） |  | 1d | 2015-10-27 A | 2015-10-27 A | 100% |  | 王勇 | 8h | 8h |
| 264 | 1.3.1.3.22.2.2 | 成本明细管理（增删改查） |  | 1d | 2015-10-27 A | 2015-10-27 A | 100% |  | 王勇 | 8h | 8h |
| 265 | 1.3.1.3.22.2.3 | 成本管理（导入导出） |  | 1d | 2015-10-27 A | 2015-10-27 A | 100% |  | 王勇 | 8h | 8h |
| 266 | 1.3.1.3.22.3 | **员工福利管理** |  | 1d | 2015-10-27 A | 2015-10-27 A | 100% |  | 王勇 | 32h | 32h |
| 267 | 1.3.1.3.22.3.1 | 员工福利管理（增删改查） |  | 1d | 2015-10-27 A | 2015-10-27 A | 100% |  | 王勇 | 8h | 8h |
| 268 | 1.3.1.3.22.3.2 | 员工福利明细管理（增删改查） |  | 1d | 2015-10-27 A | 2015-10-27 A | 100% |  | 王勇 | 8h | 8h |
| 269 | 1.3.1.3.22.3.3 | 员工福利管理（导入导出） |  | 1d | 2015-10-27 A | 2015-10-27 A | 100% |  | 王勇 | 8h | 8h |
| 270 | 1.3.1.3.22.4 | **科室收入管理** |  | 1d | 2015-10-28 | 2015-10-28 A | 100% | 2015-09-11 | 王勇 | 32h | 32h |
| 271 | 1.3.1.3.22.4.1 | 科室收入管理（增删改查） |  | 1d | 2015-09-11 A | 2015-09-11 A | 100% |  | 王勇 | 8h | 8h |
| 272 | 1.3.1.3.22.4.2 | 科室收入明细管理（增删改查） |  | 1d | 2015-09-11 A | 2015-09-11 A | 100% |  | 王勇 | 8h | 8h |
| 273 | 1.3.1.3.22.4.3 | 科室收入管理（导入导出） |  | 1d | 2015-09-11 A | 2015-09-11 A | 100% |  | 王勇 | 8h | 8h |
| 274 | 1.3.1.3.23 | 评审代码 | manual | 1d | 2015-10-29 A | 2015-10-29 A | 100% |  | 何书查; 蒋永正 | 16h | 16h |
| 275 | 1.3.1.3.24 | 单元测试 | manual | 2d | 2015-10-30 A | 2015-11-02 A | 100% |  | 蒋永正 | 16h | 16h |
| 276 | 1.3.1.3.25 | **收发文管理开发** |  | 1d | 2015-11-03 A | 2015-11-03 A | 100% |  | 梁凯迪 | 24h | 24h |
| 277 | 1.3.1.3.25.1 | 发文（增删改查） |  | 1d | 2015-11-03 A | 2015-11-03 A | 100% |  | 梁凯迪 | 8h | 8h |
| 278 | 1.3.1.3.25.2 | 收文（删改查） |  | 1d | 2015-11-03 A | 2015-11-03 A | 100% |  | 梁凯迪 | 8h | 8h |
| 279 | 1.3.1.3.26 | **人事管理开发** |  | 3d | 2015-11-04 A | 2015-11-06 A | 100% |  | 王勇; 刘松 | 168h | 168h |
| 280 | 1.3.1.3.26.1 | **人员档案管理** |  | 1d | 2015-11-05 A | 2015-11-05 A | 100% |  | 王勇 | 24h | 24h |
| 281 | 1.3.1.3.26.1.1 | 人员档案管理（增删改查） |  | 1d | 2015-11-05 A | 2015-11-05 A | 100% |  | 王勇 | 8h | 8h |
| 282 | 1.3.1.3.26.1.2 | 人员档案管理（导入导出） |  | 1d | 2015-11-05 A | 2015-11-05 A | 100% |  | 王勇 | 8h | 8h |
| 283 | 1.3.1.3.26.2 | **奖惩管理** |  | 1d | 2015-11-05 A | 2015-11-05 A | 100% |  | 王勇 | 24h | 24h |
| 284 | 1.3.1.3.26.2.1 | 奖惩管理（增删改查） |  | 1d | 2015-11-05 A | 2015-11-05 A | 100% |  | 王勇 | 8h | 8h |
| 285 | 1.3.1.3.26.2.2 | 奖惩管理（导入导出） |  | 1d | 2015-11-05 A | 2015-11-05 A | 100% |  | 王勇 | 8h | 8h |

| ID | WBS | Task | Duration | Start | Finish | Complete | Constraint | Resources | Work | Actual work |
| --- | --- | --- | --- | --- | --- | --- | --- | --- | --- | --- |
| 286 | 1.3.1.3.26.3 | **薪资管理** | 1d | 2015-11-06 A | 2015-11-06 A | 100% |  | 王勇 | 24h | 24h |
| 287 | 1.3.1.3.26.3.1 | 薪资管理（增删改查） | 1d | 2015-11-06 A | 2015-11-06 A | 100% |  | 王勇 | 8h | 8h |
| 288 | 1.3.1.3.26.3.2 | 薪资管理（导入导出） | 1d | 2015-11-06 A | 2015-11-06 A | 100% |  | 王勇 | 8h | 8h |
| 289 | 1.3.1.3.26.4 | **人员管理** | 1d | 2015-11-04 A | 2015-11-04 A | 100% |  | 刘松 | 32h | 32h |
| 290 | 1.3.1.3.26.4.1 | 人员管理（增删改查） | 1d | 2015-11-04 A | 2015-11-04 A | 100% |  | 刘松 | 8h | 8h |
| 291 | 1.3.1.3.26.4.2 | 人员角色分配 | 1d | 2015-11-04 A | 2015-11-04 A | 100% |  | 刘松 | 8h | 8h |
| 292 | 1.3.1.3.26.4.3 | 人员管理（导入导出） | 1d | 2015-11-04 A | 2015-11-04 A | 100% | start no earlier than 2015-11-04 | 刘松 | 8h | 8h |
| 293 | 1.3.1.3.26.5 | **培训考核记录** | 1d | 2015-11-06 A | 2015-11-06 A | 100% |  | 王勇 | 24h | 24h |
| 294 | 1.3.1.3.26.5.1 | 培训考核记录（增删改查） | 1d | 2015-11-06 A | 2015-11-06 A | 100% |  | 王勇 | 8h | 8h |
| 295 | 1.3.1.3.26.5.2 | 培训考核记录（导入导出） | 1d | 2015-11-06 A | 2015-11-06 A | 100% |  | 王勇 | 8h | 8h |
| 296 | 1.3.1.3.27 | **科研管理开发** | 1d | 2015-11-09 A | 2015-11-09 A | 100% |  | 刘松 | 80h | 80h |
| 297 | 1.3.1.3.27.1 | **信息管理** | 1d | 2015-11-09 A | 2015-11-09 A | 100% |  | 刘松 | 24h | 24h |
| 298 | 1.3.1.3.27.1.1 | 信息管理（增删改查） | 1d | 2015-11-09 A | 2015-11-09 A | 100% |  | 刘松 | 8h | 8h |
| 299 | 1.3.1.3.27.1.2 | 信息管理（导入导出） | 1d | 2015-11-09 A | 2015-11-09 A | 100% |  | 刘松 | 8h | 8h |
| 300 | 1.3.1.3.27.2 | **经费管理** | 1d | 2015-11-09 A | 2015-11-09 A | 100% |  | 刘松 | 24h | 24h |
| 301 | 1.3.1.3.27.2.1 | 经费管理（增删改查） | 1d | 2015-11-09 A | 2015-11-09 A | 100% |  | 刘松 | 8h | 8h |
| 302 | 1.3.1.3.27.2.2 | 经费管理（导入导出） | 1d | 2015-11-09 A | 2015-11-09 A | 100% |  | 刘松 | 8h | 8h |
| 303 | 1.3.1.3.27.3 | **成果管理** | 1d | 2015-11-09 A | 2015-11-09 A | 100% |  | 刘松 | 24h | 24h |
| 304 | 1.3.1.3.27.3.1 | 成果管理（增删改查） | 1d | 2015-11-09 A | 2015-11-09 A | 100% |  | 刘松 | 8h | 8h |
| 305 | 1.3.1.3.27.3.2 | 成果管理（导入导出） | 1d | 2015-11-09 A | 2015-11-09 A | 100% |  | 刘松 | 8h | 8h |
| 306 | 1.3.1.3.28 | **督办管理** | 1d | 2015-11-10 A | 2015-11-10 A | 100% |  | 刘松 | 32h | 32h |
| 307 | 1.3.1.3.28.1 | 业务督办发送 | 1d | 2015-11-10 A | 2015-11-10 A | 100% |  | 刘松 | 8h | 8h |
| 308 | 1.3.1.3.28.2 | 业务督办回复 | 1d | 2015-11-10 A | 2015-11-10 A | 100% |  | 刘松 | 8h | 8h |
| 309 | 1.3.1.3.28.3 | 业务督办（查询、删除、查看） | 1d | 2015-11-10 A | 2015-11-10 A | 100% |  | 刘松 | 8h | 8h |

| ID | WBS | Task | Type | Duration | Start | Finish | Complete | Remaining | Constraint | Resources | Work | Actual work |
| --- | --- | --- | --- | --- | --- | --- | --- | --- | --- | --- | --- | --- |
| 310 | 1.3.1.3.29 | **归档管理** |  | 1d | 2015-11-11 A | 2015-11-11 A | 100% |  |  | 刘松 | 48h | 48h |
| 311 | 1.3.1.3.29.1 | 分类管理（增删改查） |  | 1d | 2015-11-11 A | 2015-11-11 A | 100% |  |  | 刘松 | 8h | 8h |
| 312 | 1.3.1.3.29.2 | 保管期限（增删改查） |  | 1d | 2015-11-11 A | 2015-11-11 A | 100% |  |  | 刘松 | 8h | 8h |
| 313 | 1.3.1.3.29.3 | 报告归档（增删改查） |  | 1d | 2015-11-11 A | 2015-11-11 A | 100% |  |  | 刘松 | 8h | 8h |
| 314 | 1.3.1.3.29.4 | 报告档案延期 | manual | 1d | 2015-11-11 A | 2015-11-11 A | 100% |  |  | 刘松 | 8h | 8h |
| 315 | 1.3.1.3.29.5 | 报告清档 |  | 1d | 2015-11-11 A | 2015-11-11 A | 100% |  |  | 刘松 | 8h | 8h |
| 316 | 1.3.1.3.30 | **系统管理开发** |  | 3d | 2015-11-11 A | 2015-11-13 | 99% | 0.04d |  | 刘健森 | 264h | 242.4h |
| 317 | 1.3.1.3.30.1 | **组织机构管理** |  | 1d | 2015-11-12 A | 2015-11-12 A | 100% |  |  | 刘健森 | 24h | 24h |
| 318 | 1.3.1.3.30.1.1 | 组织机构管理（增删改查） |  | 1d | 2015-11-12 A | 2015-11-12 A | 100% |  |  | 刘健森 | 8h | 8h |
| 319 | 1.3.1.3.30.1.2 | 组织机构管理（导入导出） |  | 1d | 2015-11-12 A | 2015-11-12 A | 100% |  | start no earlier than 2015-11-12 | 刘健森 | 8h | 8h |
| 320 | 1.3.1.3.30.2 | **角色管理** |  | 1d | 2015-11-12 A | 2015-11-12 A | 100% |  |  | 刘健森 | 24h | 24h |
| 321 | 1.3.1.3.30.2.1 | 角色管理（增删改查） |  | 1d | 2015-11-12 A | 2015-11-12 A | 100% |  |  | 刘健森 | 8h | 8h |
| 322 | 1.3.1.3.30.2.2 | 角色管理（导入导出） |  | 1d | 2015-11-12 A | 2015-11-12 A | 100% |  | start no earlier than 2015-11-12 | 刘健森 | 8h | 8h |
| 323 | 1.3.1.3.30.3 | **权限管理** |  | 1d | 2015-11-13 A | 2015-11-13 A | 100% |  |  | 刘健森 | 24h | 24h |
| 324 | 1.3.1.3.30.3.1 | 权限管理（增删改查） |  | 1d | 2015-11-13 A | 2015-11-13 A | 100% |  |  | 刘健森 | 8h | 8h |
| 325 | 1.3.1.3.30.3.2 | 权限管理（导入导出） |  | 1d | 2015-11-13 A | 2015-11-13 A | 100% |  |  | 刘健森 | 8h | 8h |
| 326 | 1.3.1.3.30.4 | **数据字典管理** |  | 1d | 2015-11-13 A | 2015-11-13 A | 100% |  |  | 刘健森 | 24h | 24h |
| 327 | 1.3.1.3.30.4.1 | 数据字典管理（增删改查） |  | 1d | 2015-11-13 A | 2015-11-13 A | 100% |  |  | 刘健森 | 8h | 8h |
| 328 | 1.3.1.3.30.4.2 | 数据字典管理（导入导出） |  | 1d | 2015-11-13 A | 2015-11-13 A | 100% |  |  | 刘健森 | 8h | 8h |
| 329 | 1.3.1.3.30.5 | **时效考核管理** |  | 1d | 2015-11-13 A | 2015-11-13 A | 100% |  |  | 段佩君 | 24h | 24h |
| 330 | 1.3.1.3.30.5.1 | 时效考核管理（增删改查） |  | 1d | 2015-11-13 A | 2015-11-13 A | 100% |  |  | 段佩君 | 8h | 8h |
| 331 | 1.3.1.3.30.5.2 | 时效考核管理（导入导出） |  | 1d | 2015-11-13 A | 2015-11-13 A | 100% |  |  | 段佩君 | 8h | 8h |
| 332 | 1.3.1.3.30.6 | **系统菜单管理** |  | 3d | 2015-11-11 A | 2015-11-13 A | 100% |  |  | 张益 | 48h | 48h |
| 333 | 1.3.1.3.30.6.1 | 系统菜单（增删改查） |  | 2d | 2015-11-11 A | 2015-11-12 A | 100% |  | finish no earlier than 2015-11-12 | 张益 | 16h | 16h |
| 334 | 1.3.1.3.30.6.2 | 系统菜单（导入导出） |  | 1d | 2015-11-13 A | 2015-11-13 A | 100% |  | start no earlier than 2015-11-13 | 张益 | 8h | 8h |

| ID | WBS | Task | Type | Duration | Start | Finish | Predecessors | Complete | Remaining | Total slack | Constraint | Resources | Work | Actual work |
| --- | --- | --- | --- | --- | --- | --- | --- | --- | --- | --- | --- | --- | --- | --- |
| 335 | 1.3.1.3.30.7 | **日志管理** |  | 1d | 2015-11-13 A | 2015-11-13 A |  | 100% |  |  |  | 刘健森 | 24h | 24h |
| 336 | 1.3.1.3.30.7.1 | 日志管理（删查） |  | 1d | 2015-11-13 A | 2015-11-13 A |  | 100% |  |  |  | 刘健森 | 8h | 8h |
| 337 | 1.3.1.3.30.7.2 | 日志管理（导出） |  | 1d | 2015-11-13 A | 2015-11-13 A |  | 100% |  |  |  | 刘健森 | 8h | 8h |
| 338 | 1.3.1.3.30.8 | **个人资料** |  | 1d | 2015-11-12 A | 2015-11-12 A |  | 100% |  |  |  | 刘健森 | 16h | 16h |
| 339 | 1.3.1.3.30.8.1 | 资料修改 |  | 1d | 2015-11-12 A | 2015-11-12 A |  | 100% |  |  |  | 刘健森 | 8h | 8h |
| 340 | 1.3.1.3.30.9 | 天气预报 |  | 1d | 2015-11-11 A | 2015-11-11 |  | 70% | 0.3d | 2d |  | 刘健森 | 8h | 5.6h |
| 341 | 1.3.1.3.30.10 | 系统登录 |  | 2d | 2015-11-11 A | 2015-11-12 A |  | 100% |  |  |  | 刘健森 | 16h | 16h |
| 342 | 1.3.1.3.30.11 | 修改密码 |  | 1d | 2015-11-13 A | 2015-11-13 A |  | 100% |  |  | start no earlier than 2015-11-13 | 刘健森 | 8h | 8h |
| 343 | 1.3.1.3.31 | **流程管理开发** |  | 12d | 2015-10-08 A | 2015-10-23 A |  | 100% |  |  |  | 张益 | 248h | 248h |
| 344 | 1.3.1.3.31.1 | 流程设置 |  | 7d | 2015-10-08 A | 2015-10-16 A |  | 100% |  |  | finish no earlier than 2015-10-16 | 张益 | 56h | 56h |
| 345 | 1.3.1.3.31.2 | 流程信息（增删改查） |  | 5d | 2015-10-09 A | 2015-10-15 A |  | 100% |  |  | finish no earlier than 2015-10-15 | 张益 | 40h | 40h |
| 346 | 1.3.1.3.31.3 | 流程信息（导入导出） |  | 2d | 2015-10-15 A | 2015-10-16 A |  | 100% |  |  | finish no earlier than 2015-10-16 | 张益 | 16h | 16h |
| 347 | 1.3.1.3.31.4 | 流程记录 | manual | 5d | 2015-10-19 A | 2015-10-23 A |  | 100% |  |  |  | 张益 | 40h | 40h |
| 348 | 1.3.1.3.32 | 评审代码 |  | 1d | 2015-11-18 A | 2015-11-18 A |  | 100% |  |  | start no earlier than 2015-11-18 | 何书查; 蒋永正 | 16h | 16h |
| 349 | 1.3.1.3.33 | 系统单元测试 |  | 1d | 2015-11-20 A | 2015-11-20 A | 348 | 100% |  |  | finish no earlier than 2015-11-20 | 蒋永正 | 8h | 8h |
| 350 | 1.3.1.4 | 综合业务管理系统培训 | manual | 20d | 2015-12-18 | 2016-01-14 |  |  |  |  |  | 李向林 | 160h |  |
| 351 | 1.3.1.5 | **质检门户功能开发** |  | 20d | 2016-01-11 A | 2016-02-05 |  | 27% | 14.55d |  |  | 段佩君; 梁凯迪; 刘松; 潘韦驰; 王勇 | 2576h | 476.12h |
| 352 | 1.3.1.5.1 | 系统登录 |  | 1d | 2016-01-11 A | 2016-01-11 |  | 40% | 0.6d | 19d |  | 刘松; 潘韦驰 | 16h | 6.4h |
| 353 | 1.3.1.5.2 | **机构概况** |  | 3d | 2016-01-12 A | 2016-01-14 |  | 30% | 2.1d |  |  | 段佩君; 梁凯迪; 刘松; 潘韦驰; 王勇 | 280h | 73.72h |
| 354 | 1.3.1.5.2.1 | 单位简介 |  | 1d | 2016-01-12 A | 2016-01-12 |  | 30% | 0.7d | 2d |  | 段佩君; 梁凯迪; 刘松; 潘韦驰; 王勇 | 40h | 12h |
| 355 | 1.3.1.5.2.2 | 组织架构 |  | 1d | 2016-01-12 A | 2016-01-12 |  | 30% | 0.7d | 2d |  | 段佩君; 梁凯迪; 刘松; 潘韦驰; 王勇 | 40h | 12h |
| 356 | 1.3.1.5.2.3 | 机构领导 |  | 1d | 2016-01-13 A | 2016-01-13 |  | 30% | 0.7d | 56d | start no earlier than 2016-01-13 | 段佩君; 梁凯迪; 刘松; 潘韦驰; 王勇 | 40h | 12h |
| 357 | 1.3.1.5.2.4 | 发展历程 |  | 1d | 2016-01-13 A | 2016-01-13 |  | 30% | 0.7d | 56d | start no earlier than 2016-01-13 | 段佩君; 梁凯迪; 刘松; 潘韦驰; 王勇 | 40h | 12h |
| 358 | 1.3.1.5.3 | 通知公告 |  | 1d | 2016-01-14 A | 2016-01-14 |  | 30% | 0.7d | 55d | start no earlier than 2016-01-14 | 段佩君; 梁凯迪; 刘松; 潘韦驰; 王勇 | 40h | 12h |
| 359 | 1.3.1.5.4 | 政策法规 |  | 1d | 2016-01-14 A | 2016-01-14 |  | 30% | 0.7d | 55d | start no earlier than 2016-01-14 | 段佩君; 梁凯迪; 刘松; 潘韦驰; 王勇 | 40h | 12h |

| ID | WBS | Task | Type | Duration | Start | Finish | Predecessors | Complete | Remaining | Total slack | Free slack | Constraint | Resources | Work | Actual work |
| --- | --- | --- | --- | --- | --- | --- | --- | --- | --- | --- | --- | --- | --- | --- | --- |
| 360 | 1.3.1.5.5 | **网上检验服务开发** |  | 7d | 2016-01-15 A | 2016-01-25 |  | 30% | 4.9d |  |  |  | 段佩君; 梁凯迪; 刘松; 潘韦驰; 王勇 | 600h | 136h |
| 361 | 1.3.1.5.5.1 | 样品类别查询 |  | 1d | 2016-01-15 A | 2016-01-15 |  | 30% | 0.7d | 6d |  |  | 段佩君; 梁凯迪; 刘松; 潘韦驰; 王勇 | 40h | 12h |
| 362 | 1.3.1.5.5.2 | 样品登记（增删改） |  | 4d | 2016-01-15 A | 2016-01-20 |  | 30% | 2.8d | 0.3d | 0d | start no earlier than 2016-01-15 | 段佩君; 梁凯迪; 刘松; 潘韦驰; 王勇 | 160h | 48h |
| 363 | 1.3.1.5.5.3 | 检验进度查询 |  | 1d | 2016-01-21 A | 2016-01-21 | 362 | 30% | 0.7d | 0.6d | 0d |  | 段佩君; 梁凯迪; 刘松; 潘韦驰; 王勇 | 40h | 12h |
| 364 | 1.3.1.5.5.4 | 报告查询（查询、下载） |  | 2d | 2016-01-22 A | 2016-01-25 | 363 | 30% | 1.4d | 48d |  | start no earlier than 2016-01-15 | 段佩君; 梁凯迪; 刘松; 潘韦驰; 王勇 | 80h | 24h |
| 365 | 1.3.1.5.6 | **检验服务开发** |  | 1d | 2016-01-26 A | 2016-01-26 |  | 30% | 0.7d |  |  |  | 段佩君; 梁凯迪; 刘松; 潘韦驰; 王勇 | 80h | 24h |
| 366 | 1.3.1.5.6.1 | 检验标准（查询、下载） |  | 1d | 2016-01-26 A | 2016-01-26 |  | 30% | 0.7d | 0d |  |  | 段佩君; 梁凯迪; 刘松; 潘韦驰; 王勇 | 40h | 12h |
| 367 | 1.3.1.5.7 | **客户专区** |  | 3d | 2016-01-27 A | 2016-01-29 |  | 30% | 2.1d |  |  |  | 段佩君; 梁凯迪; 刘松; 潘韦驰; 王勇 | 320h | 92h |
| 368 | 1.3.1.5.7.1 | 客户留言（增删改） |  | 1d | 2016-01-27 A | 2016-01-27 |  | 30% | 0.7d | 0.3d | 0d |  | 段佩君; 梁凯迪; 刘松; 潘韦驰; 王勇 | 40h | 12h |
| 369 | 1.3.1.5.7.2 | 客户留言（回复） |  | 1d | 2016-01-27 A | 2016-01-27 |  | 30% | 0.7d | 0.3d | 0d |  | 段佩君; 梁凯迪; 刘松; 潘韦驰; 王勇 | 40h | 12h |
| 370 | 1.3.1.5.7.3 | 进度查询 |  | 1d | 2016-01-28 A | 2016-01-28 | 369 | 30% | 0.7d | 1d |  |  | 段佩君; 梁凯迪; 刘松; 潘韦驰; 王勇 | 40h | 12h |
| 371 | 1.3.1.5.7.4 | 常用下载 |  | 1d | 2016-01-28 A | 2016-01-28 | 368 | 30% | 0.7d | 0.3d | 0d |  | 段佩君; 梁凯迪; 刘松; 潘韦驰; 王勇 | 40h | 12h |
| 372 | 1.3.1.5.7.5 | 网上服务（快捷方式） |  | 1d | 2016-01-29 A | 2016-01-29 | 371 | 30% | 0.7d | 0d |  |  | 段佩君; 梁凯迪; 刘松; 潘韦驰; 王勇 | 40h | 12h |
| 373 | 1.3.1.5.8 | **投诉与建议** |  | 2d | 2016-01-29 A | 2016-02-01 |  | 30% | 1.4d |  |  |  | 段佩君; 梁凯迪; 刘松; 潘韦驰; 王勇 | 160h | 48h |
| 374 | 1.3.1.5.8.1 | 投诉与建议（增删改） |  | 2d | 2016-01-29 A | 2016-02-01 |  | 30% | 1.4d | 43d |  | start no earlier than 2016-01-29 | 段佩君; 梁凯迪; 刘松; 潘韦驰; 王勇 | 80h | 24h |
| 375 | 1.3.1.5.9 | **样品检验结果公示** |  | 2d | 2016-02-02 A | 2016-02-03 |  | 30% | 1.4d |  |  |  | 段佩君; 梁凯迪; 刘松; 潘韦驰; 王勇 | 160h | 48h |
| 376 | 1.3.1.5.9.1 | 检验结果（查询、查看详情） |  | 2d | 2016-02-02 A | 2016-02-03 |  | 30% | 1.4d | 41d |  | start no earlier than 2016-02-02 | 段佩君; 梁凯迪; 刘松; 潘韦驰; 王勇 | 80h | 24h |
| 377 | 1.3.1.5.10 | **友情链接** |  | 1d | 2016-02-02 A | 2016-02-02 |  | 30% | 0.7d |  |  |  | 段佩君; 梁凯迪; 刘松; 潘韦驰; 王勇 | 80h | 24h |
| 378 | 1.3.1.5.10.1 | 友情链接（增删改） |  | 1d | 2016-02-02 A | 2016-02-02 |  | 30% | 0.7d | 0d |  |  | 段佩君; 梁凯迪; 刘松; 潘韦驰; 王勇 | 40h | 12h |
| 379 | 1.3.1.5.11 | 评审代码 |  | 1d | 2016-02-03 | 2016-02-03 |  |  |  | 0d |  | start no earlier than 2016-02-03 |  |  |  |
| 380 | 1.3.1.5.12 | 系统单元测试 |  | 2d | 2016-02-04 | 2016-02-05 | 379 |  |  | 0d |  |  |  |  |  |
| 381 | 1.3.1.6 | 质检门户培训 | manual | 4d | 2016-01-11 | 2016-01-14 |  |  |  |  |  |  |  |  |  |
| 382 | 1.3.1.7 | **微信平台开发** |  | 25d | 2015-12-07 A | 2016-01-08 |  | 92% | 2.12d |  |  |  | 刘健森; 刘松; 潘韦驰; 张益 | 1496h | 572.8h |
| 383 | 1.3.1.7.1 | **微信后台管理功能开发** |  | 5d | 2015-12-07 A | 2015-12-11 A |  | 100% |  |  |  |  | 张益; 刘健森 | 224h | 224h |
| 384 | 1.3.1.7.1.1 | 菜单管理 |  | 1d | 2015-12-07 A | 2015-12-07 A |  | 100% |  |  |  |  | 刘健森; 张益 | 16h | 16h |
| 385 | 1.3.1.7.1.2 | 素材管理 |  | 1d | 2015-12-07 A | 2015-12-07 A |  | 100% |  |  |  |  | 刘健森; 张益 | 16h | 16h |
| 386 | 1.3.1.7.1.3 | 群发管理 |  | 1d | 2015-12-08 A | 2015-12-08 A |  | 100% |  |  |  | start no earlier than 2015-12-08 | 刘健森; 张益 | 16h | 16h |
| 387 | 1.3.1.7.1.4 | 用户管理 |  | 1d | 2015-12-08 A | 2015-12-08 A |  | 100% |  |  |  | start no earlier than 2015-12-08 | 刘健森; 张益 | 16h | 16h |
| 388 | 1.3.1.7.1.5 | 用户分组管理 |  | 1d | 2015-12-09 A | 2015-12-09 A |  | 100% |  |  |  | start no earlier than 2015-12-09 | 刘健森; 张益 | 16h | 16h |
| 389 | 1.3.1.7.1.6 | 缓存管理 |  | 1d | 2015-12-09 A | 2015-12-09 A |  | 100% |  |  |  | start no earlier than 2015-12-09 | 刘健森; 张益 | 16h | 16h |
| 390 | 1.3.1.7.1.7 | 帐号绑定 |  | 1d | 2015-12-10 A | 2015-12-10 A |  | 100% |  |  |  | start no earlier than 2015-12-10 | 刘健森; 张益 | 16h | 16h |
| 391 | 1.3.1.7.1.8 | 系统管理 |  | 2d | 2015-12-10 A | 2015-12-11 A |  | 100% |  |  |  | finish no earlier than 2015-12-11 | 刘健森; 张益 | 32h | 32h |

| ID | WBS | Task | Duration | Start | Finish | Complete | Remaining | Total slack | Constraint | Resources | Work | Actual work |
| --- | --- | --- | --- | --- | --- | --- | --- | --- | --- | --- | --- | --- |
| 392 | 1.3.1.7.2 | **微主页开发** | 4d | 2015-12-14 A | 2015-12-17 A | 100% |  |  |  | 刘松; 潘韦驰 | 136h | 136h |
| 393 | 1.3.1.7.2.1 | 简介 | 1d | 2015-12-14 A | 2015-12-14 A | 100% |  |  |  | 潘韦驰 | 8h | 8h |
| 394 | 1.3.1.7.2.2 | 组织架构 | 1d | 2015-12-14 A | 2015-12-14 A | 100% |  |  |  | 刘松 | 8h | 8h |
| 395 | 1.3.1.7.2.3 | 发展历程 | 1d | 2015-12-15 A | 2015-12-15 A | 100% |  |  | start no earlier than 2015-12-15 | 潘韦驰 | 8h | 8h |
| 396 | 1.3.1.7.2.4 | 质检新闻 | 1d | 2015-12-15 A | 2015-12-15 A | 100% |  |  | start no earlier than 2015-12-15 | 刘松 | 8h | 8h |
| 397 | 1.3.1.7.2.5 | 办事流程 | 1d | 2015-12-16 A | 2015-12-16 A | 100% |  |  | start no earlier than 2015-12-16 | 刘松 | 8h | 8h |
| 398 | 1.3.1.7.2.6 | 检验标准 | 1d | 2015-12-16 A | 2015-12-16 A | 100% |  |  | start no earlier than 2015-12-16 | 刘松 | 8h | 8h |
| 399 | 1.3.1.7.2.7 | 质量馆 | 1d | 2015-12-17 A | 2015-12-17 A | 100% |  |  | start no earlier than 2015-12-17 | 潘韦驰 | 8h | 8h |
| 400 | 1.3.1.7.2.8 | 品牌馆 | 1d | 2015-12-17 A | 2015-12-17 A | 100% |  |  | start no earlier than 2015-12-17 | 潘韦驰 | 8h | 8h |
| 401 | 1.3.1.7.2.9 | 联系我们 | 1d | 2015-12-17 A | 2015-12-17 A | 100% |  |  | start no earlier than 2015-12-17 | 潘韦驰 | 8h | 8h |
| 402 | 1.3.1.7.3 | **微服务开发** | 6d | 2015-12-18 A | 2015-12-25 | 69% | 1.85d |  |  | 刘松; 潘韦驰 | 184h | 60.8h |
| 403 | 1.3.1.7.3.1 | 扫一扫 | 2d | 2015-12-18 A | 2015-12-21 | 50% | 1d | 73d | start no earlier than 2015-12-18 | 刘松 | 16h | 8h |
| 404 | 1.3.1.7.3.2 | 设备信息（查询） | 1d | 2015-12-21 A | 2015-12-21 A | 100% |  |  | start no earlier than 2015-12-21 | 潘韦驰 | 8h | 8h |
| 405 | 1.3.1.7.3.3 | 设备信息（查看详情） | 1d | 2015-12-21 A | 2015-12-21 A | 100% |  |  | start no earlier than 2015-12-21 | 潘韦驰 | 8h | 8h |
| 406 | 1.3.1.7.3.4 | 报告信息（查询） | 1d | 2015-12-22 A | 2015-12-22 A | 100% |  |  | start no earlier than 2015-12-22 | 刘松 | 8h | 8h |
| 407 | 1.3.1.7.3.5 | 报告信息（查看详情） | 1d | 2015-12-22 A | 2015-12-22 A | 100% |  |  | start no earlier than 2015-12-22 | 刘松 | 8h | 8h |
| 408 | 1.3.1.7.3.6 | 样品信息（查询） | 1d | 2015-12-23 A | 2015-12-23 A | 100% |  |  | start no earlier than 2015-12-23 | 刘松 | 8h | 8h |
| 409 | 1.3.1.7.3.7 | 样品信息（查看详情） | 1d | 2015-12-23 A | 2015-12-23 A | 100% |  |  | start no earlier than 2015-12-23 | 刘松 | 8h | 8h |
| 410 | 1.3.1.7.3.8 | 数据统计（查询） | 2d | 2015-12-24 A | 2015-12-25 | 20% | 1.6d | 69d | finish no earlier than 2015-12-25 | 刘松 | 16h | 3.2h |
| 411 | 1.3.1.7.3.9 | 数据统计（查看详情） | 1d | 2015-12-25 A | 2015-12-25 | 20% | 0.8d | 69d | start no earlier than 2015-12-25 | 刘松 | 8h | 1.6h |
| 412 | 1.3.1.7.4 | **微管理开发** | 4d | 2015-12-28 A | 2015-12-31 A | 100% |  |  |  | 潘韦驰 | 120h | 120h |
| 413 | 1.3.1.7.4.1 | 我的任务（查询） | 1d | 2015-12-28 A | 2015-12-28 A | 100% |  |  |  | 潘韦驰 | 8h | 8h |
| 414 | 1.3.1.7.4.2 | 我的任务（查看详情） | 1d | 2015-12-28 A | 2015-12-28 A | 100% |  |  |  | 潘韦驰 | 8h | 8h |
| 415 | 1.3.1.7.4.3 | **我的申请** | 2d | 2015-12-29 A | 2015-12-30 A | 100% |  |  |  | 潘韦驰 | 48h | 48h |
| 416 | 1.3.1.7.4.3.1 | 我的申请（申请） | 1d | 2015-12-29 A | 2015-12-29 A | 100% |  |  |  | 潘韦驰 | 8h | 8h |
| 417 | 1.3.1.7.4.3.2 | 我的申请（查询） | 1d | 2015-12-29 A | 2015-12-29 A | 100% |  |  |  | 潘韦驰 | 8h | 8h |
| 418 | 1.3.1.7.4.3.3 | 我的申请（审批） | 1d | 2015-12-30 A | 2015-12-30 A | 100% |  |  | start no earlier than 2015-12-30 | 潘韦驰 | 8h | 8h |
| 419 | 1.3.1.7.4.3.4 | 我的申请（查看详情） | 1d | 2015-12-30 A | 2015-12-30 A | 100% |  |  | start no earlier than 2015-12-30 | 潘韦驰 | 8h | 8h |

| ID | WBS | Task | Type | Duration | Start | Finish | Predecessors | Complete | Remaining | Total slack | Free slack | Constraint | Resources | Work | Actual work |
| --- | --- | --- | --- | --- | --- | --- | --- | --- | --- | --- | --- | --- | --- | --- | --- |
| 420 | 1.3.1.7.4.4 | **工作汇报** |  | 1d | 2015-12-31 A | 2015-12-31 A |  | 100% |  |  |  |  | 潘韦驰 | 24h | 24h |
| 421 | 1.3.1.7.4.4.1 | 工作汇报编制、发送 |  | 1d | 2015-12-31 A | 2015-12-31 A |  | 100% |  |  |  |  | 潘韦驰 | 8h | 8h |
| 422 | 1.3.1.7.4.4.2 | 收到的汇报查阅 | manual | 1d | 2015-12-31 A | 2015-12-31 A |  | 100% |  |  |  |  | 潘韦驰 | 8h | 8h |
| 423 | 1.3.1.7.5 | 评审代码 |  | 1d | 2016-01-01 A | 2016-01-01 A |  | 100% |  |  |  | start no earlier than 2016-01-01 | 何书查; 蒋永正 | 16h | 16h |
| 424 | 1.3.1.7.6 | 系统单元测试 |  | 2d | 2016-01-04 A | 2016-01-05 A |  | 100% |  |  |  | start no earlier than 2016-01-02 | 蒋永正 | 16h | 16h |
| 425 | 1.3.1.8 | 微信培训 | manual | 3d | 2016-01-06 | 2016-01-08 |  |  |  |  |  |  |  |  |  |
| 426 | 1.3.1.9 | 扫码枪接口 |  | 7d | 2016-02-08 A | 2016-02-16 |  | 35% | 4.55d | 32d |  | start no earlier than 2016-02-08 | 项目组 | 56h | 19.6h |
| 427 | 1.3.1.10 | 二维码打印机接口 |  | 7d | 2016-02-08 A | 2016-02-16 |  | 35% | 4.55d | 32d |  | start no earlier than 2016-02-08 | 项目组 | 56h | 19.6h |
| 428 | 1.3.1.11 | 数据接口对接（新闻等） |  | 7d | 2016-02-08 A | 2016-02-16 |  | 35% | 4.55d | 32d |  | finish no earlier than 2016-02-16 | 项目组 | 56h | 19.6h |
| 429 | 1.3.2 | 评审代码 |  | 1d | 2016-02-17 | 2016-02-17 |  |  |  | 31d |  | finish no earlier than 2016-02-17 |  |  |  |
| 430 | 1.3.3 | 系统整体测试 |  | 2d | 2016-02-18 | 2016-02-19 |  |  |  | 29d |  | finish no earlier than 2016-02-19 |  |  |  |
| 431 | 1.3.4 | 修改代码 |  | 6d | 2016-02-22 | 2016-02-29 |  |  |  | 23d |  | finish no earlier than 2016-02-29 |  |  |  |
| 432 | 1.4 | **测试阶段** |  | 6d | 2016-03-01 | 2016-03-08 |  |  |  |  |  |  |  |  |  |
| 433 | 1.4.1 | 执行测试 |  | 3d | 2016-03-01 | 2016-03-03 |  |  |  | 20d |  | finish no earlier than 2016-03-03 |  |  |  |
| 434 | 1.4.2 | 修改BUG |  | 3d | 2016-03-04 | 2016-03-08 |  |  |  | 17d |  | finish no earlier than 2016-03-08 |  |  |  |
| 435 | 1.5 | **实施阶段** |  | 8d | 2016-02-29 | 2016-03-09 |  |  |  |  |  |  |  |  |  |
| 436 | 1.5.1 | 编写安装部署文档 |  | 1d | 2016-02-29 | 2016-02-29 |  |  |  | 7d | 0d |  |  |  |  |
| 437 | 1.5.2 | 编写用户手册 |  | 3d | 2016-03-01 | 2016-03-03 | 436 |  |  | 16d | 0d | start no earlier than 2015-12-02 |  |  |  |
| 438 | 1.5.3 | 系统培训 |  | 4d | 2016-03-04 | 2016-03-09 | 437 |  |  | 16d |  | finish no earlier than 2015-12-10 |  |  |  |
| 439 | 1.6 | 系统试运行 |  | 23d | 2015-12-01 | 2015-12-31 |  |  |  | 65d |  | finish no earlier than 2015-12-31 |  |  |  |
| 440 | 1.7 | 系统正式上线 |  | 1d | 2016-03-10 | 2016-03-10 |  |  |  | 10d | 0d | start no earlier than 2016-03-10 |  |  |  |
| 441 | 1.8 | 项目验收 |  | 5d | 2016-03-11 | 2016-03-17 | 440 |  |  | 10d |  |  |  |  |  |
| 442 | 1.9 | **结项活动** |  | 5d | 2016-03-18 | 2016-03-24 |  |  |  |  |  |  |  |  |  |
| 443 | 1.9.1 | 项目分析 |  | 2d | 2016-03-18 | 2016-03-21 |  |  |  | 2d | 0d | finish no earlier than 2016-03-21 |  |  |  |
| 444 | 1.9.2 | 项目总结会 |  | 1d | 2016-03-22 | 2016-03-22 | 443 |  |  | 2d | 0d |  |  |  |  |
| 445 | 1.9.3 | 关闭项目并转为技术支持 |  | 2d | 2016-03-23 | 2016-03-24 | 444 |  |  | 5d |  | start no earlier than 2016-01-07 |  |  |  |
