# 安徽省质检院综合业务系统总体计划9-11

Schedule from MS Project, 2015-09-07 to 2016-01-20, A marks actual dates.
china

## Calendars

- 标准: Mon-Fri 08:00-12:00, 13:00-17:00; Sat-Sun off. Exceptions (off unless hours are given): 2015-09-19 08:00-12:00, 13:00-17:00.

## Resources

| Resource |
| --- |
| 何书查 |
| 蒋永正 |
| 项目组 |
| 刘健森 |
| 张益 |
| 王喆之 |
| 段佩君 |
| 李向林 |
| 鲁光 |
| 偶峰 |
| 王勇 |
| 马彪 |
| 梁凯迪 |
| 刘松 |
| 潘韦驰 |

## Schedule

| ID | WBS | Task | Type | Duration | Start | Finish | Predecessors | Complete | Remaining | Actual start | Total slack | Free slack | Constraint | Resources | Work | Actual work |
| --- | --- | --- | --- | --- | --- | --- | --- | --- | --- | --- | --- | --- | --- | --- | --- | --- |
| 1 | 1 | **安徽省质检院综合业务系统总体计划** |  | 37d | 2015-12-01 | 2016-01-20 |  | 20% | 29.7d | 2015-09-07 |  |  |  | 何书查 | 4440h | 432.8h |
| 2 | 1.1 | **需求调研** |  | 15d | 2015-12-07 | 2015-12-25 |  | 12% | 13.26d | 2015-09-07 |  |  |  | 蒋永正; 鲁光 | 544h | 35.2h |
| 3 | 1.1.1 | 流程调研 |  | 8d | 2015-09-07 | 2015-09-16 |  |  |  |  | 64.2d | 62d | finish no earlier than 2015-09-16 | 蒋永正; 鲁光 | 128h |  |
| 4 | 1.1.2 | 功能细节调研 |  | 11d | 2015-12-11 A | 2015-12-25 | 3 | 20% | 8.8d |  | 18d |  | finish no earlier than 2015-12-25 | 蒋永正; 鲁光 | 176h | 35.2h |
| 5 | 1.2 | **测试环境搭建** |  | 2d | 2015-12-03 A | 2015-12-04 A |  | 100% |  |  |  |  |  | 蒋永正 | 48h | 48h |
| 6 | 1.2.1 | 虚拟服务器安装 |  | 1d | 2015-12-03 A | 2015-12-03 A |  | 100% |  |  |  |  | start no earlier than 2015-12-03 | 蒋永正 | 8h | 8h |
| 7 | 1.2.2 | Oracle数据库安装（安装/备份设置） | manual | 1d | 2015-12-04 A | 2015-12-04 A |  | 100% |  |  |  |  |  | 蒋永正 | 8h | 8h |
| 8 | 1.2.3 | 试用版本部署 | manual | 2d | 2015-12-03 A | 2015-12-04 A |  | 100% |  |  |  |  |  | 蒋永正 | 16h | 16h |
| 9 | 1.3 | **系统开发** |  | 34d | 2015-12-01 A | 2016-01-15 |  | 19% | 27.62d |  |  |  |  | 项目组 | 3552h | 349.6h |
| 10 | 1.3.1 | **功能完善阶段** |  | 34d | 2015-12-01 A | 2016-01-15 |  | 19% | 27.62d |  |  |  |  | 项目组 | 3280h | 349.6h |
| 11 | 1.3.1.1 | **业务系统功能完善** |  | 34d | 2015-12-01 A | 2016-01-15 |  | 23% | 26.27d |  |  |  |  | 项目组 | 2184h | 258.8h |
| 12 | 1.3.1.1.1 | **样品管理完善** |  | 4d | 2015-12-01 A | 2015-12-04 |  | 24% | 3.05d |  |  |  |  | 王勇 | 88h | 15.2h |
| 13 | 1.3.1.1.1.1 | 样品信息完善 |  | 3d | 2015-12-01 A | 2015-12-03 |  | 50% | 1.5d |  | 34d |  | finish no earlier than 2015-12-03 | 王勇 | 24h | 12h |
| 14 | 1.3.1.1.1.2 | 产品项目库的增加，根据《皖价费〔2014〕144号附件》 | manual | 1d? | 2015-12-01 | 2015-12-01 |  |  |  |  |  |  |  |  |  |  |
| 15 | 1.3.1.1.1.3 | 增加网上申请样品检验的样品信息复核，复核通过之后存入样品信息表中。 |  | 2d | 2015-12-03 A | 2015-12-04 |  | 20% | 1.6d |  | 33d |  | finish no earlier than 2015-12-04 | 王勇 | 16h | 3.2h |
| 16 | 1.3.1.1.1.4 | 样品领用完善 | milestone | 0d | 2015-12-01 A | 2015-12-01 |  | 30% | 0d |  | 10.12d |  |  | 王勇 |  |  |
| 17 | 1.3.1.1.1.5 | 样品归还完善 | milestone | 0d | 2015-12-01 A | 2015-12-01 |  | 30% | 0d |  | 10.12d |  |  | 王勇 |  |  |
| 18 | 1.3.1.1.1.6 | 样品退样完善 | milestone | 0d | 2015-12-01 A | 2015-12-01 |  | 30% | 0d |  | 10.12d |  |  | 王勇 |  |  |
| 19 | 1.3.1.1.1.7 | 预检方案完善 |  | 2d | 2015-12-01 | 2015-12-02 |  |  |  |  | 2d |  |  | 王勇 | 16h |  |
| 20 | 1.3.1.1.2 | **检验管理完善** |  | 6d | 2015-12-07 A | 2015-12-14 |  | 20% | 4.8d |  |  |  |  | 段佩君 | 72h | 4.8h |
| 21 | 1.3.1.1.2.1 | 样品检验完善 | manual | 3d | 2015-12-07 A | 2015-12-09 |  | 20% | 2.4d |  |  |  |  | 段佩君 | 24h | 4.8h |
| 22 | 1.3.1.1.2.2 | 检验审核，可插入电子签名 | milestone | 0d | 2015-12-14 A | 2015-12-14 |  | 20% | 0d |  | 112.12d |  | start no earlier than 2015-12-14 | 段佩君 |  |  |
| 23 | 1.3.1.1.3 | **检验报告编制完善** |  | 6d | 2015-12-15 A | 2015-12-22 | 20 | 32% | 4.08d |  |  |  |  | 段佩君 | 128h | 25.6h |
| 24 | 1.3.1.1.3.1 | 报告编制完善 | manual | 3d | 2015-12-15 A | 2015-12-17 |  | 40% | 1.8d |  |  |  |  | 段佩君 | 24h | 9.6h |
| 25 | 1.3.1.1.3.2 | 报告审核完善，可插入电子签名 | manual | 1d | 2015-12-18 A | 2015-12-18 |  | 40% | 0.6d |  |  |  |  | 段佩君 | 8h | 3.2h |
| 26 | 1.3.1.1.3.3 | 报告批准完善，可插入电子签名 | manual | 1d | 2015-12-18 A | 2015-12-18 |  | 30% | 0.7d |  |  |  |  | 段佩君 | 8h | 2.4h |
| 27 | 1.3.1.1.3.4 | 报告发放、打印完善 | manual | 1d | 2015-12-18 A | 2015-12-18 |  | 30% | 0.7d |  |  |  |  | 段佩君 | 8h | 2.4h |
| 28 | 1.3.1.1.3.5 | 报告归档完善，可生成pdf格式的报告，存入档案系统中。默认存入存入密级和期限，根据样品类别分类存储。 |  | 1d | 2015-12-21 A | 2015-12-21 |  | 40% | 0.6d |  | 22d |  | start no earlier than 2015-12-21 | 段佩君 | 8h | 3.2h |
| 29 | 1.3.1.1.3.6 | 报告解锁完善 |  | 2d | 2015-12-21 A | 2015-12-22 |  | 30% | 1.4d |  | 21d |  | start no earlier than 2015-12-21 | 段佩君 | 16h | 4.8h |
| 30 | 1.3.1.1.3.7 | 超期报告，对检验期限内没完成的检验进行显示， |  | 1d | 2015-12-22 | 2015-12-22 |  |  |  |  | 21d |  | start no earlier than 2015-12-22 | 段佩君 | 8h |  |

| ID | WBS | Task | Type | Duration | Start | Finish | Total slack | Constraint | Resources | Work |
| --- | --- | --- | --- | --- | --- | --- | --- | --- | --- | --- |
| 31 | 1.3.1.1.4 | **任务管理完善** |  | 2d | 2015-12-14 | 2015-12-15 |  |  | 刘松 | 32h |
| 32 | 1.3.1.1.4.1 | 我的任务 | manual | 1d | 2015-12-14 | 2015-12-14 |  |  | 刘松 | 8h |
| 33 | 1.3.1.1.4.2 | 任务下发 | manual | 1d | 2015-12-15 | 2015-12-15 |  |  | 刘松 | 8h |
| 34 | 1.3.1.1.5 | **查询与统计开发** |  | 11d | 2015-12-25 | 2016-01-08 |  |  | 段佩君; 梁凯迪; 刘松; 王勇 | 1008h |
| 35 | 1.3.1.1.5.1 | **业务统计（查询、查看）** |  | 4d | 2015-12-25 | 2015-12-30 |  |  | 段佩君; 梁凯迪; 刘松; 王勇 | 264h |
| 36 | 1.3.1.1.5.1.1 | 年检验量统计（打印） |  | 1d | 2015-12-25 | 2015-12-25 | 3d |  | 段佩君 | 8h |
| 37 | 1.3.1.1.5.1.2 | 年检验量统计（导出） |  | 1d | 2015-12-25 | 2015-12-25 | 3d |  | 段佩君 | 8h |
| 38 | 1.3.1.1.5.1.3 | 月检验量统计（打印） |  | 1d | 2015-12-25 | 2015-12-25 | 3d |  | 段佩君 | 8h |
| 39 | 1.3.1.1.5.1.4 | 月检验量统计（导出） |  | 1d | 2015-12-25 | 2015-12-25 | 18d | start no earlier than 2015-12-25 | 段佩君 | 8h |
| 40 | 1.3.1.1.5.1.5 | 个人检验量统计（打印） |  | 1d | 2015-12-28 | 2015-12-28 | 17d | start no earlier than 2015-12-28 | 段佩君 | 8h |
| 41 | 1.3.1.1.5.1.6 | 个人检验量统计（导出） |  | 1d | 2015-12-28 | 2015-12-28 | 17d | start no earlier than 2015-12-28 | 段佩君 | 8h |
| 42 | 1.3.1.1.5.1.7 | 检验客户统计（打印） |  | 1d | 2015-12-28 | 2015-12-28 | 17d | start no earlier than 2015-12-28 | 梁凯迪 | 8h |
| 43 | 1.3.1.1.5.1.8 | 检验客户统计（导出） |  | 1d | 2015-12-28 | 2015-12-28 | 17d | start no earlier than 2015-12-28 | 梁凯迪 | 8h |
| 44 | 1.3.1.1.5.1.9 | 合格样品统计（打印） |  | 1d | 2015-12-29 | 2015-12-29 | 16d | start no earlier than 2015-12-29 | 王勇 | 8h |
| 45 | 1.3.1.1.5.1.10 | 合格样品统计（导出） |  | 1d | 2015-12-29 | 2015-12-29 | 16d | start no earlier than 2015-12-29 | 王勇 | 8h |
| 46 | 1.3.1.1.5.1.11 | 不合格样品统计（打印） |  | 1d | 2015-12-29 | 2015-12-29 | 16d | start no earlier than 2015-12-29 | 王勇 | 8h |
| 47 | 1.3.1.1.5.1.12 | 不合格样品统计（导出） |  | 2d | 2015-12-29 | 2015-12-30 | 15d | start no earlier than 2015-12-29 | 王勇 | 16h |
| 48 | 1.3.1.1.5.1.13 | 设备使用统计（打印） |  | 1d | 2015-12-30 | 2015-12-30 | 15d | start no earlier than 2015-12-30 | 刘松 | 8h |
| 49 | 1.3.1.1.5.1.14 | 设备使用统计（导出） |  | 1d | 2015-12-30 | 2015-12-30 | 15d | start no earlier than 2015-12-30 | 刘松 | 8h |
| 50 | 1.3.1.1.5.1.15 | 样品分类统计（打印） |  | 1d | 2015-12-30 | 2015-12-30 | 15d | finish no earlier than 2015-12-30 | 王勇 | 8h |
| 51 | 1.3.1.1.5.1.16 | 样品分类统计（导出） |  | 1d | 2015-12-30 | 2015-12-30 | 15d | start no earlier than 2015-12-30 | 王勇 | 8h |
| 52 | 1.3.1.1.5.2 | **报告统计（查询、查看）** |  | 4d | 2015-12-29 | 2016-01-01 |  |  | 段佩君 | 80h |
| 53 | 1.3.1.1.5.2.1 | 所有报告统计（打印） |  | 1d | 2015-12-29 | 2015-12-29 | 3d |  | 段佩君 | 8h |
| 54 | 1.3.1.1.5.2.2 | 所有报告统计（导出） |  | 1d | 2015-12-30 | 2015-12-30 | 15d | start no earlier than 2015-12-30 | 段佩君 | 8h |
| 55 | 1.3.1.1.5.2.3 | 合格报告统计（打印） |  | 1d | 2015-12-30 | 2015-12-30 | 15d | start no earlier than 2015-12-30 | 段佩君 | 8h |
| 56 | 1.3.1.1.5.2.4 | 合格报告统计（导出） |  | 1d | 2015-12-31 | 2015-12-31 | 14d | start no earlier than 2015-12-31 | 段佩君 | 8h |
| 57 | 1.3.1.1.5.2.5 | 不合格报告统计（打印） |  | 1d | 2015-12-31 | 2015-12-31 | 14d | start no earlier than 2015-12-31 | 段佩君 | 8h |
| 58 | 1.3.1.1.5.2.6 | 不合格报告统计（导出） |  | 1d | 2016-01-01 | 2016-01-01 | 13d | start no earlier than 2016-01-01 | 段佩君 | 8h |

| ID | WBS | Task | Duration | Start | Finish | Predecessors | Total slack | Free slack | Constraint | Resources | Work |
| --- | --- | --- | --- | --- | --- | --- | --- | --- | --- | --- | --- |
| 59 | 1.3.1.1.5.3 | **财务统计（查询、查看）** | 5d | 2015-12-31 | 2016-01-06 |  |  |  |  | 王勇 | 120h |
| 60 | 1.3.1.1.5.3.1 | 总体费用统计（打印） | 1d | 2015-12-31 | 2015-12-31 |  | 4d |  |  | 王勇 | 8h |
| 61 | 1.3.1.1.5.3.2 | 总体费用统计（导出） | 1d | 2015-12-31 | 2015-12-31 |  | 4d |  |  | 王勇 | 8h |
| 62 | 1.3.1.1.5.3.3 | 报告收费统计（打印） | 1d | 2016-01-01 | 2016-01-01 |  | 13d |  | start no earlier than 2016-01-01 | 王勇 | 8h |
| 63 | 1.3.1.1.5.3.4 | 报告收费统计（导出） | 1d | 2016-01-01 | 2016-01-01 |  | 2d | 0d | start no earlier than 2016-01-01 | 王勇 | 8h |
| 64 | 1.3.1.1.5.3.5 | 收入统计（打印） | 1d | 2016-01-04 | 2016-01-04 | 63 | 2d |  |  | 王勇 | 8h |
| 65 | 1.3.1.1.5.3.6 | 收入统计（导出） | 1d | 2016-01-04 | 2016-01-04 |  | 12d |  | start no earlier than 2016-01-04 | 王勇 | 8h |
| 66 | 1.3.1.1.5.3.7 | 成本统计（打印） | 1d | 2016-01-05 | 2016-01-05 |  | 11d |  | start no earlier than 2016-01-05 | 王勇 | 8h |
| 67 | 1.3.1.1.5.3.8 | 成本统计（导出） | 1d | 2016-01-05 | 2016-01-05 |  | 11d |  | start no earlier than 2016-01-05 | 王勇 | 8h |
| 68 | 1.3.1.1.5.3.9 | 员工福利统计（打印） | 1d | 2016-01-06 | 2016-01-06 |  | 10d |  | start no earlier than 2016-01-06 | 王勇 | 8h |
| 69 | 1.3.1.1.5.3.10 | 员工福利统计（导出） | 1d | 2016-01-06 | 2016-01-06 |  | 10d |  | start no earlier than 2016-01-06 | 王勇 | 8h |
| 70 | 1.3.1.1.5.4 | **任务统计（查询、查看）** | 5d | 2015-12-31 | 2016-01-06 |  |  |  |  | 刘松 | 120h |
| 71 | 1.3.1.1.5.4.1 | 所有任务统计（打印） | 1d | 2015-12-31 | 2015-12-31 |  | 4d |  |  | 刘松 | 8h |
| 72 | 1.3.1.1.5.4.2 | 所有任务统计（导出） | 1d | 2015-12-31 | 2015-12-31 |  | 4d |  |  | 刘松 | 8h |
| 73 | 1.3.1.1.5.4.3 | 按时完成量统计（打印） | 1d | 2016-01-01 | 2016-01-01 |  | 13d |  | start no earlier than 2016-01-01 | 刘松 | 8h |
| 74 | 1.3.1.1.5.4.4 | 按时完成量统计（导出） | 1d | 2016-01-01 | 2016-01-01 |  | 13d |  | start no earlier than 2016-01-01 | 刘松 | 8h |
| 75 | 1.3.1.1.5.4.5 | 超期完成量统计（打印） | 1d | 2016-01-04 | 2016-01-04 |  | 12d |  | start no earlier than 2016-01-04 | 刘松 | 8h |
| 76 | 1.3.1.1.5.4.6 | 超期完成量统计（导出） | 1d | 2016-01-04 | 2016-01-04 |  | 12d |  | start no earlier than 2016-01-04 | 刘松 | 8h |
| 77 | 1.3.1.1.5.4.7 | 任务来源统计（打印） | 1d | 2016-01-05 | 2016-01-05 |  | 11d |  | start no earlier than 2016-01-05 | 刘松 | 8h |
| 78 | 1.3.1.1.5.4.8 | 任务来源统计（导出） | 1d | 2016-01-05 | 2016-01-05 |  | 11d |  | start no earlier than 2016-01-05 | 刘松 | 8h |
| 79 | 1.3.1.1.5.4.9 | 时效考核统计（打印） | 1d | 2016-01-06 | 2016-01-06 |  | 10d |  | start no earlier than 2016-01-06 | 刘松 | 8h |
| 80 | 1.3.1.1.5.4.10 | 时效考核统计（导出） | 1d | 2016-01-06 | 2016-01-06 |  | 10d |  | start no earlier than 2016-01-06 | 刘松 | 8h |
| 81 | 1.3.1.1.5.5 | 增加自定义数据报表，报表可随意组合内容，形成报表 | 9d | 2015-12-25 | 2016-01-06 |  | 10d |  | finish no earlier than 2016-01-06 | 梁凯迪 | 72h |
| 82 | 1.3.1.1.6 | **客户管理完善** | 2d | 2015-12-04 | 2015-12-07 |  |  |  |  | 梁凯迪 | 32h |
| 83 | 1.3.1.1.6.1 | 客户信息完善 | 1d | 2015-12-07 | 2015-12-07 |  | 32d |  | finish no earlier than 2015-12-07 | 梁凯迪 | 8h |
| 84 | 1.3.1.1.6.2 | 客户行业管理完善 | 1d | 2015-12-04 | 2015-12-04 |  | 1d |  |  | 梁凯迪 | 8h |

| ID | WBS | Task | Type | Duration | Start | Finish | Predecessors | Complete | Remaining | Total slack | Free slack | Constraint | Resources | Work | Actual work |
| --- | --- | --- | --- | --- | --- | --- | --- | --- | --- | --- | --- | --- | --- | --- | --- |
| 85 | 1.3.1.1.7 | **设备管理完善** |  | 3d | 2015-12-04 A | 2015-12-08 |  | 44% | 1.68d |  |  |  | 刘松 | 64h | 17.6h |
| 86 | 1.3.1.1.7.1 | 设备信息完善 |  | 1d | 2015-12-04 A | 2015-12-04 |  | 60% | 0.4d | 0.4d | 0d |  | 刘松 | 8h | 4.8h |
| 87 | 1.3.1.1.7.2 | 设备使用记录完善 |  | 1d | 2015-12-04 A | 2015-12-04 |  | 40% | 0.6d | 2d |  |  | 刘松 | 8h | 3.2h |
| 88 | 1.3.1.1.7.3 | 设备检定记录完善 |  | 1d | 2015-12-07 A | 2015-12-07 | 86 | 40% | 0.6d | 0.4d | 0d |  | 刘松 | 8h | 3.2h |
| 89 | 1.3.1.1.7.4 | 设备报修记录完善 |  | 1d | 2015-12-07 A | 2015-12-07 |  | 40% | 0.6d | 32d |  | start no earlier than 2015-12-07 | 刘松 | 8h | 3.2h |
| 90 | 1.3.1.1.7.5 | 设备申购完善 |  | 1d | 2015-12-08 A | 2015-12-08 | 88 | 40% | 0.6d | 0d |  |  | 刘松 | 8h | 3.2h |
| 91 | 1.3.1.1.8 | 技术服务管理完善 | manual | 1d | 2015-12-09 A | 2015-12-09 |  | 40% | 0.6d |  |  |  | 刘松 | 8h | 3.2h |
| 92 | 1.3.1.1.9 | 消息管理完善；模版完善，更加时间，流程来形成消息信息。 | manual | 3d | 2015-12-08 A | 2015-12-10 |  | 60% | 1.2d |  |  |  | 梁凯迪 | 24h | 14.4h |
| 93 | 1.3.1.1.10 | 上岗证管理完善 | manual | 1d | 2015-12-11 | 2015-12-11 |  |  |  |  |  |  | 梁凯迪 | 8h |  |
| 94 | 1.3.1.1.11 | 认证产品管理完善 | manual | 1d | 2015-12-09 | 2015-12-09 |  |  |  |  |  |  | 王勇 | 8h |  |
| 95 | 1.3.1.1.12 | **检验收费标准管理完善** |  | 1d | 2015-12-11 A | 2015-12-11 A |  | 100% |  |  |  |  | 梁凯迪 | 16h | 16h |
| 96 | 1.3.1.1.12.1 | 产品项目库的增加，根据《皖价费〔2014〕144号附件》 |  | 1d? | 2015-12-11 A | 2015-12-11 A |  | 100% |  |  |  |  | 梁凯迪 | 8h | 8h |
| 97 | 1.3.1.1.13 | 投诉管理完善，投诉可从网上的表里读取数据，同时也可手动新增投诉信息。 | manual | 1d | 2015-12-14 A | 2015-12-14 |  | 60% | 0.4d |  |  |  | 梁凯迪 | 8h | 4.8h |
| 98 | 1.3.1.1.14 | **财务管理完善** |  | 5d | 2015-12-11 A | 2015-12-17 |  | 51% | 2.46d |  |  |  | 王勇 | 112h | 38.8h |
| 99 | 1.3.1.1.14.1 | **报告收费** |  | 3d | 2015-12-11 A | 2015-12-15 |  | 77% | 0.7d |  |  |  | 王勇 | 48h | 32.8h |
| 100 | 1.3.1.1.14.1.1 | 报告收费（处理） |  | 1d | 2015-12-11 A | 2015-12-11 A |  | 100% |  |  |  |  | 王勇 | 8h | 8h |
| 101 | 1.3.1.1.14.1.2 | 报告收费（修删查） |  | 1d | 2015-12-14 A | 2015-12-14 |  | 80% | 0.2d | 27d |  | start no earlier than 2015-12-14 | 王勇 | 8h | 6.4h |
| 102 | 1.3.1.1.14.1.3 | 报告收费（延期） |  | 1d | 2015-12-15 A | 2015-12-15 |  | 50% | 0.5d | 26d |  | start no earlier than 2015-12-15 | 王勇 | 8h | 4h |
| 103 | 1.3.1.1.14.2 | 成本管理完善 | manual | 1d | 2015-12-16 A | 2015-12-16 |  | 25% | 0.75d |  |  |  | 王勇 | 8h | 2h |
| 104 | 1.3.1.1.14.3 | 员工福利管理完善 | manual | 1d | 2015-12-16 A | 2015-12-16 |  | 25% | 0.75d |  |  |  | 王勇 | 8h | 2h |
| 105 | 1.3.1.1.14.4 | 科室收入管理完善 | manual | 1d | 2015-12-17 A | 2015-12-17 |  | 25% | 0.75d |  |  |  | 王勇 | 8h | 2h |
| 106 | 1.3.1.1.15 | 收发文管理完善 | manual | 1d | 2015-12-15 A | 2015-12-15 |  | 30% | 0.7d |  |  |  | 梁凯迪 | 8h | 2.4h |
| 107 | 1.3.1.1.16 | **人事管理完善** |  | 3d | 2015-12-17 | 2015-12-21 |  |  |  |  |  |  | 王勇 | 64h |  |
| 108 | 1.3.1.1.16.1 | 人员档案管理完善 | manual | 1d | 2015-12-17 | 2015-12-17 |  |  |  |  |  |  | 王勇 | 8h |  |
| 109 | 1.3.1.1.16.2 | 奖惩管理完善 | manual | 1d | 2015-12-17 | 2015-12-17 |  |  |  |  |  |  | 王勇 | 8h |  |
| 110 | 1.3.1.1.16.3 | 薪资管理完善 | manual | 1d | 2015-12-18 | 2015-12-18 |  |  |  |  |  |  | 王勇 | 8h |  |
| 111 | 1.3.1.1.16.4 | 人员管理完善 | manual | 1d | 2015-12-18 | 2015-12-18 |  |  |  |  |  |  | 王勇 | 8h |  |
| 112 | 1.3.1.1.16.5 | 培训考核记录完善 | manual | 1d | 2015-12-21 | 2015-12-21 |  |  |  |  |  |  | 王勇 | 8h |  |

| ID | WBS | Task | Type | Duration | Start | Finish | Complete | Remaining | Total slack | Constraint | Resources | Work | Actual work |
| --- | --- | --- | --- | --- | --- | --- | --- | --- | --- | --- | --- | --- | --- |
| 113 | 1.3.1.1.17 | **科研管理完善** |  | 1d | 2015-12-09 | 2015-12-09 |  |  |  |  | 刘松 | 32h |  |
| 114 | 1.3.1.1.17.1 | 信息管理完善 |  | 1d | 2015-12-09 | 2015-12-09 |  |  | 0d |  | 刘松 | 8h |  |
| 115 | 1.3.1.1.17.2 | 经费管理完善 |  | 1d | 2015-12-09 | 2015-12-09 |  |  | 0d |  | 刘松 | 8h |  |
| 116 | 1.3.1.1.17.3 | 成果管理完善 |  | 1d | 2015-12-09 | 2015-12-09 |  |  | 0d |  | 刘松 | 8h |  |
| 117 | 1.3.1.1.18 | 督办管理完善 | manual | 1d | 2015-12-10 A | 2015-12-10 | 30% | 0.7d |  |  | 刘松 | 8h | 2.4h |
| 118 | 1.3.1.1.19 | 归档管理完善 | manual | 1d | 2015-12-11 A | 2015-12-11 | 40% | 0.6d |  |  | 刘松 | 8h | 3.2h |
| 119 | 1.3.1.1.20 | 流程管理完善 | manual | 23d | 2015-12-01 A | 2015-12-31 | 60% | 9.2d |  |  | 张益 | 184h | 110.4h |
| 120 | 1.3.1.2 | 综合业务管理系统培训 | manual | 10d | 2015-12-07 | 2015-12-18 |  |  |  |  | 蒋永正; 鲁光 | 160h |  |
| 121 | 1.3.1.3 | **微信平台完善** |  | 10d | 2015-12-14 A | 2015-12-25 | 30% | 7d |  |  | 刘松; 潘韦驰 | 448h | 90.8h |
| 122 | 1.3.1.3.1 | 微信后台管理完善 | manual | 3d | 2015-12-14 A | 2015-12-16 | 20% | 2.4d |  |  | 刘松; 潘韦驰 | 48h | 9.6h |
| 123 | 1.3.1.3.2 | 微主页完善，各类子页面完善 | manual | 2d | 2015-12-16 A | 2015-12-17 | 45% | 1.1d |  |  | 刘松; 潘韦驰 | 32h | 14.4h |
| 124 | 1.3.1.3.3 | **微服务完善；扫一扫功能等完善** |  | 4d | 2015-12-17 A | 2015-12-22 |  | 4d |  |  | 刘松; 潘韦驰 | 112h | 14h |
| 125 | 1.3.1.3.3.1 | 数据统计开发，可查询、可查看详情。 |  | 3d | 2015-12-18 | 2015-12-22 |  |  | 21d | start no earlier than 2015-12-18 | 刘松; 潘韦驰 | 48h |  |
| 126 | 1.3.1.3.4 | **微管理完善，任务查看更改为从流程里获取，根据样品编号或者报告编号查询任务，也可到任务管理查找。** |  | 3d | 2015-12-23 A | 2015-12-25 | 60% | 1.2d |  |  | 刘松; 潘韦驰 | 96h | 52.8h |
| 127 | 1.3.1.3.4.1 | 我的申请完善，子页面完善，可进行申请。可审批。 | manual | 2d | 2015-12-23 A | 2015-12-24 | 60% | 0.8d |  |  | 刘松; 潘韦驰 | 32h | 19.2h |
| 128 | 1.3.1.3.4.2 | 工作汇报完善 | manual | 1d | 2015-12-25 A | 2015-12-25 | 60% | 0.4d |  |  | 刘松; 潘韦驰 | 16h | 9.6h |
| 129 | 1.3.1.4 | 微信培训 | manual | 3d | 2015-12-28 | 2015-12-30 |  |  |  |  | 蒋永正; 鲁光 | 48h |  |
| 130 | 1.3.1.5 | 扫码枪接口 |  | 7d | 2015-12-01 | 2015-12-09 |  |  | 30d | start no earlier than 2015-12-01 | 偶峰 | 56h |  |
| 131 | 1.3.1.6 | 二维码打印机接口 |  | 7d | 2015-12-09 | 2015-12-17 |  |  | 24d | start no earlier than 2015-12-09 | 偶峰 | 56h |  |
| 132 | 1.3.1.7 | 数据接口对接（新闻等） |  | 7d | 2015-12-17 | 2015-12-25 |  |  | 18d | start no earlier than 2015-12-17 | 张益 | 56h |  |
